# برنامه جامع نما

Schedule from MS Project, 2025-07-23 to 2026-09-22, status date 2026-09-22, costs in هزار ت, A marks actual dates.

## Calendars

- Standard: Mon-Sun 08:00-12:00, 13:00-17:00.

## Schedule

| ID | WBS | Task | Type | Duration | Start | Finish | Predecessors | Complete | Cost | Actual cost | شروع | پایان | واحد |
| --- | --- | --- | --- | --- | --- | --- | --- | --- | --- | --- | --- | --- | --- |
| 1 | 1 | شروع | milestone | 0d | 2025-07-23 A | 2025-07-23 A |  | 100% |  |  | 1404/5/1 | 1404/5/1 |  |
| 2 | 2 | **قرارداد مدیریت راهبردی** |  | 402d | 2025-07-30 A | 2026-09-04 A |  | 100% | 46,000,000 | 46,000,000 | 1404/5/8 | 1405/6/13 |  |
| 3 | 2.1 | **مهندسی مدیریت راهبردی نمای دانشکده کشاورزی** |  | 402d | 2025-07-30 A | 2026-09-04 A |  | 100% |  |  | 1404/5/8 | 1405/6/13 |  |
| 4 | 2.1.1 | **قراردادهای دانشکده کشاورزی** |  | 140d | 2025-07-30 A | 2025-12-16 A |  | 100% |  |  | 1404/5/8 | 1404/9/25 |  |
| 5 | 2.1.1.1 | بررسی و تدقیق سفارش خرید مصالح پروفیل آومینیومی و متعلقات دانشکده کشاورزی |  | 99d | 2025-07-30 A | 2025-11-05 A | 1FS+7d | 100% |  |  | 1404/5/8 | 1404/8/14 | درصد |
| 6 | 2.1.1.2 | استعلام بهای تأمین شیشه‌ دانشکده کشاورزی |  | 40d | 2025-07-30 A | 2025-09-07 A | 1FS+7d | 100% |  |  | 1404/5/8 | 1404/6/16 | درصد |
| 7 | 2.1.1.3 | استعلام بهای تأمین پنل آجری و زیرسازی‌های مربوطه دانشکده کشاورزی |  | 80d | 2025-07-30 A | 2025-10-17 A | 1FS+7d | 100% |  |  | 1404/5/8 | 1404/7/25 | درصد |
| 8 | 2.1.1.4 | استعلام بهای تأمین پنل‌های بتنی و زیرسازی‌های مربوطه دانشکده کشاورزی |  | 80d | 2025-07-30 A | 2025-10-17 A | 1FS+7d | 100% |  |  | 1404/5/8 | 1404/7/25 | درصد |
| 9 | 2.1.1.5 | استعلام بهای تأمین، ساخت، حمل، نصب و اجرای پوسته‌های نمای دانشکده کشاورزی |  | 99d | 2025-07-30 A | 2025-11-05 A | 1FS+7d | 100% |  |  | 1404/5/8 | 1404/8/14 | درصد |
| 10 | 2.1.1.6 | تفکیک پروفیل آلومینیومی و متعلقات تأمین شده دانشکده کشاورزی |  | 9d | 2025-11-22 A | 2025-11-30 A | 5FS+16d | 100% |  |  | 1404/9/1 | 1404/9/9 | درصد |
| 11 | 2.1.1.7 | قرارداد تأمین شیشه دانشکده کشاورزی |  | 100d | 2025-09-08 A | 2025-12-16 A | 6 | 100% |  |  | 1404/6/17 | 1404/9/25 | درصد |
| 12 | 2.1.1.8 | قرارداد تأمین پنل آجری و زیرسازی‌های مربوطه دانشکده کشاورزی |  | 30d | 2025-10-18 A | 2025-11-16 A | 7 | 100% |  |  | 1404/7/26 | 1404/8/25 | درصد |
| 13 | 2.1.1.9 | قرارداد تأمین پنل‌های بتنی و زیرسازی‌های مربوطه دانشکده کشاورزی |  | 30d | 2025-10-18 A | 2025-11-16 A | 8 | 100% |  |  | 1404/7/26 | 1404/8/25 | درصد |
| 14 | 2.1.1.10 | قرارداد تأمین، ساخت، حمل، نصب و اجرای پوسته‌های نمای دانشکده کشاورزی |  | 14d | 2025-11-06 A | 2025-11-19 A | 9 | 100% |  |  | 1404/8/15 | 1404/8/28 | درصد |
| 15 | 2.1.2 | **مهندسی نمای دانشکده کشاورزی** |  | 357d | 2025-09-13 A | 2026-09-04 A |  | 100% |  |  | 1404/6/22 | 1405/6/13 |  |
| 16 | 2.1.2.1 | **مهندسی کرتین وال و ویندووال وجه شمال دانشکده کشاورزی** |  | 70d | 2025-10-19 A | 2025-12-27 A |  | 100% |  |  | 1404/7/27 | 1404/10/6 |  |
| 17 | 2.1.2.1.1 | مدل سه بعدی، نقشه‌های جزییات اجرایی و شاپ دراوینگ زیرسازی کرتین وال و ویندووال شمال دانشکده کشاورزی |  | 15d | 2025-10-19 A | 2025-11-02 A | 1FS+88d | 100% |  |  | 1404/7/27 | 1404/8/11 | درصد |
| 18 | 2.1.2.1.2 | مدل سه بعدی، نقشه‌های جزییات اجرایی و شاپ دراوینگ پروفیل کرتین وال و ویندووال شمال دانشکده کشاورزی |  | 15d | 2025-11-03 A | 2025-11-17 A | 17 | 100% |  |  | 1404/8/12 | 1404/8/26 | درصد |
| 19 | 2.1.2.1.3 | تهیه نقشه‌های ساخت زیرسازی کرتین وال و ویندووال شمال دانشکده کشاورزی |  | 15d | 2025-11-18 A | 2025-12-02 A | 18 | 100% |  |  | 1404/8/27 | 1404/9/11 | درصد |
| 20 | 2.1.2.1.4 | تهیه نقشه‌های ساخت پروفیل کرتین وال و ویندووال شمال دانشکده کشاورزی |  | 15d | 2025-12-03 A | 2025-12-17 A | 19 | 100% |  |  | 1404/9/12 | 1404/9/26 | درصد |
| 21 | 2.1.2.1.5 | نقشه‌های ساخت و سفارش گذاری شیشه‌های کرتین وال و ویندووال شمال دانشکده کشاورزی |  | 10d | 2025-12-18 A | 2025-12-27 A | 20 | 100% |  |  | 1404/9/27 | 1404/10/6 | درصد |
| 22 | 2.1.2.2 | **مهندسی کرتین وال و ویندووال وجه جنوب دانشکده کشاورزی** |  | 311.2d | 2025-10-19 A | 2026-08-26 A |  | 100% |  |  | 1404/7/27 | 1405/6/4 |  |
| 23 | 2.1.2.2.1 | مدل سه بعدی، نقشه‌های جزییات اجرایی و شاپ دراوینگ زیرسازی کرتین وال و ویندووال جنوب دانشکده کشاورزی |  | 15d | 2025-10-19 A | 2025-11-02 A | 1FS+88d | 100% |  |  | 1404/7/27 | 1404/8/11 | درصد |
| 24 | 2.1.2.2.2 | مدل سه بعدی، نقشه‌های جزییات اجرایی و شاپ دراوینگ پروفیل کرتین وال و ویندووال جنوب دانشکده کشاورزی |  | 15d | 2025-11-03 A | 2025-11-17 A | 23 | 100% |  |  | 1404/8/12 | 1404/8/26 | درصد |
| 25 | 2.1.2.2.3 | تهیه نقشه‌های ساخت زیرسازی کرتین وال و ویندووال جنوب دانشکده کشاورزی |  | 15d | 2026-03-26 A | 2026-08-25 A | 24FS+280d | 100% |  |  | 1405/1/6 | 1405/6/3 | درصد |
| 26 | 2.1.2.2.4 | تهیه نقشه‌های ساخت پروفیل کرتین وال و ویندووال جنوب دانشکده کشاورزی |  | 15d | 2026-04-10 A | 2026-08-26 A | 25 | 100% |  |  | 1405/1/21 | 1405/6/4 | درصد |
| 27 | 2.1.2.2.5 | نقشه‌های ساخت و سفارش گذاری شیشه‌های کرتین وال و ویندووال جنوب دانشکده کشاورزی |  | 10d | 2026-03-26 A | 2026-04-04 A | 26FS-30d | 100% |  |  | 1405/1/6 | 1405/1/15 | درصد |

| ID | WBS | Task | Duration | Start | Finish | Predecessors | Complete | شروع | پایان | واحد |
| --- | --- | --- | --- | --- | --- | --- | --- | --- | --- | --- |
| 28 | 2.1.2.3 | **مهندسی کرتین وال و ویندووال وجه شرق دانشکده کشاورزی** | 183d | 2025-10-19 A | 2026-04-19 A |  | 100% | 1404/7/27 | 1405/1/30 |  |
| 29 | 2.1.2.3.1 | مدل سه بعدی، نقشه‌های جزییات اجرایی و شاپ دراوینگ زیرسازی کرتین وال و ویندووال شرق دانشکده کشاورزی | 15d | 2025-10-19 A | 2025-11-02 A | 1FS+88d | 100% | 1404/7/27 | 1404/8/11 | درصد |
| 30 | 2.1.2.3.2 | مدل سه بعدی، نقشه‌های جزییات اجرایی و شاپ دراوینگ پروفیل کرتین وال و ویندووال شرق دانشکده کشاورزی | 15d | 2025-11-03 A | 2025-11-17 A | 29 | 100% | 1404/8/12 | 1404/8/26 | درصد |
| 31 | 2.1.2.3.3 | تهیه نقشه‌های ساخت زیرسازی کرتین وال و ویندووال شرق دانشکده کشاورزی | 15d | 2026-03-26 A | 2026-04-09 A | 30FS+128d | 100% | 1405/1/6 | 1405/1/20 | درصد |
| 32 | 2.1.2.3.4 | تهیه نقشه‌های ساخت پروفیل کرتین وال و ویندووال شرق دانشکده کشاورزی | 15d | 2026-03-31 A | 2026-04-14 A | 31FS-10d | 100% | 1405/1/11 | 1405/1/25 | درصد |
| 33 | 2.1.2.3.5 | نقشه‌های ساخت و سفارش گذاری شیشه‌های کرتین وال و ویندووال شرق دانشکده کشاورزی | 10d | 2026-04-10 A | 2026-04-19 A | 32FS-5d | 100% | 1405/1/21 | 1405/1/30 | درصد |
| 34 | 2.1.2.4 | **مهندسی کرتین وال و ویندووال وجه غرب دانشکده کشاورزی** | 345.6d | 2025-09-13 A | 2026-08-24 A |  | 100% | 1404/6/22 | 1405/6/2 |  |
| 35 | 2.1.2.4.1 | مدل سه بعدی، نقشه‌های جزییات اجرایی و شاپ دراوینگ زیرسازی کرتین وال و ویندووال غرب دانشکده کشاورزی | 15d | 2025-09-13 A | 2025-09-27 A | 1FS+52d | 100% | 1404/6/22 | 1404/7/5 | درصد |
| 36 | 2.1.2.4.2 | مدل سه بعدی، نقشه‌های جزییات اجرایی و شاپ دراوینگ پروفیل کرتین وال و ویندووال غرب دانشکده کشاورزی | 15d | 2025-11-14 A | 2025-11-28 A | 35FS+47d | 100% | 1404/8/23 | 1404/9/7 | درصد |
| 37 | 2.1.2.4.3 | تهیه نقشه‌های ساخت زیرسازی کرتین وال و ویندووال غرب دانشکده کشاورزی | 15d | 2026-03-25 A | 2026-08-24 A | 35FS+330d | 100% | 1405/1/5 | 1405/6/2 | درصد |
| 38 | 2.1.2.4.4 | تهیه نقشه‌های ساخت پروفیل کرتین وال و ویندووال غرب دانشکده کشاورزی | 15d | 2026-03-25 A | 2026-08-24 A | 37 | 100% | 1405/1/5 | 1405/6/2 | درصد |
| 39 | 2.1.2.4.5 | نقشه‌های ساخت و سفارش گذاری شیشه‌های کرتین وال و ویندووال غرب دانشکده کشاورزی | 10d | 2026-03-30 A | 2026-04-08 A | 38FS-10d | 100% | 1405/1/10 | 1405/1/19 | درصد |
| 40 | 2.1.2.5 | **مهندسی پنل‌های بتنی شمال دانشکده کشاورزی** | 300.5d | 2025-10-31 A | 2026-08-27 A |  | 100% | 1404/8/9 | 1405/6/5 |  |
| 41 | 2.1.2.5.1 | مدل سه بعدی، نقشه‌های جزییات اجرایی و شاپ دراوینگ زیرسازی پنل‌های بتنی شمال دانشکده کشاورزی | 15d | 2025-10-31 A | 2025-11-14 A | 1FS+100d | 100% | 1404/8/9 | 1404/8/23 | درصد |
| 42 | 2.1.2.5.2 | مدل سه بعدی، نقشه‌های جزییات اجرایی و شاپ دراوینگ پنل‌های بتنی شمال دانشکده کشاورزی | 15d | 2025-11-15 A | 2025-11-29 A | 41 | 100% | 1404/8/24 | 1404/9/8 | درصد |
| 43 | 2.1.2.5.3 | تهیه نقشه‌های ساخت زیرسازی پنل‌های بتنی شمال دانشکده کشاورزی | 10d | 2026-04-07 A | 2026-08-27 A | 42FS+270d | 100% | 1405/1/18 | 1405/6/5 | درصد |
| 44 | 2.1.2.5.4 | تهیه نقشه‌های ساخت پنل‌های بتنی شمال دانشکده کشاورزی | 30d | 2026-03-10 A | 2026-08-27 A | 42, 43FF | 100% | 1404/12/19 | 1405/6/5 | درصد |
| 45 | 2.1.2.6 | **مهندسی پنل‌های بتنی جنوب دانشکده کشاورزی** | 286d | 2025-11-15 A | 2026-08-27 A |  | 100% | 1404/8/24 | 1405/6/5 |  |
| 46 | 2.1.2.6.1 | مدل سه بعدی، نقشه‌های جزییات اجرایی و شاپ دراوینگ زیرسازی پنل‌های بتنی جنوب دانشکده کشاورزی | 15d | 2025-11-15 A | 2025-11-29 A | 41 | 100% | 1404/8/24 | 1404/9/8 | درصد |
| 47 | 2.1.2.6.2 | مدل سه بعدی، نقشه‌های جزییات اجرایی و شاپ دراوینگ پنل‌های بتنی جنوب دانشکده کشاورزی | 15d | 2025-11-15 A | 2025-11-29 A | 46FF | 100% | 1404/8/24 | 1404/9/8 | درصد |
| 48 | 2.1.2.6.3 | تهیه نقشه‌های ساخت زیرسازی پنل‌های بتنی جنوب دانشکده کشاورزی | 10d | 2026-04-07 A | 2026-08-27 A | 47FS+270d | 100% | 1405/1/18 | 1405/6/5 | درصد |
| 49 | 2.1.2.6.4 | تهیه نقشه‌های ساخت پنل‌های بتنی جنوب دانشکده کشاورزی | 30d | 2026-04-07 A | 2026-08-27 A | 47, 48FF | 100% | 1405/1/18 | 1405/6/5 | درصد |
| 50 | 2.1.2.7 | **مهندسی پنل‌های بتنی شرق دانشکده کشاورزی** | 286.5d | 2025-11-15 A | 2026-08-28 A |  | 100% | 1404/8/24 | 1405/6/6 |  |
| 51 | 2.1.2.7.1 | مدل سه بعدی، نقشه‌های جزییات اجرایی و شاپ دراوینگ زیرسازی پنل‌های بتنی شرق دانشکده کشاورزی | 15d | 2025-11-15 A | 2025-11-29 A | 46FF | 100% | 1404/8/24 | 1404/9/8 | درصد |
| 52 | 2.1.2.7.2 | مدل سه بعدی، نقشه‌های جزییات اجرایی و شاپ دراوینگ پنل‌های بتنی شرق دانشکده کشاورزی | 15d | 2025-11-15 A | 2025-11-29 A | 51FF | 100% | 1404/8/24 | 1404/9/8 | درصد |
| 53 | 2.1.2.7.3 | تهیه نقشه‌های ساخت زیرسازی پنل‌های بتنی شرق دانشکده کشاورزی | 10d | 2025-11-30 A | 2025-12-09 A | 51 | 100% | 1404/9/9 | 1404/9/18 | درصد |
| 54 | 2.1.2.7.4 | تهیه نقشه‌های ساخت پنل‌های بتنی شرق دانشکده کشاورزی | 30d | 2026-04-04 A | 2026-08-28 A | 52FS+270d | 100% | 1405/1/15 | 1405/6/6 | درصد |

| ID | WBS | Task | Duration | Start | Finish | Predecessors | Complete | شروع | پایان | واحد |
| --- | --- | --- | --- | --- | --- | --- | --- | --- | --- | --- |
| 55 | 2.1.2.8 | **مهندسی نمای بتنی غرب دانشکده کشاورزی** | 301d | 2025-10-31 A | 2026-08-27 A |  | 100% | 1404/8/9 | 1405/6/5 |  |
| 56 | 2.1.2.8.1 | مدل سه بعدی، نقشه‌های جزییات اجرایی و شاپ دراوینگ زیرسازی نمای بتنی غرب دانشکده کشاورزی | 15d | 2025-10-31 A | 2025-11-14 A | 1FS+100d | 100% | 1404/8/9 | 1404/8/23 | درصد |
| 57 | 2.1.2.8.2 | مدل سه بعدی، نقشه‌های جزییات اجرایی و شاپ دراوینگ پنل بتنی نمای بتنی غرب دانشکده کشاورزی | 15d | 2025-10-31 A | 2025-11-14 A | 56FF | 100% | 1404/8/9 | 1404/8/23 | درصد |
| 58 | 2.1.2.8.3 | تهیه نقشه‌های ساخت زیرسازی پنل‌های بتنی غرب دانشکده کشاورزی | 10d | 2026-04-04 A | 2026-08-27 A | 56FS+285d | 100% | 1405/1/15 | 1405/6/5 | درصد |
| 59 | 2.1.2.8.4 | تهیه نقشه‌های ساخت پنل‌های بتنی غرب دانشکده کشاورزی | 30d | 2026-03-30 A | 2026-04-28 A | 57FS+135d | 100% | 1405/1/10 | 1405/2/8 | درصد |
| 60 | 2.1.2.9 | **مهندسی پنل‌های آجری شمال دانشکده کشاورزی** | 225.5d | 2025-11-05 A | 2026-06-18 A |  | 100% | 1404/8/14 | 1405/3/28 |  |
| 61 | 2.1.2.9.1 | مدل سه بعدی، نقشه‌های جزییات اجرایی و شاپ دراوینگ زیرسازی پنل‌های آجری شمال دانشکده کشاورزی | 15d | 2025-12-20 A | 2026-01-03 A | 1FS+150d | 100% | 1404/9/29 | 1404/10/13 | درصد |
| 62 | 2.1.2.9.2 | مدل سه بعدی، نقشه‌های جزییات اجرایی و شاپ دراوینگ پنل‌های آجری شمال دانشکده کشاورزی | 15d | 2025-11-05 A | 2025-11-19 A | 61FS-60d | 100% | 1404/8/14 | 1404/8/28 | درصد |
| 63 | 2.1.2.9.3 | تهیه نقشه‌های ساخت زیرسازی پنل‌های آجری شمال دانشکده کشاورزی | 10d | 2026-04-04 A | 2026-06-18 A | 61FS+165d | 100% | 1405/1/15 | 1405/3/28 | درصد |
| 64 | 2.1.2.9.4 | تهیه نقشه‌های ساخت پنل بتنی پنل‌های آجری شمال دانشکده کشاورزی | 10d | 2026-04-04 A | 2026-06-18 A | 62FS+135d, 63FF | 100% | 1405/1/15 | 1405/3/28 | درصد |
| 65 | 2.1.2.10 | **مهندسی پنل‌های آجری جنوب دانشکده کشاورزی** | 230.75d | 2025-10-31 A | 2026-06-18 A |  | 100% | 1404/8/9 | 1405/3/28 |  |
| 66 | 2.1.2.10.1 | مدل سه بعدی، نقشه‌های جزییات اجرایی و شاپ دراوینگ زیرسازی پنل‌های آجری جنوب دانشکده کشاورزی | 15d | 2025-12-10 A | 2025-12-24 A | 1FS+140d | 100% | 1404/9/19 | 1404/10/3 | درصد |
| 67 | 2.1.2.10.2 | مدل سه بعدی، نقشه‌های جزییات اجرایی و شاپ دراوینگ پنل‌های آجری جنوب دانشکده کشاورزی | 15d | 2025-10-31 A | 2025-11-14 A | 66FS-55d | 100% | 1404/8/9 | 1404/8/23 | درصد |
| 68 | 2.1.2.10.3 | تهیه نقشه‌های ساخت زیرسازی پنل‌های آجری جنوب دانشکده کشاورزی | 15d | 2026-04-04 A | 2026-06-18 A | 66FS+175d | 100% | 1405/1/15 | 1405/3/28 | درصد |
| 69 | 2.1.2.10.4 | تهیه نقشه‌های ساخت پنل بتنی پنل‌های آجری جنوب دانشکده کشاورزی | 15d | 2026-04-04 A | 2026-06-18 A | 67FS+140d, 68FF | 100% | 1405/1/15 | 1405/3/28 | درصد |
| 70 | 2.1.2.11 | **مهندسی پنل‌های آجری شرق دانشکده کشاورزی** | 215.1d | 2025-11-15 A | 2026-06-18 A |  | 100% | 1404/8/24 | 1405/3/28 |  |
| 71 | 2.1.2.11.1 | مدل سه بعدی، نقشه‌های جزییات اجرایی و شاپ دراوینگ زیرسازی پنل‌های آجری شرق دانشکده کشاورزی | 15d | 2025-12-20 A | 2026-01-03 A | 1FS+150d | 100% | 1404/9/29 | 1404/10/13 | درصد |
| 72 | 2.1.2.11.2 | مدل سه بعدی، نقشه‌های جزییات اجرایی و شاپ دراوینگ پنل‌های آجری شرق دانشکده کشاورزی | 15d | 2025-11-15 A | 2025-11-29 A | 71FS-50d | 100% | 1404/8/24 | 1404/9/8 | درصد |
| 73 | 2.1.2.11.3 | تهیه نقشه‌های ساخت زیرسازی پنل‌های آجری شرق دانشکده کشاورزی | 10d | 2026-04-04 A | 2026-06-18 A | 71FS+165d | 100% | 1405/1/15 | 1405/3/28 | درصد |
| 74 | 2.1.2.11.4 | تهیه نقشه‌های ساخت پنل بتنی پنل‌های آجری شرق دانشکده کشاورزی | 10d | 2026-04-04 A | 2026-06-18 A | 72FS+125d, 73FF | 100% | 1405/1/15 | 1405/3/28 | درصد |
| 75 | 2.1.2.12 | **مهندسی نمای آجری غرب دانشکده کشاورزی** | 220.1d | 2025-11-10 A | 2026-06-18 A |  | 100% | 1404/8/19 | 1405/3/28 |  |
| 76 | 2.1.2.12.1 | مدل سه بعدی، نقشه‌های جزییات اجرایی و شاپ دراوینگ زیرسازی نمای آجری غرب دانشکده کشاورزی | 15d | 2025-12-20 A | 2026-01-03 A | 1FS+150d | 100% | 1404/9/29 | 1404/10/13 | درصد |
| 77 | 2.1.2.12.2 | مدل سه بعدی، نقشه‌های جزییات اجرایی و شاپ دراوینگ پنل آجری نمای آجری غرب دانشکده کشاورزی | 15d | 2025-11-10 A | 2025-11-24 A | 76FS-55d | 100% | 1404/8/19 | 1404/9/3 | درصد |
| 78 | 2.1.2.12.3 | تهیه نقشه‌های ساخت زیرسازی پنل‌های آجری غرب دانشکده کشاورزی | 10d | 2026-04-06 A | 2026-06-18 A | 76FS+165d | 100% | 1405/1/17 | 1405/3/28 | درصد |
| 79 | 2.1.2.12.4 | تهیه نقشه‌های ساخت پنل بتنی پنل‌های آجری غرب دانشکده کشاورزی | 10d | 2026-04-06 A | 2026-06-18 A | 77FS+132d, 78FF | 100% | 1405/1/17 | 1405/3/28 | درصد |

| ID | WBS | Task | Duration | Start | Finish | Predecessors | Complete | شروع | پایان | واحد |
| --- | --- | --- | --- | --- | --- | --- | --- | --- | --- | --- |
| 80 | 2.1.2.13 | **مهندسی نمای کلمپ ووید دانشکده کشاورزی** | 160d | 2025-12-10 A | 2026-05-18 A |  | 100% | 1404/9/19 | 1405/2/28 |  |
| 81 | 2.1.2.13.1 | مدل سه بعدی، نقشه‌های جزییات اجرایی و شاپ دراوینگ زیرسازی نمای کلمپ ووید دانشکده کشاورزی | 15d | 2025-12-10 A | 2025-12-24 A | 1FS+140d | 100% | 1404/9/19 | 1404/10/3 | درصد |
| 82 | 2.1.2.13.2 | مدل سه بعدی، نقشه‌های جزییات اجرایی و شاپ دراوینگ نمای کلمپ ووید دانشکده کشاورزی | 15d | 2025-12-25 A | 2026-01-08 A | 81 | 100% | 1404/10/4 | 1404/10/18 | درصد |
| 83 | 2.1.2.13.3 | تهیه نقشه های ساخت زیرسازی نمای کلمپ ووید دانشکده کشاورزی | 35d | 2026-04-04 A | 2026-05-08 A | 81FS+100d | 100% | 1405/1/15 | 1405/2/18 | درصد |
| 84 | 2.1.2.13.4 | تهیه نقشه‌های ساخت نمای کلمپ ووید دانشکده کشاورزی | 35d | 2026-04-04 A | 2026-05-08 A | 82, 83FF | 100% | 1405/1/15 | 1405/2/18 | درصد |
| 85 | 2.1.2.13.5 | نقشه‌های ساخت و سفارش گذاری شیشه‌های کرتین وال کلمپ دانشکده کشاورزی | 10d | 2026-05-09 A | 2026-05-18 A | 84 | 100% | 1405/2/19 | 1405/2/28 | درصد |
| 86 | 2.1.2.14 | **مهندسی هندریل و فلاشینگ و دودبند و هوابند دانشکده کشاورزی** | 241d | 2025-12-25 A | 2026-08-22 A |  | 100% | 1404/10/4 | 1405/5/31 |  |
| 87 | 2.1.2.14.1 | مدل سه بعدی، نقشه‌های جزییات اجرایی و شاپ دراوینگ زیرسازی هندریل دانشکده کشاورزی | 7d | 2025-12-25 A | 2025-12-31 A | 81 | 100% | 1404/10/4 | 1404/10/10 | درصد |
| 88 | 2.1.2.14.2 | مدل سه بعدی، نقشه‌های جزییات اجرایی و شاپ دراوینگ پروفیل هندریل دانشکده کشاورزی | 7d | 2026-01-01 A | 2026-01-07 A | 87 | 100% | 1404/10/11 | 1404/10/17 | درصد |
| 89 | 2.1.2.14.3 | تهیه نقشه‌های ساخت زیرسازی هندریل دانشکده کشاورزی | 7d | 2026-01-01 A | 2026-01-07 A | 87 | 100% | 1404/10/11 | 1404/10/17 | درصد |
| 90 | 2.1.2.14.4 | تهیه نقشه‌های ساخت پروفیل هندریل دانشکده کشاورزی | 7d | 2026-01-08 A | 2026-01-14 A | 88 | 100% | 1404/10/18 | 1404/10/24 | درصد |
| 91 | 2.1.2.14.5 | نقشه‌های ساخت و سفارش گذاری شیشه‌های هندریل دانشکده کشاورزی | 7d | 2026-01-15 A | 2026-01-21 A | 90 | 100% | 1404/10/25 | 1404/11/1 | درصد |
| 92 | 2.1.2.14.6 | مدل سه بعدی، نقشه‌های جزییات اجرایی و شاپ دراوینگ فلاشینگ دانشکده کشاورزی | 7d | 2026-01-01 A | 2026-01-07 A | 87 | 100% | 1404/10/11 | 1404/10/17 | درصد |
| 93 | 2.1.2.14.7 | تهیه نقشه‌های ساخت فلاشینگ دانشکده کشاورزی | 7d | 2026-08-16 A | 2026-08-22 A | 92FS+220d | 100% | 1405/5/25 | 1405/5/31 | درصد |
| 94 | 2.1.2.14.8 | نقشه های اجرایی دودبند و هوابند دانشکده کشاورزی | 7d | 2026-04-01 A | 2026-04-07 A | 93FS-14d | 100% | 1405/1/12 | 1405/1/18 | درصد |
| 95 | 2.1.2.14.9 | تهیه نقشه‌های ساخت دودبند و هوابند دانشکده کشاورزی | 7d | 2026-03-09 A | 2026-03-15 A | 94FS-30d | 100% | 1404/12/18 | 1404/12/24 | درصد |
| 96 | 2.1.2.15 | **مهندسی بازشوها و درب‌های اسلایدینگ دانشکده کشاورزی** | 254d | 2025-12-25 A | 2026-09-04 A |  | 100% | 1404/10/4 | 1405/6/13 |  |
| 97 | 2.1.2.15.1 | مدل سه بعدی، نقشه‌های جزییات اجرایی و شاپ دراوینگ بازشو نمای شمال | 7d | 2025-12-25 A | 2025-12-31 A | 81 | 100% | 1404/10/4 | 1404/10/10 | درصد |
| 98 | 2.1.2.15.2 | مدل سه بعدی، نقشه‌های جزییات اجرایی و شاپ دراوینگ بازشو نمای جنوب | 7d | 2026-01-01 A | 2026-01-07 A | 97 | 100% | 1404/10/11 | 1404/10/17 | درصد |
| 99 | 2.1.2.15.3 | مدل سه بعدی، نقشه‌های جزییات اجرایی و شاپ دراوینگ بازشو نمای شرق | 7d | 2026-01-08 A | 2026-01-14 A | 98 | 100% | 1404/10/18 | 1404/10/24 | درصد |
| 100 | 2.1.2.15.4 | مدل سه بعدی، نقشه‌های جزییات اجرایی و شاپ دراوینگ بازشو نمای غرب | 7d | 2026-01-15 A | 2026-01-21 A | 99 | 100% | 1404/10/25 | 1404/11/1 | درصد |
| 101 | 2.1.2.15.5 | تهیه نقشه‌های ساخت بازشو نمای شمال | 7d | 2026-08-22 A | 2026-08-28 A | 97FF+240d | 100% | 1405/5/31 | 1405/6/6 | درصد |
| 102 | 2.1.2.15.6 | تهیه نقشه‌های ساخت بازشو نمای جنوب | 7d | 2026-08-22 A | 2026-08-28 A | 98FF+98d, 101FF | 100% | 1405/5/31 | 1405/6/6 | درصد |
| 103 | 2.1.2.15.7 | تهیه نقشه‌های ساخت بازشو نمای شرق | 7d | 2026-08-22 A | 2026-08-28 A | 99FF+90d, 102FF | 100% | 1405/5/31 | 1405/6/6 | درصد |
| 104 | 2.1.2.15.8 | تهیه نقشه‌های ساخت بازشو نمای غرب | 7d | 2026-08-22 A | 2026-08-28 A | 100FF+83d, 103FF | 100% | 1405/5/31 | 1405/6/6 | درصد |
| 105 | 2.1.2.15.9 | نقشه‌های ساخت و سفارش گذاری شیشه‌های بازشو نمای شمال | 7d | 2026-08-29 A | 2026-09-04 A | 101 | 100% | 1405/6/7 | 1405/6/13 | درصد |
| 106 | 2.1.2.15.10 | نقشه‌های ساخت و سفارش گذاری شیشه‌های بازشو نمای جنوب | 7d | 2026-08-22 A | 2026-08-28 A | 102FS-7d | 100% | 1405/5/31 | 1405/6/6 | درصد |
| 107 | 2.1.2.15.11 | نقشه‌های ساخت و سفارش گذاری شیشه‌های بازشو نمای شرق | 7d | 2026-08-22 A | 2026-08-28 A | 103FS-7d | 100% | 1405/5/31 | 1405/6/6 | درصد |
| 108 | 2.1.2.15.12 | نقشه‌های ساخت و سفارش گذاری شیشه‌های بازشو نمای غرب | 7d | 2026-08-22 A | 2026-08-28 A | 104FS-7d | 100% | 1405/5/31 | 1405/6/6 | درصد |
| 109 | 2.1.2.15.13 | مدل سه بعدی، نقشه‌های جزییات اجرایی و شاپ دراوینگ درب اسلایدینگ نمای شمال | 7d | 2025-12-28 A | 2026-01-03 A | 21 | 100% | 1404/10/7 | 1404/10/13 | درصد |
| 110 | 2.1.2.15.14 | مدل سه بعدی، نقشه‌های جزییات اجرایی و شاپ دراوینگ درب اسلایدینگ نماای جنوب | 7d | 2026-01-04 A | 2026-01-10 A | 109 | 100% | 1404/10/14 | 1404/10/20 | درصد |
| 111 | 2.1.2.15.15 | مدل سه بعدی، نقشه‌های جزییات اجرایی و شاپ دراوینگ درب اسلایدینگ نمای غرب | 7d | 2026-01-11 A | 2026-01-17 A | 110 | 100% | 1404/10/21 | 1404/10/27 | درصد |
| 112 | 2.1.2.15.16 | تهیه نقشه‌های ساخت درب‌های اسلایدینگ نمای شمال | 7d | 2026-08-27 A | 2026-09-02 A | 109FS+235d | 100% | 1405/6/5 | 1405/6/11 | درصد |
| 113 | 2.1.2.15.17 | تهیه نقشه‌های ساخت درب‌های اسلایدینگ نمای جنوب | 7d | 2026-08-27 A | 2026-09-02 A | 110FS+87d, 112FF | 100% | 1405/6/5 | 1405/6/11 | درصد |
| 114 | 2.1.2.15.18 | تهیه نقشه‌های ساخت درب‌های اسلایدینگ نمای غرب | 7d | 2026-08-27 A | 2026-09-02 A | 111FS+80d, 113FF | 100% | 1405/6/5 | 1405/6/11 | درصد |

| ID | WBS | Task | Duration | Start | Finish | Predecessors | Complete | شروع | پایان | واحد |
| --- | --- | --- | --- | --- | --- | --- | --- | --- | --- | --- |
| 115 | 2.1.2.16 | **مهندسی سقف کاذب سمنت بورد دانشکده کشاورزی** | 25d | 2025-12-28 A | 2026-01-21 A |  | 100% | 1404/10/7 | 1404/11/1 |  |
| 116 | 2.1.2.16.1 | مدل سه بعدی، نقشه‌های جزییات اجرایی و شاپ دراوینگ زیرسازی سمنت بورد شمال دانشکده کشاورزی | 5d | 2025-12-28 A | 2026-01-01 A | 21 | 100% | 1404/10/7 | 1404/10/11 | درصد |
| 117 | 2.1.2.16.2 | مدل سه بعدی، نقشه‌های جزییات اجرایی و شاپ دراوینگ زیرسازی سمنت بورد جنوب دانشکده کشاورزی | 5d | 2026-01-02 A | 2026-01-06 A | 116 | 100% | 1404/10/12 | 1404/10/16 | درصد |
| 118 | 2.1.2.16.3 | مدل سه بعدی، نقشه‌های جزییات اجرایی و شاپ دراوینگ زیرسازی سمنت بورد شرق دانشکده کشاورزی | 5d | 2026-01-07 A | 2026-01-11 A | 117 | 100% | 1404/10/17 | 1404/10/21 | درصد |
| 119 | 2.1.2.16.4 | مدل سه بعدی، نقشه‌های جزییات اجرایی و شاپ دراوینگ زیرسازی سمنت بورد غرب دانشکده کشاورزی | 5d | 2026-01-12 A | 2026-01-16 A | 118 | 100% | 1404/10/22 | 1404/10/26 | درصد |
| 120 | 2.1.2.16.5 | تهیه نقشه‌های ساخت سمنت بورد شمال دانشکده کشاورزی | 5d | 2026-01-02 A | 2026-01-06 A | 116 | 100% | 1404/10/12 | 1404/10/16 | درصد |
| 121 | 2.1.2.16.6 | تهیه نقشه‌های ساخت سمنت بورد جنوب دانشکده کشاورزی | 5d | 2026-01-07 A | 2026-01-11 A | 117 | 100% | 1404/10/17 | 1404/10/21 | درصد |
| 122 | 2.1.2.16.7 | تهیه نقشه‌های ساخت سمنت بورد شرق دانشکده کشاورزی | 5d | 2026-01-12 A | 2026-01-16 A | 118 | 100% | 1404/10/22 | 1404/10/26 | درصد |
| 123 | 2.1.2.16.8 | تهیه نقشه‌های ساخت سمنت بورد غرب دانشکده کشاورزی | 5d | 2026-01-17 A | 2026-01-21 A | 119 | 100% | 1404/10/27 | 1404/11/1 | درصد |
| 124 | 2.1.2.17 | **مهندسی ویندووال داخلی دانشکده کشاورزی** | 41d | 2025-11-18 A | 2025-12-28 A |  | 100% | 1404/8/27 | 1404/10/7 |  |
| 125 | 2.1.2.17.1 | مدل سه بعدی، نقشه‌های جزییات اجرایی و شاپ دراوینگ زیرسازی ویندووال داخلی دانشکده کشاورزی | 10d | 2025-11-18 A | 2025-11-27 A | 18 | 100% | 1404/8/27 | 1404/9/6 | درصد |
| 126 | 2.1.2.17.2 | مدل سه بعدی، نقشه‌های جزییات اجرایی و شاپ دراوینگ پروفیل ویندووال داخلی دانشکده کشاورزی | 10d | 2025-11-28 A | 2025-12-07 A | 125 | 100% | 1404/9/7 | 1404/9/16 | درصد |
| 127 | 2.1.2.17.3 | تهیه نقشه‌های ساخت زیرسازی ویندووال داخلی دانشکده کشاورزی | 7d | 2025-12-08 A | 2025-12-14 A | 126 | 100% | 1404/9/17 | 1404/9/23 | درصد |
| 128 | 2.1.2.17.4 | تهیه نقشه های ساخت پروفیل ویندووال داخلی دانشکده کشاورزی | 7d | 2025-12-15 A | 2025-12-21 A | 127 | 100% | 1404/9/24 | 1404/9/30 | درصد |
| 129 | 2.1.2.17.5 | نقشه‌های ساخت و سفارش گذاری شیشه‌های کرتین وال و ویندووال داخلی دانشکده کشاورزی | 7d | 2025-12-22 A | 2025-12-28 A | 128 | 100% | 1404/10/1 | 1404/10/7 | درصد |
| 130 | 2.1.2.18 | **مهندسی شدوباکس دانشکده کشاورزی** | 288.4d | 2025-11-18 A | 2026-09-02 A |  | 100% | 1404/8/27 | 1405/6/11 |  |
| 131 | 2.1.2.18.1 | مدل سه بعدی، نقشه‌های جزییات اجرایی و شاپ دراوینگ شدوباکس نمای شمال | 7d | 2025-11-18 A | 2025-11-24 A | 18 | 100% | 1404/8/27 | 1404/9/3 | درصد |
| 132 | 2.1.2.18.2 | مدل سه بعدی، نقشه‌های جزییات اجرایی و شاپ دراوینگ شدوباکس نمای شرق | 7d | 2025-11-18 A | 2025-11-24 A | 30 | 100% | 1404/8/27 | 1404/9/3 | درصد |
| 133 | 2.1.2.18.3 | مدل سه بعدی، نقشه‌های جزییات اجرایی و شاپ دراوینگ شدوباکس نمای غرب | 7d | 2025-11-29 A | 2025-12-05 A | 36 | 100% | 1404/9/8 | 1404/9/14 | درصد |
| 134 | 2.1.2.18.4 | تهیه نقشه‌های ساخت شدوباکس نمای شمال | 7d | 2026-04-08 A | 2026-09-02 A | 131FS+280d | 100% | 1405/1/19 | 1405/6/11 | درصد |
| 135 | 2.1.2.18.5 | تهیه نقشه‌های ساخت شدوباکس نمای شرق | 7d | 2026-04-08 A | 2026-04-14 A | 132FS+134d | 100% | 1405/1/19 | 1405/1/25 | درصد |
| 136 | 2.1.2.18.6 | تهیه نقشه‌های ساخت شدوباکس نمای غرب | 7d | 2025-12-06 A | 2025-12-12 A | 133 | 100% | 1404/9/15 | 1404/9/21 | درصد |
| 137 | 2.1.2.19 | **مهندسی اسکای لایت بام دانشکده کشاورزی** | 209d | 2025-10-21 A | 2026-05-17 A |  | 100% | 1404/7/29 | 1405/2/27 |  |
| 138 | 2.1.2.19.1 | مدل سه بعدی، نقشه‌های جزییات اجرایی و شاپ دراوینگ زیرسازی اسکای لایت بام دانشکده کشاورزی | 15d | 2025-10-21 A | 2025-11-04 A | 1FS+90d | 100% | 1404/7/29 | 1404/8/13 | درصد |
| 139 | 2.1.2.19.2 | مدل سه بعدی، نقشه‌های جزییات اجرایی و شاپ دراوینگ پروفیل اسکای لایت بام دانشکده کشاورزی | 15d | 2025-11-05 A | 2025-11-19 A | 138 | 100% | 1404/8/14 | 1404/8/28 | درصد |
| 140 | 2.1.2.19.3 | تهیه نقشه‌های ساخت زیرسازی اسکای لایت بام دانشکده کشاورزی | 15d | 2025-11-05 A | 2025-11-19 A | 138 | 100% | 1404/8/14 | 1404/8/28 | درصد |
| 141 | 2.1.2.19.4 | تهیه نقشه‌های ساخت پروفیل اسکای لایت بام دانشکده کشاورزی | 15d | 2025-11-20 A | 2025-12-04 A | 139 | 100% | 1404/8/29 | 1404/9/13 | درصد |
| 142 | 2.1.2.19.5 | نقشه‌های ساخت و سفارش گذاری شیشه‌های اسکای لایت بام دانشکده کشاورزی | 7d | 2026-05-11 A | 2026-05-17 A | 141, 589 | 100% | 1405/2/21 | 1405/2/27 | درصد |

| ID | WBS | Task | Duration | Start | Finish | Predecessors | Complete | شروع | پایان | واحد |
| --- | --- | --- | --- | --- | --- | --- | --- | --- | --- | --- |
| 143 | 2.1.2.20 | **مهندسی اسکای لایت همکف دانشکده کشاورزی** | 197d | 2025-11-05 A | 2026-05-20 A |  | 100% | 1404/8/14 | 1405/2/30 |  |
| 144 | 2.1.2.20.1 | مدل سه بعدی، نقشه‌های جزییات اجرایی و شاپ دراوینگ زیرسازی اسکای لایت همکف دانشکده کشاورزی | 15d | 2025-11-05 A | 2025-11-19 A | 138 | 100% | 1404/8/14 | 1404/8/28 | درصد |
| 145 | 2.1.2.20.2 | مدل سه بعدی، نقشه‌های جزییات اجرایی و شاپ دراوینگ پروفیل اسکای لایت همکف دانشکده کشاورزی | 15d | 2025-11-20 A | 2025-12-04 A | 144 | 100% | 1404/8/29 | 1404/9/13 | درصد |
| 146 | 2.1.2.20.3 | تهیه نقشه‌های ساخت زیرسازی اسکای لایت همکف دانشکده کشاورزی | 15d | 2025-12-05 A | 2025-12-19 A | 145 | 100% | 1404/9/14 | 1404/9/28 | درصد |
| 147 | 2.1.2.20.4 | تهیه نقشه‌های ساخت پروفیل اسکای لایت همکف دانشکده کشاورزی | 15d | 2025-12-20 A | 2026-01-03 A | 146 | 100% | 1404/9/29 | 1404/10/13 | درصد |
| 148 | 2.1.2.20.5 | نقشه‌های ساخت و سفارش گذاری شیشه‌های اسکای لایت همکف دانشکده کشاورزی | 7d | 2026-05-14 A | 2026-05-20 A | 147, 600 | 100% | 1405/2/24 | 1405/2/30 | درصد |
| 149 | 2.1.2.21 | **مهندسی سازه بک آپ استراکچر دانشکده کشاورزی** | 146.5d | 2026-03-30 A | 2026-08-23 A |  | 100% | 1405/1/10 | 1405/6/1 |  |
| 150 | 2.1.2.21.1 | طراحی سازه و محاسبات سازه بک آپ استراکچر دانشکده کشاورزی | 15d | 2026-03-30 A | 2026-04-13 A | 1FS+250d | 100% | 1405/1/10 | 1405/1/24 | درصد |
| 151 | 2.1.2.21.2 | مدل سه بعدی، نقشه‌های جزییات اجرایی و شاپ دراوینگ سازه بک آپ استراکچر دانشکده کشاورزی | 15d | 2026-04-04 A | 2026-08-22 A | 150FS+130d | 100% | 1405/1/15 | 1405/5/31 | درصد |
| 152 | 2.1.2.21.3 | تهیه نقشه‌های ساخت سازه بک آپ استراکچر دانشکده کشاورزی | 15d | 2026-04-09 A | 2026-08-23 A | 151 | 100% | 1405/1/20 | 1405/6/1 | درصد |
| 153 | 2.2 | **مهندسی مدیریت راهبردی نمای ساختمان کتابخانه** | 324.6d | 2025-07-30 A | 2026-06-19 A |  | 100% | 1404/5/8 | 1405/3/29 |  |
| 154 | 2.2.1 | **قراردادهای ساختمان کتابخانه** | 145d | 2025-07-30 A | 2025-12-21 A |  | 100% | 1404/5/8 | 1404/9/30 |  |
| 155 | 2.2.1.1 | بررسی و تدقیق سفارش خرید مصالح پروفیل آومینیومی و متعلقات ساختمان کتابخانه | 99d | 2025-07-30 A | 2025-11-05 A | 1FS+7d | 100% | 1404/5/8 | 1404/8/14 | درصد |
| 156 | 2.2.1.2 | استعلام بهای تهیه و تامین شیشه ساختمان کتابخانه | 40d | 2025-07-30 A | 2025-09-07 A | 1FS+7d | 100% | 1404/5/8 | 1404/6/16 | درصد |
| 157 | 2.2.1.3 | استعلام بهای تهیه و تأمین پنل‌های بتنی و زیرسازی‌های مربوطه ساختمان کتابخانه | 75d | 2025-07-30 A | 2025-10-12 A | 1FS+7d | 100% | 1404/5/8 | 1404/7/20 | درصد |
| 158 | 2.2.1.4 | استعلام بهای تأمین، ساخت، حمل، نصب و اجرای پوسته‌های نمای ساختمان کتابخانه | 75d | 2025-07-30 A | 2025-10-12 A | 1FS+7d | 100% | 1404/5/8 | 1404/7/20 | درصد |
| 159 | 2.2.1.5 | تفکیک پروفیل آلومینیوومی و متعلقات تأمین شده ساختمان کتابخانه | 10d | 2025-11-16 A | 2025-11-25 A | 158FS+34d | 100% | 1404/8/25 | 1404/9/4 | درصد |
| 160 | 2.2.1.6 | قرارداد تهیه و تامین شیشه ساختمان کتابخانه | 105d | 2025-09-08 A | 2025-12-21 A | 156 | 100% | 1404/6/17 | 1404/9/30 | درصد |
| 161 | 2.2.1.7 | قرارداد تهیه و تأمین پنل‌های بتنی و زیرسازی‌های مربوطه ساختمان کتابخانه | 15d | 2025-10-13 A | 2025-10-27 A | 157 | 100% | 1404/7/21 | 1404/8/5 | درصد |
| 162 | 2.2.1.8 | قرارداد تأمین، ساخت، حمل، نصب و اجرای پوسته‌های نمای ساختمان کتابخانه | 40d | 2025-10-13 A | 2025-11-21 A | 158 | 100% | 1404/7/21 | 1404/8/30 | درصد |
| 163 | 2.2.2 | **مهندسی پروژه ساختمان کتابخانه** | 324.6d | 2025-07-30 A | 2026-06-19 A |  | 100% | 1404/5/8 | 1405/3/29 |  |
| 164 | 2.2.2.1 | **مهندسی کرتین وال و ویندووال ساختمان کتابخانه** | 154d | 2025-07-30 A | 2025-12-30 A |  | 100% | 1404/5/8 | 1404/10/9 |  |
| 165 | 2.2.2.1.1 | **مهندسی کرتین وال و ویندووال ساختمان کتابخانه نمای شمالی** | 144d | 2025-07-30 A | 2025-12-20 A |  | 100% | 1404/5/8 | 1404/9/29 |  |
| 166 | 2.2.2.1.1.1 | مدل سه بعدی، نقشه‌های جزییات اجرایی و شاپ دراوینگ زیرسازی کرتین وال و ویندووال ساختمان کتابخانه نمای شمالی | 15d | 2025-07-30 A | 2025-08-13 A | 1FS+7d | 100% | 1404/5/8 | 1404/5/22 | درصد |
| 167 | 2.2.2.1.1.2 | مدل سه بعدی، نقشه‌های جزییات اجرایی و شاپ دراوینگ پروفیل کرتین وال و ویندووال ساختمان کتابخانه نمای شمالی | 15d | 2025-11-06 A | 2025-11-20 A | 166, 155 | 100% | 1404/8/15 | 1404/8/29 | درصد |
| 168 | 2.2.2.1.1.3 | تهیه نقشه‌های ساخت زیرسازی کرتین وال و ویندووال ساختمان کتابخانه نمای شمالی | 15d | 2025-11-21 A | 2025-12-05 A | 167 | 100% | 1404/8/30 | 1404/9/14 | درصد |
| 169 | 2.2.2.1.1.4 | تهیه نقشه‌های ساخت پروفیل کرتین وال و ویندووال ساختمان کتابخانه نمای شمالی | 15d | 2025-11-26 A | 2025-12-10 A | 168FS-10d, 159 | 100% | 1404/9/5 | 1404/9/19 | درصد |
| 170 | 2.2.2.1.1.5 | نقشه‌های ساخت و سفارش گذاری شیشه‌های کرتین وال و ویندووال ساختمان کتابخانه نمای شمالی | 10d | 2025-12-11 A | 2025-12-20 A | 169 | 100% | 1404/9/20 | 1404/9/29 | درصد |

| ID | WBS | Task | Duration | Start | Finish | Predecessors | Complete | شروع | پایان | واحد |
| --- | --- | --- | --- | --- | --- | --- | --- | --- | --- | --- |
| 171 | 2.2.2.1.2 | **مهندسی کرتین وال و ویندووال ساختمان کتابخانه نمای جنوبی** | 119d | 2025-09-03 A | 2025-12-30 A |  | 100% | 1404/6/12 | 1404/10/9 |  |
| 172 | 2.2.2.1.2.1 | مدل سه بعدی، نقشه‌های جزییات اجرایی و شاپ دراوینگ زیرسازی کرتین وال و ویندووال ساختمان کتابخانه نمای جنوبی | 15d | 2025-09-03 A | 2025-09-17 A | 166FS+20d | 100% | 1404/6/12 | 1404/6/26 | درصد |
| 173 | 2.2.2.1.2.2 | مدل سه بعدی، نقشه‌های جزییات اجرایی و شاپ دراوینگ پروفیل کرتین وال و ویندووال ساختمان کتابخانه نمای جنوبی | 15d | 2025-11-06 A | 2025-11-20 A | 172, 155 | 100% | 1404/8/15 | 1404/8/29 | درصد |
| 174 | 2.2.2.1.2.3 | تهیه نقشه‌های ساخت زیرسازی کرتین وال و ویندووال ساختمان کتابخانه نمای جنوبی | 15d | 2025-11-21 A | 2025-12-05 A | 173 | 100% | 1404/8/30 | 1404/9/14 | درصد |
| 175 | 2.2.2.1.2.4 | تهیه نقشه‌های ساخت پروفیل کرتین وال و ویندووال ساختمان کتابخانه نمای جنوبی | 15d | 2025-12-06 A | 2025-12-20 A | 174, 159 | 100% | 1404/9/15 | 1404/9/29 | درصد |
| 176 | 2.2.2.1.2.5 | نقشه‌های ساخت و سفارش گذاری شیشه‌های کرتین وال و ویندووال ساختمان کتابخانه نمای جنوبی | 10d | 2025-12-21 A | 2025-12-30 A | 175 | 100% | 1404/9/30 | 1404/10/9 | درصد |
| 177 | 2.2.2.1.3 | **مهندسی کرتین وال و ویندووال ساختمان کتابخانه نمای شرقی** | 70d | 2025-09-18 A | 2025-11-26 A |  | 100% | 1404/6/27 | 1404/9/5 |  |
| 178 | 2.2.2.1.3.1 | مدل سه بعدی، نقشه‌های جزییات اجرایی و شاپ دراوینگ زیرسازی کرتین وال و ویندووال ساختمان کتابخانه نمای شرقی | 15d | 2025-09-18 A | 2025-10-02 A | 172 | 100% | 1404/6/27 | 1404/7/10 | درصد |
| 179 | 2.2.2.1.3.2 | مدل سه بعدی، نقشه‌های جزییات اجرایی و شاپ دراوینگ پروفیل کرتین وال و ویندووال ساختمان کتابخانه نمای شرقی | 15d | 2025-10-03 A | 2025-10-17 A | 178 | 100% | 1404/7/11 | 1404/7/25 | درصد |
| 180 | 2.2.2.1.3.3 | تهیه نقشه‌های ساخت زیرسازی کرتین وال و ویندووال ساختمان کتابخانه نمای شرقی | 15d | 2025-10-18 A | 2025-11-01 A | 179 | 100% | 1404/7/26 | 1404/8/10 | درصد |
| 181 | 2.2.2.1.3.4 | تهیه نقشه‌های ساخت پروفیل کرتین وال و ویندووال ساختمان کتابخانه نمای شرقی | 15d | 2025-11-02 A | 2025-11-16 A | 180 | 100% | 1404/8/11 | 1404/8/25 | درصد |
| 182 | 2.2.2.1.3.5 | نقشه‌های ساخت و سفارش گذاری شیشه‌های کرتین وال و ویندووال ساختمان کتابخانه نمای شرقی | 10d | 2025-11-17 A | 2025-11-26 A | 181 | 100% | 1404/8/26 | 1404/9/5 | درصد |
| 183 | 2.2.2.1.4 | **مهندسی کرتین وال و ویندووال ساختمان کتابخانه نمای غربی** | 89d | 2025-10-03 A | 2025-12-30 A |  | 100% | 1404/7/11 | 1404/10/9 |  |
| 184 | 2.2.2.1.4.1 | مدل سه بعدی، نقشه‌های جزییات اجرایی و شاپ دراوینگ زیرسازی کرتین وال و ویندووال ساختمان کتابخانه نمای غربی | 15d | 2025-10-03 A | 2025-10-17 A | 178 | 100% | 1404/7/11 | 1404/7/25 | درصد |
| 185 | 2.2.2.1.4.2 | مدل سه بعدی، نقشه‌های جزییات اجرایی و شاپ دراوینگ پروفیل کرتین وال و ویندووال ساختمان کتابخانه نمای غربی | 15d | 2025-11-06 A | 2025-11-20 A | 184, 155 | 100% | 1404/8/15 | 1404/8/29 | درصد |
| 186 | 2.2.2.1.4.3 | تهیه نقشه‌های ساخت زیرسازی کرتین وال و ویندووال ساختمان کتابخانه نمای غربی | 15d | 2025-11-21 A | 2025-12-05 A | 185 | 100% | 1404/8/30 | 1404/9/14 | درصد |
| 187 | 2.2.2.1.4.4 | تهیه نقشه‌های ساخت پروفیل کرتین وال و ویندووال ساختمان کتابخانه نمای غربی | 15d | 2025-12-06 A | 2025-12-20 A | 186, 159 | 100% | 1404/9/15 | 1404/9/29 | درصد |
| 188 | 2.2.2.1.4.5 | نقشه‌های ساخت و سفارش گذاری شیشه‌های کرتین وال و ویندووال ساختمان کتابخانه نمای غربی | 10d | 2025-12-21 A | 2025-12-30 A | 187 | 100% | 1404/9/30 | 1404/10/9 | درصد |
| 189 | 2.2.2.2 | **مهندسی پهنه بتنی ساختمان کتابخانه** | 170.6d | 2025-12-31 A | 2026-06-19 A |  | 100% | 1404/10/10 | 1405/3/29 |  |
| 190 | 2.2.2.2.1 | **مهندسی پهنه بتنی غرب ساختمان کتابخانه** | 20d | 2025-12-31 A | 2026-01-19 A |  | 100% | 1404/10/10 | 1404/10/29 |  |
| 191 | 2.2.2.2.1.1 | مدل سه بعدی، نقشه‌های جزییات اجرایی و شاپ دراوینگ زیرسازی پهنه بتنی غرب ساختمان کتابخانه | 15d | 2025-12-31 A | 2026-01-14 A | 188 | 100% | 1404/10/10 | 1404/10/24 | درصد |
| 192 | 2.2.2.2.1.2 | مدل سه بعدی، نقشه‌های جزییات اجرایی و شاپ دراوینگ پنل بتنی پهنه بتنی غرب ساختمان کتابخانه | 15d | 2026-01-05 A | 2026-01-19 A | 191FS-10d | 100% | 1404/10/15 | 1404/10/29 | درصد |
| 193 | 2.2.2.2.1.3 | تهیه نقشه‌های ساخت زیرسازی پهنه بتنی غرب ساختمان کتابخانه | 15d | 2025-12-31 A | 2026-01-14 A | 192FS-20d | 100% | 1404/10/10 | 1404/10/24 | درصد |
| 194 | 2.2.2.2.1.4 | تهیه نقشه‌های ساخت پنل بتنی پهنه بتنی غرب ساختمان کتابخانه | 15d | 2026-01-05 A | 2026-01-19 A | 193FS-10d | 100% | 1404/10/15 | 1404/10/29 | درصد |

| ID | WBS | Task | Duration | Start | Finish | Predecessors | Complete | شروع | پایان | واحد |
| --- | --- | --- | --- | --- | --- | --- | --- | --- | --- | --- |
| 195 | 2.2.2.2.2 | **مهندسی پهنه بتنی جنوب ساختمان کتابخانه** | 21d | 2026-01-08 A | 2026-01-28 A |  | 100% | 1404/10/18 | 1404/11/8 |  |
| 196 | 2.2.2.2.2.1 | مدل سه بعدی، نقشه‌های جزییات اجرایی و شاپ دراوینگ زیرسازی پهنه بتنی جنوب ساختمان کتابخانه | 15d | 2026-01-08 A | 2026-01-22 A | 191FS-7d | 100% | 1404/10/18 | 1404/11/2 | درصد |
| 197 | 2.2.2.2.2.2 | مدل سه بعدی، نقشه‌های جزییات اجرایی و شاپ دراوینگ پنل بتنی پهنه بتنی جنوب ساختمان کتابخانه | 15d | 2026-01-10 A | 2026-01-24 A | 196FS-13d | 100% | 1404/10/20 | 1404/11/4 | درصد |
| 198 | 2.2.2.2.2.3 | تهیه نقشه‌های ساخت زیرسازی پهنه بتنی جنوب ساختمان کتابخانه | 15d | 2026-01-12 A | 2026-01-26 A | 197FS-13d | 100% | 1404/10/22 | 1404/11/6 | درصد |
| 199 | 2.2.2.2.2.4 | تهیه نقشه‌های ساخت پنل بتنی پهنه بتنی جنوب ساختمان کتابخانه | 15d | 2026-01-14 A | 2026-01-28 A | 198FS-13d | 100% | 1404/10/24 | 1404/11/8 | درصد |
| 200 | 2.2.2.2.3 | **مهندسی پهنه بتنی شمال ساختمان کتابخانه** | 162.6d | 2026-01-08 A | 2026-06-19 A |  | 100% | 1404/10/18 | 1405/3/29 |  |
| 201 | 2.2.2.2.3.1 | مدل سه بعدی، نقشه‌های جزییات اجرایی و شاپ دراوینگ زیرسازی پهنه بتنی شمال ساختمان کتابخانه | 15d | 2026-01-08 A | 2026-01-22 A | 191FS-7d | 100% | 1404/10/18 | 1404/11/2 | درصد |
| 202 | 2.2.2.2.3.2 | مدل سه بعدی، نقشه‌های جزییات اجرایی و شاپ دراوینگ پنل بتنی پهنه بتنی شمال ساختمان کتابخانه | 15d | 2026-01-10 A | 2026-01-24 A | 201FS-13d | 100% | 1404/10/20 | 1404/11/4 | درصد |
| 203 | 2.2.2.2.3.3 | تهیه نقشه‌های ساخت زیرسازی پهنه بتنی شمال ساختمان کتابخانه | 15d | 2026-03-26 A | 2026-06-19 A | 202FS+145d | 100% | 1405/1/6 | 1405/3/29 | درصد |
| 204 | 2.2.2.2.3.4 | تهیه نقشه‌های ساخت پنل بتنی پهنه بتنی شمال ساختمان کتابخانه | 15d | 2026-03-28 A | 2026-06-19 A | 203 | 100% | 1405/1/8 | 1405/3/29 | درصد |
| 205 | 2.2.2.3 | **مهندسی نمای کلمپ ساختمان کتابخانه** | 201.7d | 2025-11-27 A | 2026-06-16 A |  | 100% | 1404/9/6 | 1405/3/26 |  |
| 206 | 2.2.2.3.1 | مدل سه بعدی، نقشه‌های جزییات اجرایی و شاپ دراوینگ زیرسازی نمای کلمپ ساختمان کتابخانه | 15d | 2025-11-27 A | 2025-12-11 A | 182 | 100% | 1404/9/6 | 1404/9/20 | درصد |
| 207 | 2.2.2.3.2 | مدل سه بعدی، نقشه‌های جزییات اجرایی و شاپ دراوینگ نمای کلمپ ساختمان کتابخانه | 15d | 2025-12-12 A | 2025-12-26 A | 206 | 100% | 1404/9/21 | 1404/10/5 | درصد |
| 208 | 2.2.2.3.3 | تهیه نقشه‌های ساخت زیرسازی نمای کلمپ ساختمان کتابخانه | 35d | 2026-04-04 A | 2026-06-15 A | 207FS+170d | 100% | 1405/1/15 | 1405/3/25 | درصد |
| 209 | 2.2.2.3.4 | تهیه نقشه‌های ساخت نمای کلمپ ساختمان کتابخانه | 35d | 2026-04-04 A | 2026-06-16 A | 208 | 100% | 1405/1/15 | 1405/3/26 | درصد |
| 210 | 2.2.2.3.5 | نقشه‌های ساخت و سفارش گذاری شیشه‌های کرتین وال کلمپ ساختمان کتابخانه | 15d | 2026-05-06 A | 2026-06-16 A | 209 | 100% | 1405/2/16 | 1405/3/26 | درصد |
| 211 | 2.2.2.4 | **مهندسی اسکای لایت ساختمان کتابخانه** | 142d | 2025-11-17 A | 2026-04-07 A |  | 100% | 1404/8/26 | 1405/1/18 |  |
| 212 | 2.2.2.4.1 | مدل سه بعدی، نقشه‌های جزییات اجرایی و شاپ دراوینگ زیرسازی اسکای لایت ساختمان کتابخانه | 15d | 2025-11-17 A | 2025-12-01 A | 182FS-10d | 100% | 1404/8/26 | 1404/9/10 | درصد |
| 213 | 2.2.2.4.2 | مدل سه بعدی، نقشه‌های جزییات اجرایی و شاپ دراوینگ پروفیل اسکای لایت ساختمان کتابخانه | 15d | 2025-12-02 A | 2025-12-16 A | 212 | 100% | 1404/9/11 | 1404/9/25 | درصد |
| 214 | 2.2.2.4.3 | تهیه نقشه‌های ساخت زیرسازی اسکای لایت ساختمان کتابخانه | 15d | 2025-12-17 A | 2025-12-31 A | 213 | 100% | 1404/9/26 | 1404/10/10 | درصد |
| 215 | 2.2.2.4.4 | تهیه نقشه‌های ساخت پروفیل اسکای لایت ساختمان کتابخانه | 15d | 2026-01-01 A | 2026-01-15 A | 214 | 100% | 1404/10/11 | 1404/10/25 | درصد |
| 216 | 2.2.2.4.5 | نقشه‌های ساخت و سفارش گذاری شیشه‌های اسکای لایت ساختمان کتابخانه | 7d | 2026-04-01 A | 2026-04-07 A | 215FS-21d, 578FS-31d | 100% | 1405/1/12 | 1405/1/18 | درصد |
| 217 | 2.2.2.4.6 | مدل سه بعدی، نقشه‌های جزییات اجرایی و شاپ دراوینگ زیرسازی تیر میانی شرق و جنوب ساختمان کتابخانه | 15d | 2025-12-02 A | 2025-12-16 A | 212 | 100% | 1404/9/11 | 1404/9/25 | درصد |
| 218 | 2.2.2.4.7 | تهیه نقشه‌های ساخت زیرسازی تیر میانی شرق و جنوب ساختمان کتابخانه | 15d | 2025-12-17 A | 2025-12-31 A | 217 | 100% | 1404/9/26 | 1404/10/10 | درصد |

| ID | WBS | Task | Duration | Start | Finish | Predecessors | Complete | شروع | پایان | واحد |
| --- | --- | --- | --- | --- | --- | --- | --- | --- | --- | --- |
| 219 | 2.2.2.5 | **مهندسی کاور بتنی ستونها ساختمان کتابخانه** | 24d | 2026-01-05 A | 2026-01-28 A |  | 100% | 1404/10/15 | 1404/11/8 |  |
| 220 | 2.2.2.5.1 | مدل سه بعدی، نقشه‌های جزییات اجرایی و شاپ دراوینگ زیرسازی کاور بتنی ستونها ساختمان کتابخانه | 15d | 2026-01-08 A | 2026-01-22 A | 191FS-7d | 100% | 1404/10/18 | 1404/11/2 | درصد |
| 221 | 2.2.2.5.2 | نقشه‌های اجرایی پنل بتنی کاور بتنی ستونها ساختمان کتابخانه | 15d | 2026-01-10 A | 2026-01-24 A | 220FS-13d | 100% | 1404/10/20 | 1404/11/4 | درصد |
| 222 | 2.2.2.5.3 | تهیه نقشه‌های ساخت زیرسازی کاور بتنی ستونها ساختمان کتابخانه | 15d | 2026-01-05 A | 2026-01-19 A | 221FS-20d | 100% | 1404/10/15 | 1404/10/29 | درصد |
| 223 | 2.2.2.5.4 | تهیه نقشه‌های ساخت پنل بتنی کاور بتنی ستونها ساختمان کتابخانه | 15d | 2026-01-14 A | 2026-01-28 A | 222FS-6d | 100% | 1404/10/24 | 1404/11/8 | درصد |
| 224 | 2.2.2.6 | **مهندسی هندریل ساختمان کتابخانه** | 73d | 2025-11-27 A | 2026-02-07 A |  | 100% | 1404/9/6 | 1404/11/18 |  |
| 225 | 2.2.2.6.1 | **هندریل ساختمان کتابخانه نمای شمالی** | 29d | 2026-01-10 A | 2026-02-07 A |  | 100% | 1404/10/20 | 1404/11/18 |  |
| 226 | 2.2.2.6.1.1 | مدل سه بعدی، نقشه‌های جزییات اجرایی و شاپ دراوینگ زیرسازی هندریل ساختمان کتابخانه نمای شمالی | 10d | 2026-01-10 A | 2026-01-19 A | 170FS+20d | 100% | 1404/10/20 | 1404/10/29 | درصد |
| 227 | 2.2.2.6.1.2 | مدل سه بعدی، نقشه‌های جزییات اجرایی و شاپ دراوینگ پروفیل هندریل ساختمان کتابخانه نمای شمالی | 10d | 2026-01-13 A | 2026-01-22 A | 226FS-7d | 100% | 1404/10/23 | 1404/11/2 | درصد |
| 228 | 2.2.2.6.1.3 | تهیه نقشه‌های ساخت زیرسازی هندریل ساختمان کتابخانه نمای شمالی | 10d | 2026-01-16 A | 2026-01-25 A | 227FS-7d | 100% | 1404/10/26 | 1404/11/5 | درصد |
| 229 | 2.2.2.6.1.4 | تهیه نقشه‌های ساخت پروفیل هندریل ساختمان کتابخانه نمای شمالی | 10d | 2026-01-19 A | 2026-01-28 A | 228FS-7d | 100% | 1404/10/29 | 1404/11/8 | درصد |
| 230 | 2.2.2.6.1.5 | نقشه‌های ساخت و سفارش گذاری شیشه‌های هندریل ساختمان کتابخانه نمای شمالی | 10d | 2026-01-29 A | 2026-02-07 A | 229 | 100% | 1404/11/9 | 1404/11/18 | درصد |
| 231 | 2.2.2.6.2 | **هندریل ساختمان کتابخانه نمای جنوبی** | 29d | 2025-12-31 A | 2026-01-28 A |  | 100% | 1404/10/10 | 1404/11/8 |  |
| 232 | 2.2.2.6.2.1 | مدل سه بعدی، نقشه‌های جزییات اجرایی و شاپ دراوینگ زیرسازی هندریل ساختمان کتابخانه نمای جنوبی | 10d | 2025-12-31 A | 2026-01-09 A | 176 | 100% | 1404/10/10 | 1404/10/19 | درصد |
| 233 | 2.2.2.6.2.2 | مدل سه بعدی، نقشه‌های جزییات اجرایی و شاپ دراوینگ پروفیل هندریل ساختمان کتابخانه نمای جنوبی | 10d | 2026-01-10 A | 2026-01-19 A | 232 | 100% | 1404/10/20 | 1404/10/29 | درصد |
| 234 | 2.2.2.6.2.3 | تهیه نقشه‌های ساخت زیرسازی هندریل ساختمان کتابخانه نمای جنوبی | 10d | 2026-01-13 A | 2026-01-22 A | 233FS-7d | 100% | 1404/10/23 | 1404/11/2 | درصد |
| 235 | 2.2.2.6.2.4 | تهیه نقشه‌های ساخت پروفیل هندریل ساختمان کتابخانه نمای جنوبی | 10d | 2026-01-16 A | 2026-01-25 A | 234FS-7d | 100% | 1404/10/26 | 1404/11/5 | درصد |
| 236 | 2.2.2.6.2.5 | نقشه‌های ساخت و سفارش گذاری شیشه‌های هندریل ساختمان کتابخانه نمای جنوبی | 10d | 2026-01-19 A | 2026-01-28 A | 235FS-7d | 100% | 1404/10/29 | 1404/11/8 | درصد |
| 237 | 2.2.2.6.3 | **هندریل ساختمان کتابخانه نمای شرقی** | 50d | 2025-11-27 A | 2026-01-15 A |  | 100% | 1404/9/6 | 1404/10/25 |  |
| 238 | 2.2.2.6.3.1 | مدل سه بعدی، نقشه‌های جزییات اجرایی و شاپ دراوینگ زیرسازی هندریل ساختمان کتابخانه نمای شرقی | 10d | 2025-11-27 A | 2025-12-06 A | 182 | 100% | 1404/9/6 | 1404/9/15 | درصد |
| 239 | 2.2.2.6.3.2 | مدل سه بعدی، نقشه‌های جزییات اجرایی و شاپ دراوینگ پروفیل هندریل ساختمان کتابخانه نمای شرقی | 10d | 2025-12-07 A | 2025-12-16 A | 238 | 100% | 1404/9/16 | 1404/9/25 | درصد |
| 240 | 2.2.2.6.3.3 | تهیه نقشه‌های ساخت زیرسازی هندریل ساختمان کتابخانه نمای شرقی | 10d | 2025-12-17 A | 2025-12-26 A | 239 | 100% | 1404/9/26 | 1404/10/5 | درصد |
| 241 | 2.2.2.6.3.4 | تهیه نقشه‌های ساخت پروفیل هندریل ساختمان کتابخانه نمای شرقی | 10d | 2025-12-27 A | 2026-01-05 A | 240 | 100% | 1404/10/6 | 1404/10/15 | درصد |
| 242 | 2.2.2.6.3.5 | نقشه‌های ساخت و سفارش گذاری شیشه‌های هندریل ساختمان کتابخانه نمای شرقی | 10d | 2026-01-06 A | 2026-01-15 A | 241 | 100% | 1404/10/16 | 1404/10/25 | درصد |

| ID | WBS | Task | Duration | Start | Finish | Predecessors | Complete | شروع | پایان | واحد |
| --- | --- | --- | --- | --- | --- | --- | --- | --- | --- | --- |
| 243 | 2.2.2.6.4 | **هندریل ساختمان کتابخانه نمای غربی** | 29d | 2025-12-31 A | 2026-01-28 A |  | 100% | 1404/10/10 | 1404/11/8 |  |
| 244 | 2.2.2.6.4.1 | مدل سه بعدی، نقشه‌های جزییات اجرایی و شاپ دراوینگ زیرسازی هندریل ساختمان کتابخانه نمای غربی | 10d | 2025-12-31 A | 2026-01-09 A | 188 | 100% | 1404/10/10 | 1404/10/19 | درصد |
| 245 | 2.2.2.6.4.2 | مدل سه بعدی، نقشه‌های جزییات اجرایی و شاپ دراوینگ پروفیل هندریل ساختمان کتابخانه نمای غربی | 10d | 2026-01-10 A | 2026-01-19 A | 244 | 100% | 1404/10/20 | 1404/10/29 | درصد |
| 246 | 2.2.2.6.4.3 | تهیه نقشه‌های ساخت زیرسازی هندریل ساختمان کتابخانه نمای غربی | 10d | 2026-01-13 A | 2026-01-22 A | 245FS-7d | 100% | 1404/10/23 | 1404/11/2 | درصد |
| 247 | 2.2.2.6.4.4 | تهیه نقشه‌های ساخت پروفیل هندریل ساختمان کتابخانه نمای غربی | 10d | 2026-01-16 A | 2026-01-25 A | 246FS-7d | 100% | 1404/10/26 | 1404/11/5 | درصد |
| 248 | 2.2.2.6.4.5 | نقشه‌های ساخت و سفارش گذاری شیشه‌های هندریل ساختمان کتابخانه نمای غربی | 10d | 2026-01-19 A | 2026-01-28 A | 247FS-7d | 100% | 1404/10/29 | 1404/11/8 | درصد |
| 249 | 2.2.2.7 | **مهندسی نقشه‌های فلاشینگ، دودبند و سمنت بورد ساختمان کتابخانه** | 105d | 2025-12-31 A | 2026-04-14 A |  | 100% | 1404/10/10 | 1405/1/25 |  |
| 250 | 2.2.2.7.1 | مدل سه بعدی، نقشه‌های جزییات اجرایی و شاپ دراوینگ زیرسازی سمنت بورد ساختمان کتابخانه | 7d | 2025-12-31 A | 2026-01-06 A | 188 | 100% | 1404/10/10 | 1404/10/16 | درصد |
| 251 | 2.2.2.7.2 | مدل سه بعدی، نقشه‌های جزییات اجرایی و شاپ دراوینگ سمنت بورد ساختمان کتابخانه | 7d | 2026-01-07 A | 2026-01-13 A | 250 | 100% | 1404/10/17 | 1404/10/23 | درصد |
| 252 | 2.2.2.7.3 | مدل سه بعدی، نقشه‌های جزییات اجرایی و شاپ دراوینگ فلاشینگ ساختمان کتابخانه | 7d | 2026-01-14 A | 2026-01-20 A | 251 | 100% | 1404/10/24 | 1404/10/30 | درصد |
| 253 | 2.2.2.7.4 | نقشه های اجرایی دودبند و هوابند ساختمان کتابخانه | 7d | 2026-01-14 A | 2026-01-20 A | 252FS-7d | 100% | 1404/10/24 | 1404/10/30 | درصد |
| 254 | 2.2.2.7.5 | تهیه نقشه‌های ساخت زیرسازی سمنت بورد ساختمان کتابخانه | 7d | 2026-01-16 A | 2026-01-22 A | 253FS-5d | 100% | 1404/10/26 | 1404/11/2 | درصد |
| 255 | 2.2.2.7.6 | تهیه نقشه‌های ساخت سمنت بورد ساختمان کتابخانه | 7d | 2026-01-18 A | 2026-01-24 A | 254FS-5d | 100% | 1404/10/28 | 1404/11/4 | درصد |
| 256 | 2.2.2.7.7 | تهیه نقشه‌های ساخت فلاشینگ ساختمان کتابخانه | 7d | 2026-04-08 A | 2026-04-14 A | 255FS+73d | 100% | 1405/1/19 | 1405/1/25 | درصد |
| 257 | 2.2.2.7.8 | تهیه نقشه‌های ساخت دودبند و هوابند ساختمان کتابخانه | 7d | 2026-04-01 A | 2026-04-07 A | 256FS-14d | 100% | 1405/1/12 | 1405/1/18 | درصد |
| 258 | 2.2.2.8 | **مهندسی نقشه‌های بازشوها و درب های اسلایدینگ و اتوماتیک ساختمان کتابخانه** | 141d | 2025-11-27 A | 2026-04-16 A |  | 100% | 1404/9/6 | 1405/1/27 |  |
| 259 | 2.2.2.8.1 | **مهندسی نقشه‌های بازشوها و درب های اسلایدینگ و اتوماتیک ساختمان کتابخانه نمای شمالی** | 115d | 2025-12-21 A | 2026-04-14 A |  | 100% | 1404/9/30 | 1405/1/25 |  |
| 260 | 2.2.2.8.1.1 | مدل سه بعدی، نقشه‌های جزییات اجرایی و شاپ دراوینگ بازشوها ساختمان کتابخانه نمای شمالی | 7d | 2025-12-21 A | 2025-12-27 A | 170 | 100% | 1404/9/30 | 1404/10/6 | درصد |
| 261 | 2.2.2.8.1.2 | نقشه های اجرایی درب‌های اتوماتیک ساختمان کتابخانه نمای شمالی | 7d | 2026-04-08 A | 2026-04-14 A | 260FS+101d | 100% | 1405/1/19 | 1405/1/25 | درصد |
| 262 | 2.2.2.8.1.3 | تهیه نقشه‌های ساخت بازشوها ساختمان کتابخانه نمای شمالی | 7d | 2026-04-08 A | 2026-04-14 A | 261FS-7d | 100% | 1405/1/19 | 1405/1/25 | درصد |
| 263 | 2.2.2.8.1.4 | تهیه نقشه‌های ساخت درب‌های اتوماتیک ساختمان کتابخانه نمای شمالی | 7d | 2026-04-08 A | 2026-04-14 A | 260FS+101d | 100% | 1405/1/19 | 1405/1/25 | درصد |
| 264 | 2.2.2.8.1.5 | نقشه‌های ساخت و سفارش گذاری شیشه های بازشو ساختمان کتابخانه نمای شمالی | 7d | 2026-04-08 A | 2026-04-14 A | 263FS-7d | 100% | 1405/1/19 | 1405/1/25 | درصد |
| 265 | 2.2.2.8.2 | **مهندسی نقشه‌های بازشوها و درب های اسلایدینگ و اتوماتیک ساختمان کتابخانه نمای جنوبی** | 107d | 2025-12-31 A | 2026-04-16 A |  | 100% | 1404/10/10 | 1405/1/27 |  |
| 266 | 2.2.2.8.2.1 | مدل سه بعدی، نقشه‌های جزییات اجرایی و شاپ دراوینگ بازشوها ساختمان کتابخانه نمای جنوبی | 7d | 2025-12-31 A | 2026-01-06 A | 176 | 100% | 1404/10/10 | 1404/10/16 | درصد |
| 267 | 2.2.2.8.2.2 | نقشه های اجرایی درب‌های اتوماتیک ساختمان کتابخانه نمای جنوبی | 7d | 2026-04-08 A | 2026-04-14 A | 266FS+91d | 100% | 1405/1/19 | 1405/1/25 | درصد |
| 268 | 2.2.2.8.2.3 | تهیه نقشه‌های ساخت بازشوها ساختمان کتابخانه نمای جنوبی | 7d | 2026-04-10 A | 2026-04-16 A | 267FS-5d | 100% | 1405/1/21 | 1405/1/27 | درصد |
| 269 | 2.2.2.8.2.4 | تهیه نقشه‌های ساخت درب‌های اتوماتیک ساختمان کتابخانه نمای جنوبی | 7d | 2026-04-08 A | 2026-04-14 A | 266FS+91d | 100% | 1405/1/19 | 1405/1/25 | درصد |
| 270 | 2.2.2.8.2.5 | نقشه‌های ساخت و سفارش گذاری شیشه های بازشو ساختمان کتابخانه نمای جنوبی | 7d | 2026-04-10 A | 2026-04-16 A | 269FS-5d | 100% | 1405/1/21 | 1405/1/27 | درصد |

| ID | WBS | Task | Duration | Start | Finish | Predecessors | Complete | Work | Actual work | Cost | Actual cost | شروع | پایان | واحد |
| --- | --- | --- | --- | --- | --- | --- | --- | --- | --- | --- | --- | --- | --- | --- |
| 271 | 2.2.2.8.3 | **مهندسی نقشه‌های بازشوها و درب های اسلایدینگ و اتوماتیک ساختمان کتابخانه نمای شرقی** | 139d | 2025-11-27 A | 2026-04-14 A |  | 100% |  |  |  |  | 1404/9/6 | 1405/1/25 |  |
| 272 | 2.2.2.8.3.1 | مدل سه بعدی، نقشه‌های جزییات اجرایی و شاپ دراوینگ بازشوها ساختمان کتابخانه نمای شرقی | 7d | 2025-11-27 A | 2025-12-03 A | 182 | 100% |  |  |  |  | 1404/9/6 | 1404/9/12 | درصد |
| 273 | 2.2.2.8.3.2 | نقشه های اجرایی درب‌های اتوماتیک ساختمان کتابخانه نمای شرقی | 7d | 2026-04-08 A | 2026-04-14 A | 272FS+125d | 100% |  |  |  |  | 1405/1/19 | 1405/1/25 | درصد |
| 274 | 2.2.2.8.3.3 | تهیه نقشه‌های ساخت بازشوها ساختمان کتابخانه نمای شرقی | 7d | 2026-04-08 A | 2026-04-14 A | 273FS-7d | 100% |  |  |  |  | 1405/1/19 | 1405/1/25 | درصد |
| 275 | 2.2.2.8.4 | **مهندسی نقشه‌های بازشوها و درب های اسلایدینگ و اتوماتیک ساختمان کتابخانه نمای غربی** | 105d | 2025-12-31 A | 2026-04-14 A |  | 100% |  |  |  |  | 1404/10/10 | 1405/1/25 |  |
| 276 | 2.2.2.8.4.1 | مدل سه بعدی، نقشه‌های جزییات اجرایی و شاپ دراوینگ بازشوها ساختمان کتابخانه نمای غربی | 7d | 2025-12-31 A | 2026-01-06 A | 188 | 100% |  |  |  |  | 1404/10/10 | 1404/10/16 | درصد |
| 277 | 2.2.2.8.4.2 | نقشه های اجرایی درب‌های اتوماتیک ساختمان کتابخانه نمای غربی | 7d | 2026-04-08 A | 2026-04-14 A | 276FS+91d | 100% |  |  |  |  | 1405/1/19 | 1405/1/25 | درصد |
| 278 | 2.2.2.8.4.3 | تهیه نقشه‌های ساخت بازشوها ساختمان کتابخانه نمای غربی | 7d | 2026-04-08 A | 2026-04-14 A | 277FS-7d | 100% |  |  |  |  | 1405/1/19 | 1405/1/25 | درصد |
| 279 | 2.2.2.8.4.4 | تهیه نقشه‌های ساخت درب‌های اتوماتیک ساختمان کتابخانه نمای غربی | 7d | 2026-04-08 A | 2026-04-14 A | 276FS+91d | 100% |  |  |  |  | 1405/1/19 | 1405/1/25 | درصد |
| 280 | 2.2.2.8.4.5 | نقشه‌های ساخت و سفارش گذاری شیشه های بازشو ساختمان کتابخانه نمای غربی | 7d | 2026-04-08 A | 2026-04-14 A | 279FS-7d | 100% |  |  |  |  | 1405/1/19 | 1405/1/25 | درصد |
| 281 | 3 | **تهیه و ساخت پروفیل های آلومینیومی** | 314d | 2025-07-23 A | 2026-06-01 A |  | 100% |  |  | 200,000,000 | 200,000,000 | 1404/5/1 | 1405/3/11 |  |
| 282 | 3.1 | **تهیه، ساخت و ارسال پروفیل آلومینیومی و متعلقات ساختمان کشاورزی** | 314d | 2025-07-23 A | 2026-06-01 A |  | 100% |  |  |  |  | 1404/5/1 | 1405/3/11 |  |
| 283 | 3.1.1 | تهیه، ساخت و ارسال پروفیل آلومینیومی و متعلقات کشاورزی نمای شمالی | 35d | 2026-01-16 A | 2026-02-19 A | 18FS+59d, 1 | 100% |  |  |  |  | 1404/10/26 | 1404/11/30 | مترمربع |
| 284 | 3.1.2 | تهیه، ساخت و ارسال پروفیل آلومینیومی و متعلقات کشاورزی نمای جنوبی | 35d | 2026-01-07 A | 2026-02-10 A | 24FS+50d, 1 | 100% |  |  |  |  | 1404/10/17 | 1404/11/21 | مترمربع |
| 285 | 3.1.3 | تهیه، ساخت و ارسال پروفیل آلومینیومی و متعلقات کشاورزی نمای شرقی | 284d | 2025-07-23 A | 2026-05-02 A | 30FS-118d, 1 | 100% |  |  |  |  | 1404/5/1 | 1405/2/12 | مترمربع |
| 286 | 3.1.4 | تهیه، ساخت و ارسال پروفیل آلومینیومی و متعلقات کشاورزی نمای غربی | 185d | 2025-11-29 A | 2026-06-01 A | 36 | 100% |  |  |  |  | 1404/9/8 | 1405/3/11 | مترمربع |
| 287 | 3.1.5 | تهیه، ساخت و ارسال پروفیل آلومینیومی و متعلقات کشاورزی داخلی | 35d | 2025-10-29 A | 2025-12-02 A | 125FS-30d, 1 | 100% |  |  |  |  | 1404/8/7 | 1404/9/11 | مترمربع |
| 288 | 3.2 | **تهیه، ساخت و ارسال پروفیل آلومینیومی و متعلقات ساختمان کتابخانه** | 134d | 2025-11-26 A | 2026-04-08 A |  | 100% |  |  |  |  | 1404/9/5 | 1405/1/19 |  |
| 289 | 3.2.1 | تهیه، ساخت و ارسال پروفیل آلومینیومی و متعلقات کتابخانه نمای شمالی | 48d | 2025-11-26 A | 2026-01-12 A | 155FS+20d | 100% |  |  |  |  | 1404/9/5 | 1404/10/22 | مترمربع |
| 290 | 3.2.2 | تهیه، ساخت و ارسال پروفیل آلومینیومی و متعلقات کتابخانه نمای جنوبی | 57d | 2025-11-26 A | 2026-01-21 A | 155FS+20d | 100% |  |  |  |  | 1404/9/5 | 1404/11/1 | مترمربع |
| 291 | 3.2.3 | تهیه، ساخت و ارسال پروفیل آلومینیومی و متعلقات کتابخانه نمای شرقی | 100d | 2025-12-30 A | 2026-04-08 A | 155FS+54d | 100% |  |  |  |  | 1404/10/9 | 1405/1/19 | مترمربع |
| 292 | 3.2.4 | تهیه، ساخت و ارسال پروفیل آلومینیومی و متعلقات کتابخانه نمای غربی | 82d | 2026-01-17 A | 2026-04-08 A | 155FS+72d | 100% |  |  |  |  | 1404/10/27 | 1405/1/19 | مترمربع |
| 293 | 4 | **تهیه، ساخت و ارسال شیشه** | 248d | 2025-12-28 A | 2026-09-01 A |  | 100% | 1864h | 1864h | 216,000,000 | 216,000,000 | 1404/10/7 | 1405/6/10 |  |
| 294 | 4.1 | **تهیه و ساخت و ارسال شیشه نمای ساختمان کشاورزی** | 248d | 2025-12-28 A | 2026-09-01 A |  | 100% | 720h | 720h |  |  | 1404/10/7 | 1405/6/10 |  |
| 295 | 4.1.1 | **تهیه و ساخت و ارسال شیشه نمای ساختمان کشاورزی وجه شمالی** | 248d | 2025-12-28 A | 2026-09-01 A |  | 100% | 720h | 720h |  |  | 1404/10/7 | 1405/6/10 |  |
| 296 | 4.1.1.1 | **شیشه‌های کرتین وال و ویندووال ساختمان کشاورزی نمای شمالی** | 238.3d | 2025-12-28 A | 2026-08-23 A |  | 100% | 720h | 720h |  |  | 1404/10/7 | 1405/6/1 |  |
| 297 | 4.1.1.1.1 | تأمین متریال مورد نیاز جهت شیشه‌های کرتین وال و ویندووال نمای شمالی ساختمان کشاورزی | 30d | 2025-12-28 A | 2026-08-10 A | 11FS+230d | 100% | 240h | 240h |  |  | 1404/10/7 | 1405/5/19 | مترمربع |
| 298 | 4.1.1.1.2 | فراوری و ساخت شیشه‌های کرتین وال و ویندووال نمای شمالی ساختمان کشاورزی | 10d | 2026-08-10 A | 2026-08-20 A | 297, 21 | 100% | 240h | 240h |  |  | 1405/5/19 | 1405/5/29 | مترمربع |
| 299 | 4.1.1.1.3 | ارسال به کارگاه شیشه‌های کرتین وال و ویندووال نمای شمالی ساختمان کشاورزی | 10d | 2026-08-13 A | 2026-08-23 A | 298FS-7d | 100% | 240h | 240h |  |  | 1405/5/22 | 1405/6/1 | مترمربع |

| ID | WBS | Task | Duration | Start | Finish | Predecessors | Complete | شروع | پایان | واحد |
| --- | --- | --- | --- | --- | --- | --- | --- | --- | --- | --- |
| 300 | 4.1.1.2 | **شیشه‌های کلمپ ساختمان کشاورزی نمای شمالی** | 158d | 2026-03-27 A | 2026-08-31 A |  | 100% | 1405/1/7 | 1405/6/9 |  |
| 301 | 4.1.1.2.1 | تأمین متریال مورد نیاز جهت شیشه‌های کلمپ نمای شمالی ساختمان کشاورزی | 10d | 2026-03-27 A | 2026-08-15 A | 11FS+240d | 100% | 1405/1/7 | 1405/5/24 | مترمربع |
| 302 | 4.1.1.2.2 | فراوری و ساخت شیشه‌های کلمپ نمای شمالی ساختمان کشاورزی | 8d | 2026-08-16 A | 2026-08-23 A | 301, 85 | 100% | 1405/5/25 | 1405/6/1 | مترمربع |
| 303 | 4.1.1.2.3 | ارسال به کارگاه شیشه‌های کلمپ نمای شمالی ساختمان کشاورزی | 8d | 2026-08-24 A | 2026-08-31 A | 302 | 100% | 1405/6/2 | 1405/6/9 | مترمربع |
| 304 | 4.1.1.3 | **شیشه‌های هندریل ساختمان کشاورزی نمای شمالی** | 169d | 2026-03-17 A | 2026-09-01 A |  | 100% | 1404/12/26 | 1405/6/10 |  |
| 305 | 4.1.1.3.1 | تأمین متریال مورد نیاز جهت شیشه‌های هندریل نمای شمالی ساختمان کشاورزی | 20d | 2026-03-17 A | 2026-08-17 A | 11FS+240d | 100% | 1404/12/26 | 1405/5/26 | مترمربع |
| 306 | 4.1.1.3.2 | فراوری و ساخت شیشه‌های هندریل نمای شمالی ساختمان کشاورزی | 10d | 2026-08-18 A | 2026-08-27 A | 305, 91 | 100% | 1405/5/27 | 1405/6/5 | مترمربع |
| 307 | 4.1.1.3.3 | ارسال به کارگاه شیشه‌های هندریل نمای شمالی ساختمان کشاورزی | 10d | 2026-08-23 A | 2026-09-01 A | 306FS-5d | 100% | 1405/6/1 | 1405/6/10 | مترمربع |
| 308 | 4.1.1.4 | **شیشه‌های بازشو ساختمان کشاورزی نمای شمالی** | 167d | 2026-03-17 A | 2026-08-30 A |  | 100% | 1404/12/26 | 1405/6/8 |  |
| 309 | 4.1.1.4.1 | تأمین متریال مورد نیاز جهت شیشه‌های بازشو نمای شمالی ساختمان کشاورزی | 20d | 2026-03-17 A | 2026-08-18 A | 11FS+240d | 100% | 1404/12/26 | 1405/5/27 | مترمربع |
| 310 | 4.1.1.4.2 | فراوری و ساخت شیشه‌های بازشو نمای شمالی ساختمان کشاورزی | 5d | 2026-08-21 A | 2026-08-25 A | 309, 105FS-15d | 100% | 1405/5/30 | 1405/6/3 | مترمربع |
| 311 | 4.1.1.4.3 | ارسال به کارگاه شیشه‌های بازشو نمای شمالی ساختمان کشاورزی | 5d | 2026-08-26 A | 2026-08-30 A | 310 | 100% | 1405/6/4 | 1405/6/8 | مترمربع |
| 312 | 4.1.2 | **تهیه و ساخت و ارسال شیشه نمای ساختمان کشاورزی وجه جنوبی** | 178.68d | 2026-03-07 A | 2026-09-01 A |  | 100% | 1404/12/16 | 1405/6/10 |  |
| 313 | 4.1.2.1 | **شیشه‌های کرتین وال و ویندووال ساختمان کشاورزی نمای جنوبی** | 174d | 2026-03-07 A | 2026-08-27 A |  | 100% | 1404/12/16 | 1405/6/5 |  |
| 314 | 4.1.2.1.1 | تأمین متریال مورد نیاز جهت شیشه‌های کرتین وال و ویندووال نمای جنوبی ساختمان کشاورزی | 30d | 2026-03-07 A | 2026-08-14 A | 11FS+235d | 100% | 1404/12/16 | 1405/5/23 | مترمربع |
| 315 | 4.1.2.1.2 | فراوری و ساخت شیشه‌های کرتین وال و ویندووال نمای جنوبی ساختمان کشاورزی | 15d | 2026-08-05 A | 2026-08-19 A | 314FS-10d, 27 | 100% | 1405/5/14 | 1405/5/28 | مترمربع |
| 316 | 4.1.2.1.3 | ارسال به کارگاه شیشه‌های کرتین وال و ویندووال نمای جنوبی ساختمان کشاورزی | 15d | 2026-08-13 A | 2026-08-27 A | 315FS-7d | 100% | 1405/5/22 | 1405/6/5 | مترمربع |
| 317 | 4.1.2.2 | **شیشه‌های هندریل ساختمان کشاورزی نمای جنوبی** | 158.68d | 2026-03-27 A | 2026-09-01 A |  | 100% | 1405/1/7 | 1405/6/10 |  |
| 318 | 4.1.2.2.1 | تأمین متریال مورد نیاز جهت شیشه‌های هندریل نمای جنوبی ساختمان کشاورزی | 10d | 2026-03-27 A | 2026-08-24 A | 11FS+249d | 100% | 1405/1/7 | 1405/6/2 | مترمربع |
| 319 | 4.1.2.2.2 | فراوری و ساخت شیشه‌های هندریل نمای جنوبی ساختمان کشاورزی | 8d | 2026-06-14 A | 2026-08-28 A | 318, 91 | 100% | 1405/3/24 | 1405/6/6 | مترمربع |
| 320 | 4.1.2.2.3 | ارسال به کارگاه شیشه‌های هندریل نمای جنوبی ساختمان کشاورزی | 8d | 2026-06-22 A | 2026-09-01 A | 319 | 100% | 1405/4/1 | 1405/6/10 | مترمربع |
| 321 | 4.1.2.3 | **شیشه‌های بازشو ساختمان کشاورزی نمای جنوبی** | 157d | 2026-03-28 A | 2026-08-31 A |  | 100% | 1405/1/8 | 1405/6/9 |  |
| 322 | 4.1.2.3.1 | تأمین متریال مورد نیاز جهت شیشه‌های بازشو نمای جنوبی ساختمان کشاورزی | 10d | 2026-03-28 A | 2026-08-20 A | 11FS+175d, 309 | 100% | 1405/1/8 | 1405/5/29 | مترمربع |
| 323 | 4.1.2.3.2 | فراوری و ساخت شیشه‌های بازشو نمای جنوبی ساختمان کشاورزی | 3d | 2026-08-26 A | 2026-08-28 A | 322FS-3d, 106FS-3d | 100% | 1405/6/4 | 1405/6/6 | مترمربع |
| 324 | 4.1.2.3.3 | ارسال به کارگاه شیشه‌های بازشو نمای جنوبی ساختمان کشاورزی | 3d | 2026-08-29 A | 2026-08-31 A | 323 | 100% | 1405/6/7 | 1405/6/9 | مترمربع |

| ID | WBS | Task | Duration | Start | Finish | Predecessors | Complete | شروع | پایان | واحد |
| --- | --- | --- | --- | --- | --- | --- | --- | --- | --- | --- |
| 325 | 4.1.3 | **تهیه و ساخت و ارسال شیشه نمای ساختمان کشاورزی وجه شرقی** | 160d | 2026-03-26 A | 2026-09-01 A |  | 100% | 1405/1/6 | 1405/6/10 |  |
| 326 | 4.1.3.1 | **شیشه‌های کرتین وال و ویندووال ساختمان کشاورزی نمای شرقی** | 97.26d | 2026-05-23 A | 2026-08-28 A |  | 100% | 1405/3/2 | 1405/6/6 |  |
| 327 | 4.1.3.1.1 | تأمین متریال مورد نیاز جهت شیشه‌های کرتین وال و ویندووال نمای شرقی ساختمان کشاورزی | 11d | 2026-06-06 A | 2026-08-25 A | 11FS+245d | 100% | 1405/3/16 | 1405/6/3 | مترمربع |
| 328 | 4.1.3.1.2 | فراوری و ساخت شیشه‌های کرتین وال و ویندووال نمای شرقی ساختمان کشاورزی | 15d | 2026-06-05 A | 2026-08-26 A | 327FS-9d, 33 | 100% | 1405/3/15 | 1405/6/4 | مترمربع |
| 329 | 4.1.3.1.3 | ارسال به کارگاه شیشه‌های کرتین وال و ویندووال نمای شرقی ساختمان کشاورزی | 47d | 2026-05-23 A | 2026-08-28 A | 328FS-20d | 100% | 1405/3/2 | 1405/6/6 | مترمربع |
| 330 | 4.1.3.2 | **شیشه‌های کلمپ ساختمان کشاورزی نمای شرقی** | 158d | 2026-03-27 A | 2026-08-31 A |  | 100% | 1405/1/7 | 1405/6/9 |  |
| 331 | 4.1.3.2.1 | تأمین متریال مورد نیاز جهت شیشه‌های کلمپ نمای شرقی ساختمان کشاورزی | 10d | 2026-03-27 A | 2026-08-18 A | 11FS+180d, 301 | 100% | 1405/1/7 | 1405/5/27 | مترمربع |
| 332 | 4.1.3.2.2 | فراوری و ساخت شیشه‌های کلمپ نمای شرقی ساختمان کشاورزی | 2d | 2026-08-22 A | 2026-08-23 A | 331FS+2d, 33, 302FF | 100% | 1405/5/31 | 1405/6/1 | مترمربع |
| 333 | 4.1.3.2.3 | ارسال به کارگاه شیشه‌های کلمپ نمای شرقی ساختمان کشاورزی | 2d | 2026-08-30 A | 2026-08-31 A | 332, 303FF | 100% | 1405/6/8 | 1405/6/9 | مترمربع |
| 334 | 4.1.3.3 | **شیشه‌های هندریل ساختمان کشاورزی نمای شرقی** | 160d | 2026-03-26 A | 2026-09-01 A |  | 100% | 1405/1/6 | 1405/6/10 |  |
| 335 | 4.1.3.3.1 | تأمین متریال مورد نیاز جهت شیشه‌های هندریل نمای شرقی ساختمان کشاورزی | 15d | 2026-03-26 A | 2026-08-11 A | 11FS+235d | 100% | 1405/1/6 | 1405/5/20 | مترمربع |
| 336 | 4.1.3.3.2 | فراوری و ساخت شیشه‌های هندریل نمای شرقی ساختمان کشاورزی | 15d | 2026-08-09 A | 2026-08-23 A | 335FS-3d, 91 | 100% | 1405/5/18 | 1405/6/1 | مترمربع |
| 337 | 4.1.3.3.3 | ارسال به کارگاه شیشه‌های هندریل نمای شرقی ساختمان کشاورزی | 15d | 2026-08-18 A | 2026-09-01 A | 336FS-6d | 100% | 1405/5/27 | 1405/6/10 | مترمربع |
| 338 | 4.1.3.4 | **شیشه‌های بازشو ساختمان کشاورزی نمای شرقی** | 153d | 2026-04-01 A | 2026-08-31 A |  | 100% | 1405/1/12 | 1405/6/9 |  |
| 339 | 4.1.3.4.1 | تأمین متریال مورد نیاز جهت شیشه‌های بازشو نمای شرقی ساختمان کشاورزی | 5d | 2026-04-01 A | 2026-08-20 A | 11FS+180d, 322FF | 100% | 1405/1/12 | 1405/5/29 | مترمربع |
| 340 | 4.1.3.4.2 | فراوری و ساخت شیشه‌های بازشو نمای شرقی ساختمان کشاورزی | 1d | 2026-08-29 A | 2026-08-29 A | 339, 107, 323FF | 100% | 1405/6/7 | 1405/6/7 | مترمربع |
| 341 | 4.1.3.4.3 | ارسال به کارگاه شیشه‌های بازشو نمای شرقی ساختمان کشاورزی | 1d | 2026-08-31 A | 2026-08-31 A | 340, 324FF | 100% | 1405/6/9 | 1405/6/9 | مترمربع |
| 342 | 4.1.4 | **تهیه و ساخت و ارسال شیشه نمای ساختمان کشاورزی وجه غربی** | 179d | 2026-03-07 A | 2026-09-01 A |  | 100% | 1404/12/16 | 1405/6/10 |  |
| 343 | 4.1.4.1 | **شیشه‌های کرتین وال و ویندووال ساختمان کشاورزی نمای غربی** | 177.4d | 2026-03-07 A | 2026-08-31 A |  | 100% | 1404/12/16 | 1405/6/9 |  |
| 344 | 4.1.4.1.1 | تأمین متریال مورد نیاز جهت شیشه‌های کرتین وال و ویندووال نمای غربی ساختمان کشاورزی | 30d | 2026-03-07 A | 2026-08-14 A | 11FS+235d | 100% | 1404/12/16 | 1405/5/23 | مترمربع |
| 345 | 4.1.4.1.2 | فراوری و ساخت شیشه‌های کرتین وال و ویندووال نمای غربی ساختمان کشاورزی | 30d | 2026-06-10 A | 2026-08-23 A | 344FS-20d, 39 | 100% | 1405/3/20 | 1405/6/1 | مترمربع |
| 346 | 4.1.4.1.3 | ارسال به کارگاه شیشه‌های کرتین وال و ویندووال نمای غربی ساختمان کشاورزی | 30d | 2026-06-20 A | 2026-08-31 A | 345FS-20d | 100% | 1405/3/30 | 1405/6/9 | مترمربع |
| 347 | 4.1.4.2 | **شیشه‌های کلمپ ساختمان کشاورزی نمای غربی** | 155.4d | 2026-03-27 A | 2026-08-29 A |  | 100% | 1405/1/7 | 1405/6/7 |  |
| 348 | 4.1.4.2.1 | تأمین متریال مورد نیاز جهت شیشه‌های کلمپ نمای غربی ساختمان کشاورزی | 10d | 2026-03-27 A | 2026-08-10 A | 11FS+235d | 100% | 1405/1/7 | 1405/5/19 | مترمربع |
| 349 | 4.1.4.2.2 | فراوری و ساخت شیشه‌های کلمپ نمای غربی ساختمان کشاورزی | 3d | 2026-08-18 A | 2026-08-21 A | 348FS-5d, 345FS-5d | 100% | 1405/5/27 | 1405/5/30 | مترمربع |
| 350 | 4.1.4.2.3 | ارسال به کارگاه شیشه‌های کلمپ نمای غربی ساختمان کشاورزی | 3d | 2026-08-26 A | 2026-08-29 A | 349, 346FS-5d | 100% | 1405/6/4 | 1405/6/7 | مترمربع |

| ID | WBS | Task | Duration | Start | Finish | Predecessors | Complete | Work | Actual work | شروع | پایان | واحد |
| --- | --- | --- | --- | --- | --- | --- | --- | --- | --- | --- | --- | --- |
| 351 | 4.1.4.3 | **شیشه‌های هندریل ساختمان کشاورزی نمای غربی** | 169d | 2026-03-17 A | 2026-09-01 A |  | 100% |  |  | 1404/12/26 | 1405/6/10 |  |
| 352 | 4.1.4.3.1 | تأمین متریال مورد نیاز جهت شیشه‌های هندریل نمای غربی ساختمان کشاورزی | 20d | 2026-03-17 A | 2026-08-07 A | 11FS+230d | 100% |  |  | 1404/12/26 | 1405/5/16 | مترمربع |
| 353 | 4.1.4.3.2 | فراوری و ساخت شیشه‌های هندریل نمای غربی ساختمان کشاورزی | 20d | 2026-08-05 A | 2026-08-24 A | 352FS-11d, 91, 336FS-19d | 100% |  |  | 1405/5/14 | 1405/6/2 | مترمربع |
| 354 | 4.1.4.3.3 | ارسال به کارگاه شیشه‌های هندریل نمای غربی ساختمان کشاورزی | 20d | 2026-08-13 A | 2026-09-01 A | 353FS-12d | 100% |  |  | 1405/5/22 | 1405/6/10 | مترمربع |
| 355 | 4.1.4.4 | **شیشه‌های بازشو ساختمان کشاورزی نمای غربی** | 147d | 2026-04-06 A | 2026-08-30 A |  | 100% |  |  | 1405/1/17 | 1405/6/8 |  |
| 356 | 4.1.4.4.1 | تأمین متریال مورد نیاز جهت شیشه‌های بازشو نمای غربی ساختمان کشاورزی | 1d | 2026-04-06 A | 2026-08-09 A | 11FS+235d | 100% |  |  | 1405/1/17 | 1405/5/18 | مترمربع |
| 357 | 4.1.4.4.2 | فراوری و ساخت شیشه‌های بازشو نمای غربی ساختمان کشاورزی | 5d | 2026-08-19 A | 2026-08-23 A | 356, 108FS-10d, 353FS-10d | 100% |  |  | 1405/5/28 | 1405/6/1 | مترمربع |
| 358 | 4.1.4.4.3 | ارسال به کارگاه شیشه‌های بازشو نمای غربی ساختمان کشاورزی | 5d | 2026-08-26 A | 2026-08-30 A | 357, 354FS-7d | 100% |  |  | 1405/6/4 | 1405/6/8 | مترمربع |
| 359 | 4.1.5 | **تهیه و ساخت و ارسال شیشه نمای ساختمان کشاورزی داخلی** | 55d | 2026-04-06 A | 2026-05-30 A |  | 100% |  |  | 1405/1/17 | 1405/3/9 |  |
| 360 | 4.1.5.1 | تأمین متریال مورد نیاز جهت شیشه‌های کرتین وال و ویندووال داخلی ساختمان کشاورزی | 7d | 2026-04-06 A | 2026-04-12 A | 11FS+110d | 100% |  |  | 1405/1/17 | 1405/1/23 | مترمربع |
| 361 | 4.1.5.2 | فراوری و ساخت شیشه‌های کرتین وال و ویندووال داخلی ساختمان کشاورزی | 7d | 2026-05-17 A | 2026-05-23 A | 360, 129, 350 | 100% |  |  | 1405/2/27 | 1405/3/2 | مترمربع |
| 362 | 4.1.5.3 | ارسال به کارگاه شیشه‌های کرتین وال و ویندووال داخلی ساختمان کشاورزی | 7d | 2026-05-24 A | 2026-05-30 A | 361 | 100% |  |  | 1405/3/3 | 1405/3/9 | مترمربع |
| 363 | 4.2 | **تهیه و ساخت و ارسال شیشه نمای ساختمان کتابخانه** | 160.54d | 2026-03-17 A | 2026-08-24 A |  | 100% | 672h | 672h | 1404/12/26 | 1405/6/2 |  |
| 364 | 4.2.1 | **تهیه و ساخت و ارسال شیشه نمای ساختمان کتابخانه نمای شمالی** | 138.6d | 2026-04-05 A | 2026-08-21 A |  | 100% | 672h | 672h | 1405/1/16 | 1405/5/30 |  |
| 365 | 4.2.1.1 | **شیشه‌های کرتین وال و ویندووال ساختمان کتابخانه نمای شمالی** | 80.4d | 2026-04-05 A | 2026-06-24 A |  | 100% | 416h | 416h | 1405/1/16 | 1405/4/3 |  |
| 366 | 4.2.1.1.1 | تأمین متریال مورد نیاز جهت شیشه‌های کرتین وال و ویندووال ساختمان کتابخانه نمای شمالی | 10d | 2026-04-05 A | 2026-06-15 A | 170FS+175d, 160 | 100% | 80h | 80h | 1405/1/16 | 1405/3/25 | مترمربع |
| 367 | 4.2.1.1.2 | فراوری و ساخت شیشه‌های کرتین وال و ویندووال ساختمان کتابخانه نمای شمالی | 21d | 2026-04-15 A | 2026-06-20 A | 366 | 100% | 168h | 168h | 1405/1/26 | 1405/3/30 | مترمربع |
| 368 | 4.2.1.1.3 | ارسال به کارگاه شیشه‌های کرتین وال و ویندووال ساختمان کتابخانه نمای شمالی | 21d | 2026-05-06 A | 2026-06-24 A | 367 | 100% | 168h | 168h | 1405/2/16 | 1405/4/3 | مترمربع |
| 369 | 4.2.1.2 | **شیشه‌های هندریل ساختمان کتابخانه نمای شمالی** | 133.6d | 2026-04-10 A | 2026-08-21 A |  | 100% | 152h | 152h | 1405/1/21 | 1405/5/30 |  |
| 370 | 4.2.1.2.1 | تأمین متریال مورد نیاز جهت شیشه‌های هندریل ساختمان کتابخانه نمای شمالی | 3d | 2026-04-10 A | 2026-08-05 A | 366FS+50d, 230 | 100% | 24h | 24h | 1405/1/21 | 1405/5/14 | مترمربع |
| 371 | 4.2.1.2.2 | فراوری و ساخت شیشه‌های هندریل ساختمان کتابخانه نمای شمالی | 8d | 2026-08-05 A | 2026-08-13 A | 370 | 100% | 64h | 64h | 1405/5/14 | 1405/5/22 | مترمربع |
| 372 | 4.2.1.2.3 | ارسال به کارگاه شیشه‌های هندریل ساختمان کتابخانه نمای شمالی | 8d | 2026-08-13 A | 2026-08-21 A | 371 | 100% | 64h | 64h | 1405/5/22 | 1405/5/30 | مترمربع |
| 373 | 4.2.1.3 | **شیشه‌های بازشو ساختمان کتابخانه نمای شمالی** | 123.41d | 2026-04-15 A | 2026-08-16 A |  | 100% | 104h | 104h | 1405/1/26 | 1405/5/25 |  |
| 374 | 4.2.1.3.1 | تأمین متریال مورد نیاز جهت شیشه‌های بازشو ساختمان کتابخانه نمای شمالی | 3d | 2026-04-15 A | 2026-08-06 A | 264, 370 | 100% | 24h | 24h | 1405/1/26 | 1405/5/15 | مترمربع |
| 375 | 4.2.1.3.2 | فراوری و ساخت شیشه‌های بازشو ساختمان کتابخانه نمای شمالی | 5d | 2026-08-06 A | 2026-08-11 A | 374 | 100% | 40h | 40h | 1405/5/15 | 1405/5/20 | مترمربع |
| 376 | 4.2.1.3.3 | ارسال به کارگاه شیشه‌های بازشو ساختمان کتابخانه نمای شمالی | 5d | 2026-08-11 A | 2026-08-16 A | 375 | 100% | 40h | 40h | 1405/5/20 | 1405/5/25 | مترمربع |

| ID | WBS | Task | Duration | Start | Finish | Predecessors | Complete | شروع | پایان | واحد |
| --- | --- | --- | --- | --- | --- | --- | --- | --- | --- | --- |
| 377 | 4.2.2 | **تهیه و ساخت و ارسال شیشه نمای ساختمان کتابخانه نمای جنوبی** | 137d | 2026-04-09 A | 2026-08-23 A |  | 100% | 1405/1/20 | 1405/6/1 |  |
| 378 | 4.2.2.1 | **شیشه‌های کرتین وال و ویندووال ساختمان کتابخانه نمای جنوبی** | 136d | 2026-04-10 A | 2026-08-23 A |  | 100% | 1405/1/21 | 1405/6/1 |  |
| 379 | 4.2.2.1.1 | تأمین متریال مورد نیاز جهت شیشه‌های کرتین وال و ویندووال ساختمان کتابخانه نمای جنوبی | 10d | 2026-04-10 A | 2026-08-13 A | 176FS+224d, 160 | 100% | 1405/1/21 | 1405/5/22 | مترمربع |
| 380 | 4.2.2.1.2 | فراوری و ساخت شیشه‌های کرتین وال و ویندووال ساختمان کتابخانه نمای جنوبی | 15d | 2026-08-05 A | 2026-08-19 A | 379FS-9d | 100% | 1405/5/14 | 1405/5/28 | مترمربع |
| 381 | 4.2.2.1.3 | ارسال به کارگاه شیشه‌های کرتین وال و ویندووال ساختمان کتابخانه نمای جنوبی | 15d | 2026-08-09 A | 2026-08-23 A | 380FS-11d | 100% | 1405/5/18 | 1405/6/1 | مترمربع |
| 382 | 4.2.2.2 | **شیشه‌های بازشو ساختمان کتابخانه نمای جنوبی** | 127.54d | 2026-04-17 A | 2026-08-22 A |  | 100% | 1405/1/28 | 1405/5/31 |  |
| 383 | 4.2.2.2.1 | تأمین متریال مورد نیاز جهت شیشه‌های بازشو ساختمان کتابخانه نمای جنوبی | 3d | 2026-04-17 A | 2026-08-14 A | 236, 270, 379 | 100% | 1405/1/28 | 1405/5/23 | مترمربع |
| 384 | 4.2.2.2.2 | فراوری و ساخت شیشه‌های بازشو ساختمان کتابخانه نمای جنوبی | 8d | 2026-08-06 A | 2026-08-14 A | 383FS-8d | 100% | 1405/5/15 | 1405/5/23 | مترمربع |
| 385 | 4.2.2.2.3 | ارسال به کارگاه شیشه‌های بازشو ساختمان کتابخانه نمای جنوبی | 8d | 2026-08-14 A | 2026-08-22 A | 384 | 100% | 1405/5/23 | 1405/5/31 | مترمربع |
| 386 | 4.2.2.3 | **شیشه‌های هندریل ساختمان کتابخانه نمای جنوبی** | 136.63d | 2026-04-09 A | 2026-08-23 A |  | 100% | 1405/1/20 | 1405/6/1 |  |
| 387 | 4.2.2.3.1 | تأمین متریال مورد نیاز جهت شیشه‌های هندریل ساختمان کتابخانه نمای جنوبی | 3d | 2026-04-09 A | 2026-08-16 A | 236FS+199d | 100% | 1405/1/20 | 1405/5/25 | مترمربع |
| 388 | 4.2.2.3.2 | فراوری و ساخت شیشه‌های هندریل ساختمان کتابخانه نمای جنوبی | 5d | 2026-06-18 A | 2026-08-20 A | 387 | 100% | 1405/3/28 | 1405/5/29 | مترمربع |
| 389 | 4.2.2.3.3 | ارسال به کارگاه شیشه‌های هندریل ساختمان کتابخانه نمای جنوبی | 5d | 2026-06-23 A | 2026-08-23 A | 388 | 100% | 1405/4/2 | 1405/6/1 | مترمربع |
| 390 | 4.2.3 | **تهیه و ساخت و ارسال شیشه نمای ساختمان کتابخانه نمای شرقی** | 143.7d | 2026-04-02 A | 2026-08-23 A |  | 100% | 1405/1/13 | 1405/6/1 |  |
| 391 | 4.2.3.1 | **شیشه‌های کرتین وال و ویندووال ساختمان کتابخانه نمای شرقی** | 143.7d | 2026-04-02 A | 2026-08-23 A |  | 100% | 1405/1/13 | 1405/6/1 |  |
| 392 | 4.2.3.1.1 | تأمین متریال مورد نیاز جهت شیشه‌های کرتین وال و ویندووال ساختمان کتابخانه نمای شرقی | 10d | 2026-04-02 A | 2026-08-19 A | 182, 160FS+239d | 100% | 1405/1/13 | 1405/5/28 | مترمربع |
| 393 | 4.2.3.1.2 | فراوری و ساخت شیشه‌های کرتین وال و ویندووال ساختمان کتابخانه نمای شرقی | 25d | 2026-04-02 A | 2026-08-19 A | 392FS-2d | 100% | 1405/1/13 | 1405/5/28 | مترمربع |
| 394 | 4.2.3.1.3 | ارسال به کارگاه شیشه‌های کرتین وال و ویندووال ساختمان کتابخانه نمای شرقی | 35d | 2026-05-28 A | 2026-08-23 A | 393 | 100% | 1405/3/7 | 1405/6/1 | مترمربع |
| 395 | 4.2.3.2 | **شیشه‌های هندریل ساختمان کتابخانه نمای شرقی** | 134.61d | 2026-04-09 A | 2026-08-21 A |  | 100% | 1405/1/20 | 1405/5/30 |  |
| 396 | 4.2.3.2.1 | تأمین متریال مورد نیاز جهت شیشه‌های هندریل ساختمان کتابخانه نمای شرقی | 3d | 2026-04-09 A | 2026-08-19 A | 392, 242 | 100% | 1405/1/20 | 1405/5/28 | مترمربع |
| 397 | 4.2.3.2.2 | فراوری و ساخت شیشه‌های هندریل ساختمان کتابخانه نمای شرقی | 7d | 2026-08-13 A | 2026-08-20 A | 396FS-6d | 100% | 1405/5/22 | 1405/5/29 | مترمربع |
| 398 | 4.2.3.2.3 | ارسال به کارگاه شیشه‌های هندریل ساختمان کتابخانه نمای شرقی | 7d | 2026-08-14 A | 2026-08-21 A | 397FS-6d | 100% | 1405/5/23 | 1405/5/30 | مترمربع |
| 399 | 4.2.4 | **تهیه و ساخت و ارسال شیشه نمای ساختمان کتابخانه نمای غربی** | 142.54d | 2026-04-04 A | 2026-08-24 A |  | 100% | 1405/1/15 | 1405/6/2 |  |
| 400 | 4.2.4.1 | **شیشه‌های کرتین وال و ویندووال ساختمان کتابخانه نمای غربی** | 85.4d | 2026-04-07 A | 2026-07-01 A |  | 100% | 1405/1/18 | 1405/4/10 |  |
| 401 | 4.2.4.1.1 | تأمین متریال مورد نیاز جهت شیشه‌های کرتین وال و ویندووال ساختمان کتابخانه نمای غربی | 5d | 2026-04-07 A | 2026-06-20 A | 188, 392FS-8d, 160 | 100% | 1405/1/18 | 1405/3/30 | مترمربع |
| 402 | 4.2.4.1.2 | فراوری و ساخت شیشه‌های کرتین وال و ویندووال ساختمان کتابخانه نمای غربی | 35d | 2026-04-12 A | 2026-06-25 A | 401FS-10d | 100% | 1405/1/23 | 1405/4/4 | مترمربع |
| 403 | 4.2.4.1.3 | ارسال به کارگاه شیشه‌های کرتین وال و ویندووال ساختمان کتابخانه نمای غربی | 35d | 2026-04-17 A | 2026-07-01 A | 402FS-10d | 100% | 1405/1/28 | 1405/4/10 | مترمربع |

| ID | WBS | Task | Duration | Start | Finish | Predecessors | Complete | Work | Actual work | شروع | پایان | واحد |
| --- | --- | --- | --- | --- | --- | --- | --- | --- | --- | --- | --- | --- |
| 404 | 4.2.4.2 | **شیشه‌های هندریل ساختمان کتابخانه نمای غربی** | 136.4d | 2026-04-09 A | 2026-08-23 A |  | 100% |  |  | 1405/1/20 | 1405/6/1 |  |
| 405 | 4.2.4.2.1 | تأمین متریال مورد نیاز جهت شیشه‌های هندریل ساختمان کتابخانه نمای غربی | 3d | 2026-04-09 A | 2026-08-12 A | 248FS+195d | 100% |  |  | 1405/1/20 | 1405/5/21 | مترمربع |
| 406 | 4.2.4.2.2 | فراوری و ساخت شیشه‌های هندریل ساختمان کتابخانه نمای غربی | 7d | 2026-06-18 A | 2026-08-19 A | 405 | 100% |  |  | 1405/3/28 | 1405/5/28 | مترمربع |
| 407 | 4.2.4.2.3 | ارسال به کارگاه شیشه‌های هندریل ساختمان کتابخانه نمای غربی | 7d | 2026-06-25 A | 2026-08-23 A | 406FS-2d | 100% |  |  | 1405/4/4 | 1405/6/1 | مترمربع |
| 408 | 4.2.4.3 | **شیشه‌های بازشو ساختمان کتابخانه نمای غربی** | 142.54d | 2026-04-04 A | 2026-08-24 A |  | 100% |  |  | 1405/1/15 | 1405/6/2 |  |
| 409 | 4.2.4.3.1 | تأمین متریال مورد نیاز جهت شیشه‌های بازشو ساختمان کتابخانه نمای غربی | 3d | 2026-04-04 A | 2026-08-18 A | 280FS+125d | 100% |  |  | 1405/1/15 | 1405/5/27 | مترمربع |
| 410 | 4.2.4.3.2 | فراوری و ساخت شیشه‌های بازشو ساختمان کتابخانه نمای غربی | 5d | 2026-08-18 A | 2026-08-23 A | 409 | 100% |  |  | 1405/5/27 | 1405/6/1 | مترمربع |
| 411 | 4.2.4.3.3 | ارسال به کارگاه شیشه‌های بازشو ساختمان کتابخانه نمای غربی | 5d | 2026-08-19 A | 2026-08-24 A | 410FS-4d | 100% |  |  | 1405/5/28 | 1405/6/2 | مترمربع |
| 412 | 4.2.5 | **تهیه و ساخت و ارسال شیشه کلمپ ساختمان کنابحانه** | 160d | 2026-03-17 A | 2026-08-23 A |  | 100% |  |  | 1404/12/26 | 1405/6/1 |  |
| 413 | 4.2.5.1 | تأمین متریال مورد نیاز جهت شیشه‌های کلمپ ساختمان کنابحانه | 52d | 2026-03-17 A | 2026-08-15 A | 207FS+222d, 160 | 100% |  |  | 1404/12/26 | 1405/5/24 | مترمربع |
| 414 | 4.2.5.2 | فراوری و ساخت شیشه‌های کلمپ ساختمان کنابحانه | 30d | 2026-06-04 A | 2026-08-20 A | 413FS-10d, 210 | 100% |  |  | 1405/3/14 | 1405/5/29 | مترمربع |
| 415 | 4.2.5.3 | ارسال به کارگاه شیشه‌های کلمپ ساختمان کنابحانه | 30d | 2026-06-05 A | 2026-08-23 A | 414FS-12d | 100% |  |  | 1405/3/15 | 1405/6/1 | مترمربع |
| 416 | 4.3 | **تهیه و ساخت و ارسال شیشه‌های اسکای لایت** | 167d | 2026-03-10 A | 2026-08-23 A |  | 100% | 472h | 472h | 1404/12/19 | 1405/6/1 |  |
| 417 | 4.3.1 | **تهیه و ساخت و ارسال شیشه‌های اسکای لایت ساختمان کتابخانه** | 160d | 2026-03-17 A | 2026-08-23 A |  | 100% | 472h | 472h | 1404/12/26 | 1405/6/1 |  |
| 418 | 4.3.1.1 | تأمین متریال مورد نیاز جهت شیشه‌های اسکای لایت ساختمان کتابخانه | 30d | 2026-03-17 A | 2026-08-09 A | 213FS+230d | 100% | 240h | 240h | 1404/12/26 | 1405/5/18 | مترمربع |
| 419 | 4.3.1.2 | فراوری و ساخت شیشه‌های اسکای لایت ساختمان کتابخانه | 12d | 2026-08-10 A | 2026-08-21 A | 216, 418 | 100% | 176h | 176h | 1405/5/19 | 1405/5/30 | مترمربع |
| 420 | 4.3.1.3 | ارسال به کارگاه شیشه‌های اسکای لایت ساختمان کتابخانه | 7d | 2026-08-17 A | 2026-08-23 A | 419FS-5d | 100% | 56h | 56h | 1405/5/26 | 1405/6/1 | مترمربع |
| 421 | 4.3.2 | **تهیه و ساخت و ارسال شیشه های اسکای لایت ساختمان کشاورزی بام** | 167d | 2026-03-10 A | 2026-08-23 A |  | 100% |  |  | 1404/12/19 | 1405/6/1 |  |
| 422 | 4.3.2.1 | تأمین متریال مورد نیاز جهت شیشه‌های اسکای لایت ساختمان کشاورزی بام | 30d | 2026-03-10 A | 2026-08-12 A | 139FS+260d | 100% |  |  | 1404/12/19 | 1405/5/21 | مترمربع |
| 423 | 4.3.2.2 | فراوری و ساخت شیشه‌های اسکای لایت ساختمان کشاورزی بام | 9d | 2026-08-13 A | 2026-08-21 A | 142, 422 | 100% |  |  | 1405/5/22 | 1405/5/30 | مترمربع |
| 424 | 4.3.2.3 | ارسال به کارگاه شیشه‌های اسکای لایت ساختمان کشاورزی بام | 7d | 2026-08-17 A | 2026-08-23 A | 423FS-5d | 100% |  |  | 1405/5/26 | 1405/6/1 | مترمربع |
| 425 | 4.3.3 | **تهیه و ساخت و ارسال شیشه‌های اسکای لایت ساختمان کشاورزی همکف** | 152d | 2026-03-25 A | 2026-08-23 A |  | 100% |  |  | 1405/1/5 | 1405/6/1 |  |
| 426 | 4.3.3.1 | تأمین متریال مورد نیاز جهت شیشه‌های اسکای لایت ساختمان کشاورزی همکف | 20d | 2026-03-25 A | 2026-08-15 A | 145FS+250d | 100% |  |  | 1405/1/5 | 1405/5/24 | مترمربع |
| 427 | 4.3.3.2 | فراوری و ساخت شیشه‌های اسکای لایت ساختمان کشاورزی همکف | 10d | 2026-08-11 A | 2026-08-20 A | 148, 426FS-5d | 100% |  |  | 1405/5/20 | 1405/5/29 | مترمربع |
| 428 | 4.3.3.3 | ارسال به کارگاه شیشه‌های اسکای لایت ساختمان کشاورزی همکف | 5d | 2026-08-19 A | 2026-08-23 A | 427FS-2d | 100% |  |  | 1405/5/28 | 1405/6/1 | مترمربع |

| ID | WBS | Task | Duration | Start | Finish | Predecessors | Complete | Work | Actual work | Cost | Actual cost | شروع | پایان | واحد |
| --- | --- | --- | --- | --- | --- | --- | --- | --- | --- | --- | --- | --- | --- | --- |
| 429 | 5 | **تهیه و ساخت پنل های بتنی صدر بتن** | 248.5d | 2025-12-21 A | 2026-08-26 A |  | 100% |  |  | 83,000,000 | 83,000,000 | 1404/9/30 | 1405/6/4 |  |
| 430 | 5.1 | **ساختمان کتابخانه نمای کاور بتنی ستون‌ها صدر بتن** | 248.5d | 2025-12-21 A | 2026-08-26 A |  | 100% |  |  |  |  | 1404/9/30 | 1405/6/4 |  |
| 431 | 5.1.1 | **وجه شمالی- ساختمان کتابخانه نمای کاور بتنی ستون‌ها صدر بتن** | 248.5d | 2025-12-21 A | 2026-08-26 A |  | 100% |  |  |  |  | 1404/9/30 | 1405/6/4 |  |
| 432 | 5.1.1.1 | **زیرسازی پنل بتنی ساختمان کتابخانه نمای کاور بتنی ستون‌ها صدر بتن** | 248.5d | 2025-12-21 A | 2026-08-26 A |  | 100% |  |  |  |  | 1404/9/30 | 1405/6/4 |  |
| 433 | 5.1.1.1.1 | تأمین آهن آلات زیرسازی ساختمان کتابخانه نمای کاور بتنی ستون‌ها صدر بتن | 190d | 2025-12-21 A | 2026-08-17 A | 220FS+150d, 161 | 100% |  |  |  |  | 1404/9/30 | 1405/5/26 | کیلوگرم |
| 434 | 5.1.1.1.2 | ساخت و مونتاژ زیرسازی ساختمان کتابخانه نمای کاور بتنی ستون‌ها صدر بتن | 15d | 2026-06-07 A | 2026-08-26 A | 221FS-5d, 223FS-5d, 433 | 100% |  |  |  |  | 1405/3/17 | 1405/6/4 | کیلوگرم |
| 435 | 5.1.1.1.3 | سندبلاست و رنگ آمیزی و ارسال به محل پروژه زیرسازی نمای کاور بتنی ستون‌ها صدر بتن | 15d | 2026-06-08 A | 2026-08-26 A | 434FS-10d | 100% |  |  |  |  | 1405/3/18 | 1405/6/4 | کیلوگرم |
| 436 | 5.1.1.2 | **پنل بتنی ساختمان کتابخانه نمای کاور بتنی ستون‌ها صدر بتن** | 141d | 2026-04-05 A | 2026-08-23 A |  | 100% |  |  |  |  | 1405/1/16 | 1405/6/1 |  |
| 437 | 5.1.1.2.1 | تأمین متریال سیمانی پنل بتنی و نانو آب گریز ساختمان کتابخانه نمای کاور بتنی ستون‌ها صدر بتن | 8d | 2026-04-23 A | 2026-08-14 A | 220FS+200d | 100% |  |  |  |  | 1405/2/3 | 1405/5/23 | مترمربع |
| 438 | 5.1.1.2.2 | طراحی و تولید قالب پنل بتنی ساختمان کتابخانه نمای کاور بتنی ستون‌ها صدر بتن | 8d | 2026-04-05 A | 2026-08-18 A | 437, 223FS-20d | 100% |  |  |  |  | 1405/1/16 | 1405/5/27 | مترمربع |
| 439 | 5.1.1.2.3 | تولید و ارسال به محل پروژه پنل بتنی - نمای کاور بتنی ستون‌ها صدر بتن | 22d | 2026-05-20 A | 2026-08-23 A | 438FS-20d, 435FS-20d | 100% |  |  |  |  | 1405/2/30 | 1405/6/1 | مترمربع |
| 440 | 6 | **تهیه و ساخت پنل های آجری و بتنی آلومینیوم شیشه تهران** | 296.85d | 2025-11-16 A | 2026-09-08 A |  | 100% | 3520.64h | 3520.64h | 160,000,000 | 160,000,000 | 1404/8/25 | 1405/6/17 |  |
| 441 | 6.1 | **ساختمان کتابخانه نمای بتنی آلومینیوم شیشه تهران** | 286.72d | 2025-11-16 A | 2026-08-29 A |  | 100% |  |  |  |  | 1404/8/25 | 1405/6/7 |  |
| 442 | 6.1.1 | **ساختمان کتابخانه نمای بتنی آلومینیوم شیشه تهران** | 286.72d | 2025-11-16 A | 2026-08-29 A |  | 100% |  |  |  |  | 1404/8/25 | 1405/6/7 |  |
| 443 | 6.1.1.1 | **ساختمان کتابخانه نمای بتنی غرب آلومینیوم شیشه تهران** | 156d | 2025-11-16 A | 2026-04-20 A |  | 100% |  |  |  |  | 1404/8/25 | 1405/1/31 |  |
| 444 | 6.1.1.1.1 | **زیرسازی - ساختمان کتابخانه نمای بتنی غرب آلومینیوم شیشه تهران** | 154d | 2025-11-16 A | 2026-04-18 A |  | 100% |  |  |  |  | 1404/8/25 | 1405/1/29 |  |
| 445 | 6.1.1.1.1.1 | تأمین آهن آلات زیرسازی - ساختمان کتابخانه نمای بتنی غرب آلومینیوم شیشه تهران | 67d | 2025-11-16 A | 2026-01-21 A | 192FS-65d | 100% |  |  |  |  | 1404/8/25 | 1404/11/1 | کیلوگرم |
| 446 | 6.1.1.1.1.2 | ساخت و مونتاژ زیرسازی - ساختمان کتابخانه نمای بتنی غرب آلومینیوم شیشه تهران | 50d | 2026-01-22 A | 2026-03-12 A | 445, 193 | 100% |  |  |  |  | 1404/11/2 | 1404/12/21 | کیلوگرم |
| 447 | 6.1.1.1.1.3 | سندبلاست و رنگ آمیزی و ارسال به محل پروژه زیرسازی - ساختمان کتابخانه نمای بتنی غرب آلومینیوم شیشه تهران | 37d | 2026-03-13 A | 2026-04-18 A | 446 | 100% |  |  |  |  | 1404/12/22 | 1405/1/29 | کیلوگرم |
| 448 | 6.1.1.1.2 | **پنل بتنی - ساختمان کتابخانه نمای بتنی غرب آلومینیوم شیشه تهران** | 91d | 2026-01-20 A | 2026-04-20 A |  | 100% |  |  |  |  | 1404/10/30 | 1405/1/31 |  |
| 449 | 6.1.1.1.2.1 | تأمین متریال سیمانی پنل بتنی و نانو آب گریز - ساختمان کتابخانه نمای بتنی غرب آلومینیوم شیشه تهران | 7d | 2026-01-20 A | 2026-01-26 A | 192 | 100% |  |  |  |  | 1404/10/30 | 1404/11/6 | مترمربع |
| 450 | 6.1.1.1.2.2 | طراحی و تولید قالب پنل بتنی - ساختمان کتابخانه نمای بتنی غرب آلومینیوم شیشه تهران | 45d | 2026-01-27 A | 2026-03-12 A | 449, 194 | 100% |  |  |  |  | 1404/11/7 | 1404/12/21 | مترمربع |
| 451 | 6.1.1.1.2.3 | تولید و ارسال به محل پروژه پنل بتنی - ساختمان کتابخانه نمای بتنی غرب آلومینیوم شیشه تهران | 35d | 2026-03-17 A | 2026-04-20 A | 450FS-33d, 194, 447FS-33d | 100% |  |  |  |  | 1404/12/26 | 1405/1/31 | مترمربع |
| 452 | 6.1.1.2 | **ساختمان کتابخانه نمای بتنی جنوب آلومینیوم شیشه تهران** | 59d | 2026-03-16 A | 2026-05-13 A |  | 100% |  |  |  |  | 1404/12/25 | 1405/2/23 |  |
| 453 | 6.1.1.2.1 | **زیرسازی - ساختمان کتابخانه نمای بتنی جنوب آلومینیوم شیشه تهران** | 39d | 2026-04-05 A | 2026-05-13 A |  | 100% |  |  |  |  | 1405/1/16 | 1405/2/23 |  |
| 454 | 6.1.1.2.1.1 | تأمین آهن آلات زیرسازی - ساختمان کتابخانه نمای بتنی جنوب آلومینیوم شیشه تهران | 7d | 2026-04-05 A | 2026-04-11 A | 197FS+70d | 100% |  |  |  |  | 1405/1/16 | 1405/1/22 | کیلوگرم |
| 455 | 6.1.1.2.1.2 | ساخت و مونتاژ زیرسازی - ساختمان کتابخانه نمای بتنی جنوب آلومینیوم شیشه تهران | 35d | 2026-04-07 A | 2026-05-11 A | 454FS-5d, 198FS-10d | 100% |  |  |  |  | 1405/1/18 | 1405/2/21 | کیلوگرم |
| 456 | 6.1.1.2.1.3 | سندبلاست و رنگ آمیزی و ارسال به محل پروژه زیرسازی - ساختمان کتابخانه نمای بتنی جنوب آلومینیوم شیشه تهران | 25d | 2026-04-19 A | 2026-05-13 A | 455FS-23d | 100% |  |  |  |  | 1405/1/30 | 1405/2/23 | کیلوگرم |

| ID | WBS | Task | Duration | Start | Finish | Predecessors | Complete | Constraint | Work | Actual work | شروع | پایان | واحد |
| --- | --- | --- | --- | --- | --- | --- | --- | --- | --- | --- | --- | --- | --- |
| 457 | 6.1.1.2.2 | **پنل بتنی - ساختمان کتابخانه نمای بتنی جنوب آلومینیوم شیشه تهران** | 59d | 2026-03-16 A | 2026-05-13 A |  | 100% |  |  |  | 1404/12/25 | 1405/2/23 |  |
| 458 | 6.1.1.2.2.1 | تأمین متریال سیمانی پنل بتنی و نانو آب گریز - ساختمان کتابخانه نمای بتنی جنوب آلومینیوم شیشه تهران | 7d | 2026-03-16 A | 2026-03-22 A | 197FS+50d | 100% |  |  |  | 1404/12/25 | 1405/1/2 | مترمربع |
| 459 | 6.1.1.2.2.2 | طراحی و تولید قالب پنل بتنی - ساختمان کتابخانه نمای بتنی جنوب آلومینیوم شیشه تهران | 35d | 2026-03-20 A | 2026-04-23 A | 458FS-3d, 199 | 100% |  |  |  | 1404/12/29 | 1405/2/3 | مترمربع |
| 460 | 6.1.1.2.2.3 | تولید و ارسال به محل پروژه پنل بتنی - ساختمان کتابخانه نمای بتنی جنوب آلومینیوم شیشه تهران | 29d | 2026-04-15 A | 2026-05-13 A | 459FS-31d, 199, 456FS-29d | 100% |  |  |  | 1405/1/26 | 1405/2/23 | مترمربع |
| 461 | 6.1.1.3 | **ساختمان کتابخانه نمای بتنی شمال آلومینیوم شیشه تهران** | 42d | 2026-04-02 A | 2026-05-13 A |  | 100% |  |  |  | 1405/1/13 | 1405/2/23 |  |
| 462 | 6.1.1.3.1 | **زیرسازی - ساختمان کتابخانه نمای بتنی شمال آلومینیوم شیشه تهران** | 40d | 2026-04-02 A | 2026-05-11 A |  | 100% |  |  |  | 1405/1/13 | 1405/2/21 |  |
| 463 | 6.1.1.3.1.1 | تأمین آهن آلات زیرسازی - ساختمان کتابخانه نمای بتنی شمال آلومینیوم شیشه تهران | 7d | 2026-04-02 A | 2026-04-08 A | 202FS+67d | 100% |  |  |  | 1405/1/13 | 1405/1/19 | کیلوگرم |
| 464 | 6.1.1.3.1.2 | ساخت و مونتاژ زیرسازی - ساختمان کتابخانه نمای بتنی شمال آلومینیوم شیشه تهران | 35d | 2026-04-05 A | 2026-05-09 A | 463FS-10d, 203FS-5d | 100% |  |  |  | 1405/1/16 | 1405/2/19 | کیلوگرم |
| 465 | 6.1.1.3.1.3 | سندبلاست و رنگ آمیزی و ارسال به محل پروژه زیرسازی - ساختمان کتابخانه نمای بتنی شمال آلومینیوم شیشه تهران | 25d | 2026-04-17 A | 2026-05-11 A | 464FS-23d | 100% |  |  |  | 1405/1/28 | 1405/2/21 | کیلوگرم |
| 466 | 6.1.1.3.2 | **پنل بتنی - ساختمان کتابخانه نمای بتنی شمال آلومینیوم شیشه تهران** | 42d | 2026-04-02 A | 2026-05-13 A |  | 100% |  |  |  | 1405/1/13 | 1405/2/23 |  |
| 467 | 6.1.1.3.2.1 | تأمین متریال سیمانی پنل بتنی و نانو آب گریز - ساختمان کتابخانه نمای بتنی شمال آلومینیوم شیشه تهران | 7d | 2026-04-02 A | 2026-04-08 A | 202FS+67d | 100% |  |  |  | 1405/1/13 | 1405/1/19 | مترمربع |
| 468 | 6.1.1.3.2.2 | طراحی و تولید قالب پنل بتنی - ساختمان کتابخانه نمای بتنی شمال آلومینیوم شیشه تهران | 30d | 2026-04-02 A | 2026-05-01 A | 467FS-10d, 204FS-10d | 100% |  |  |  | 1405/1/13 | 1405/2/11 | مترمربع |
| 469 | 6.1.1.3.2.3 | تولید و ارسال به محل پروژه پنل بتنی - ساختمان کتابخانه نمای بتنی شمال آلومینیوم شیشه تهران | 28d | 2026-04-16 A | 2026-05-13 A | 468FS-30d, 204, 465FS-26d | 100% |  |  |  | 1405/1/27 | 1405/2/23 | مترمربع |
| 470 | 6.1.1.4 | **ساختمان کتابخانه نمای کاور بتنی ستون‌ها آلومینیوم شیشه تهران** | 24.72d | 2026-08-05 A | 2026-08-29 A |  | 100% |  |  |  | 1405/5/14 | 1405/6/7 |  |
| 471 | 6.1.1.4.1 | **زیرسازی پنل بتنی ساختمان کتابخانه نمای کاور بتنی ستون‌ها** | 22.12d | 2026-08-05 A | 2026-08-27 A |  | 100% |  |  |  | 1405/5/14 | 1405/6/5 |  |
| 472 | 6.1.1.4.1.1 | تأمین آهن آلات زیرسازی ساختمان کتابخانه نمای کاور بتنی ستون‌ها | 10d | 2026-08-11 A | 2026-08-20 A | 220FS+200d, 161 | 100% |  |  |  | 1405/5/20 | 1405/5/29 | کیلوگرم |
| 473 | 6.1.1.4.1.2 | ساخت و مونتاژ زیرسازی ساختمان کتابخانه نمای کاور بتنی ستون‌ها | 10d | 2026-08-06 A | 2026-08-27 A | 472FS-15d, 221FS-5d, 223FS-5d | 100% |  |  |  | 1405/5/15 | 1405/6/5 | کیلوگرم |
| 474 | 6.1.1.4.1.3 | سندبلاست و رنگ آمیزی و ارسال به محل پروژه زیرسازی - نمای کاور بتنی ستون‌ها | 20d | 2026-08-05 A | 2026-08-27 A | 473FS-22d | 100% |  |  |  | 1405/5/14 | 1405/6/5 | کیلوگرم |
| 475 | 6.1.1.4.2 | **پنل بتنی ساختمان کتابخانه نمای کاور بتنی ستون‌ها** | 24.72d | 2026-08-05 A | 2026-08-29 A |  | 100% |  |  |  | 1405/5/14 | 1405/6/7 |  |
| 476 | 6.1.1.4.2.1 | تأمین متریال سیمانی پنل بتنی و نانو آب گریز ساختمان کتابخانه نمای کاور بتنی ستون‌ها | 5d | 2026-08-05 A | 2026-08-15 A | 220FS+180d | 100% | start no earlier than 2026-08-04 |  |  | 1405/5/14 | 1405/5/24 | مترمربع |
| 477 | 6.1.1.4.2.2 | طراحی و تولید قالب پنل بتنی ساختمان کتابخانه نمای کاور بتنی ستون‌ها | 10d | 2026-08-10 A | 2026-08-20 A | 476FS-5d, 223 | 100% |  |  |  | 1405/5/19 | 1405/5/29 | مترمربع |
| 478 | 6.1.1.4.2.3 | تولید و ارسال به محل پروژه پنل بتنی - نمای کاور بتنی ستون‌ها | 9d | 2026-08-15 A | 2026-08-29 A | 474FS-12d, 477FS-10d | 100% |  |  |  | 1405/5/24 | 1405/6/7 | مترمربع |
| 479 | 6.2 | **ساختمان کشاورزی نمای بتنی آلومینیوم شیشه تهران** | 182.85d | 2026-03-10 A | 2026-09-08 A |  | 100% |  | 1936h | 1936h | 1404/12/19 | 1405/6/17 |  |
| 480 | 6.2.1 | **نمای شمال - ساختمان کشاورزی نمای بتنی آلومینیوم شیشه تهران** | 160.44d | 2026-03-30 A | 2026-09-06 A |  | 100% |  | 936h | 936h | 1405/1/10 | 1405/6/15 |  |
| 481 | 6.2.1.1 | **زیرسازی - نمای شمال ساختمان کشاورزی نمای بتنی آلومینیوم شیشه تهران** | 132.28d | 2026-04-06 A | 2026-08-16 A |  | 100% |  | 320h | 320h | 1405/1/17 | 1405/5/25 |  |
| 482 | 6.2.1.1.1 | تأمین آهن آلات زیرسازی - نمای شمال ساختمان کشاورزی نمای بتنی آلومینیوم شیشه تهران | 7d | 2026-04-06 A | 2026-04-12 A | 13FS+140d, 42 | 100% |  |  |  | 1405/1/17 | 1405/1/23 | کیلوگرم |
| 483 | 6.2.1.1.2 | ساخت و مونتاژ زیرسازی - نمای شمال ساختمان کشاورزی نمای بتنی آلومینیوم شیشه تهران | 19.5d | 2026-06-10 A | 2026-08-16 A | 482, 43FS-20d | 100% |  | 160h | 160h | 1405/3/20 | 1405/5/25 | کیلوگرم |
| 484 | 6.2.1.1.3 | سندبلاست و رنگ آمیزی و ارسال به محل پروژه زیرسازی - نمای شمال ساختمان کشاورزی نمای بتنی آلومینیوم شیشه تهران | 20d | 2026-06-20 A | 2026-08-15 A | 483FS-10d | 100% |  | 160h | 160h | 1405/3/30 | 1405/5/24 | کیلوگرم |

| ID | WBS | Task | Duration | Start | Finish | Predecessors | Complete | Constraint | Work | Actual work | شروع | پایان | واحد |
| --- | --- | --- | --- | --- | --- | --- | --- | --- | --- | --- | --- | --- | --- |
| 485 | 6.2.1.2 | **پنل بتنی - نمای شمال ساختمان کشاورزی نمای بتنی آلومینیوم شیشه تهران** | 160.44d | 2026-03-30 A | 2026-09-06 A |  | 100% |  | 616h | 616h | 1405/1/10 | 1405/6/15 |  |
| 486 | 6.2.1.2.1 | تأمین متریال سیمانی پنل بتنی و نانو آب گریز - نمای شمال ساختمان کشاورزی نمای بتنی آلومینیوم شیشه تهران | 15d | 2026-03-30 A | 2026-04-13 A | 42FS+120d | 100% |  |  |  | 1405/1/10 | 1405/1/24 | مترمربع |
| 487 | 6.2.1.2.2 | طراحی و تولید قالب پنل بتنی - نمای شمال ساختمان کشاورزی نمای بتنی آلومینیوم شیشه تهران | 50d | 2026-04-09 A | 2026-09-02 A | 486FS-20d, 44 | 100% |  | 400h | 400h | 1405/1/20 | 1405/6/11 | مترمربع |
| 488 | 6.2.1.2.3 | تولید و ارسال به محل پروژه پنل بتنی - نمای شمال ساختمان کشاورزی نمای بتنی آلومینیوم شیشه تهران | 26.49d | 2026-06-26 A | 2026-09-06 A | 487, 44, 484 | 100% |  | 216h | 216h | 1405/4/5 | 1405/6/15 | مترمربع |
| 489 | 6.2.2 | **نمای غرب - ساختمان کشاورزی نمای بتنی آلومینیوم شیشه تهران** | 176.75d | 2026-03-10 A | 2026-09-02 A |  | 100% |  | 1000h | 1000h | 1404/12/19 | 1405/6/11 |  |
| 490 | 6.2.2.1 | **زیرسازی - نمای غرب ساختمان کشاورزی نمای بتنی آلومینیوم شیشه تهران** | 160.15d | 2026-03-17 A | 2026-08-24 A |  | 100% |  | 520h | 520h | 1404/12/26 | 1405/6/2 |  |
| 491 | 6.2.2.1.1 | تأمین آهن آلات زیرسازی - نمای غرب ساختمان کشاورزی نمای بتنی آلومینیوم شیشه تهران | 25d | 2026-03-17 A | 2026-04-10 A | 13FS+120d, 57 | 100% |  |  |  | 1404/12/26 | 1405/1/21 | کیلوگرم |
| 492 | 6.2.2.1.2 | ساخت و مونتاژ زیرسازی - نمای غرب ساختمان کشاورزی نمای بتنی آلومینیوم شیشه تهران | 19.4d | 2026-06-09 A | 2026-08-20 A | 491FS+130d | 100% |  | 160h | 160h | 1405/3/19 | 1405/5/29 | کیلوگرم |
| 493 | 6.2.2.1.3 | سندبلاست و رنگ آمیزی و ارسال به محل پروژه زیرسازی - نمای غرب ساختمان کشاورزی نمای بتنی آلومینیوم شیشه تهران | 45d | 2026-05-31 A | 2026-08-24 A | 492 | 100% |  | 360h | 360h | 1405/3/10 | 1405/6/2 | کیلوگرم |
| 494 | 6.2.2.2 | **پنل بتنی - نمای غرب ساختمان کشاورزی نمای بتنی آلومینیوم شیشه تهران** | 176.75d | 2026-03-10 A | 2026-09-02 A |  | 100% |  | 480h | 480h | 1404/12/19 | 1405/6/11 |  |
| 495 | 6.2.2.2.1 | تأمین متریال سیمانی پنل بتنی و نانو آب گریز - نمای غرب ساختمان کشاورزی نمای بتنی آلومینیوم شیشه تهران | 30d | 2026-03-10 A | 2026-04-08 A | 57FS+115d | 100% |  |  |  | 1404/12/19 | 1405/1/19 | مترمربع |
| 496 | 6.2.2.2.2 | طراحی و تولید قالب پنل بتنی - نمای غرب ساختمان کشاورزی نمای بتنی آلومینیوم شیشه تهران | 22d | 2026-04-08 A | 2026-04-29 A | 59FS-21d, 495FS-28d | 100% |  |  |  | 1405/1/19 | 1405/2/9 | مترمربع |
| 497 | 6.2.2.2.3 | تولید و ارسال به محل پروژه پنل بتنی - نمای غرب ساختمان کشاورزی نمای بتنی آلومینیوم شیشه تهران | 60d | 2026-05-21 A | 2026-09-02 A | 496, 493 | 100% |  | 480h | 480h | 1405/2/31 | 1405/6/11 | مترمربع |
| 498 | 6.2.3 | **نمای جنوب - ساختمان کشاورزی نمای بتنی آلومینیوم شیشه تهران** | 33d | 2026-08-05 A | 2026-09-06 A |  | 100% |  |  |  | 1405/5/14 | 1405/6/15 |  |
| 499 | 6.2.3.1 | **زیرسازی - نمای جنوب ساختمان کشاورزی نمای بتنی آلومینیوم شیشه تهران** | 23d | 2026-08-07 A | 2026-08-29 A |  | 100% |  |  |  | 1405/5/16 | 1405/6/7 |  |
| 500 | 6.2.3.1.1 | تأمین آهن آلات زیرسازی - نمای جنوب ساختمان کشاورزی نمای بتنی آلومینیوم شیشه تهران | 7d | 2026-08-07 A | 2026-08-13 A | 47FS+250d, 13 | 100% |  |  |  | 1405/5/16 | 1405/5/22 | کیلوگرم |
| 501 | 6.2.3.1.2 | ساخت و مونتاژ زیرسازی - نمای جنوب ساختمان کشاورزی نمای بتنی آلومینیوم شیشه تهران | 6.8d | 2026-08-18 A | 2026-08-24 A | 500FS-15d, 49FS-10d | 100% |  |  |  | 1405/5/27 | 1405/6/2 | کیلوگرم |
| 502 | 6.2.3.1.3 | سندبلاست و رنگ آمیزی و ارسال به محل پروژه زیرسازی - نمای جنوب ساختمان کشاورزی نمای بتنی آلومینیوم شیشه تهران | 7d | 2026-08-23 A | 2026-08-29 A | 501FS-2d | 100% |  |  |  | 1405/6/1 | 1405/6/7 | کیلوگرم |
| 503 | 6.2.3.2 | **پنل بتنی - نمای جنوب ساختمان کشاورزی نمای بتنی آلومینیوم شیشه تهران** | 33d | 2026-08-05 A | 2026-09-06 A |  | 100% |  |  |  | 1405/5/14 | 1405/6/15 |  |
| 504 | 6.2.3.2.1 | تأمین متریال سیمانی پنل بتنی و نانو آب گریز - نمای جنوب ساختمان کشاورزی نمای بتنی آلومینیوم شیشه تهران | 5d | 2026-08-05 A | 2026-08-09 A | 47 | 100% | start no earlier than 2026-08-04 |  |  | 1405/5/14 | 1405/5/18 | مترمربع |
| 505 | 6.2.3.2.2 | طراحی و تولید قالب پنل بتنی - نمای جنوب ساختمان کشاورزی نمای بتنی آلومینیوم شیشه تهران | 10d | 2026-08-10 A | 2026-08-28 A | 49FS-20d, 504 | 100% |  |  |  | 1405/5/19 | 1405/6/6 | مترمربع |
| 506 | 6.2.3.2.3 | تولید و ارسال به محل پروژه پنل بتنی - نمای جنوب ساختمان کشاورزی نمای بتنی آلومینیوم شیشه تهران | 15d | 2026-08-23 A | 2026-09-06 A | 505FS-10d, 502FS-7d | 100% | start no earlier than 2026-08-04 |  |  | 1405/6/1 | 1405/6/15 | مترمربع |
| 507 | 6.2.4 | **نمای شرق - ساختمان کشاورزی نمای بتنی آلومینیوم شیشه تهران** | 34.85d | 2026-08-05 A | 2026-09-08 A |  | 100% |  |  |  | 1405/5/14 | 1405/6/17 |  |
| 508 | 6.2.4.1 | **زیرسازی - نمای شرق ساختمان کشاورزی نمای بتنی آلومینیوم شیشه تهران** | 27.6d | 2026-08-05 A | 2026-09-01 A |  | 100% |  |  |  | 1405/5/14 | 1405/6/10 |  |
| 509 | 6.2.4.1.1 | تأمین آهن آلات زیرسازی - نمای شرق ساختمان کشاورزی نمای بتنی آلومینیوم شیشه تهران | 7d | 2026-08-05 A | 2026-08-11 A | 52FS+248d, 13 | 100% |  |  |  | 1405/5/14 | 1405/5/20 | کیلوگرم |
| 510 | 6.2.4.1.2 | ساخت و مونتاژ زیرسازی - نمای شرق ساختمان کشاورزی نمای بتنی آلومینیوم شیشه تهران | 7d | 2026-08-12 A | 2026-08-28 A | 54FS-20d, 509 | 100% |  |  |  | 1405/5/21 | 1405/6/6 | کیلوگرم |
| 511 | 6.2.4.1.3 | سندبلاست و رنگ آمیزی و ارسال به محل پروژه زیرسازی - نمای شرق ساختمان کشاورزی نمای بتنی آلومینیوم شیشه تهران | 15d | 2026-08-17 A | 2026-09-01 A | 510FS-11d | 100% | start no earlier than 2026-08-04 |  |  | 1405/5/26 | 1405/6/10 | کیلوگرم |

| ID | WBS | Task | Duration | Start | Finish | Predecessors | Complete | Work | Actual work | شروع | پایان | واحد |
| --- | --- | --- | --- | --- | --- | --- | --- | --- | --- | --- | --- | --- |
| 512 | 6.2.4.2 | **پنل بتنی - نمای شرق ساختمان کشاورزی نمای بتنی آلومینیوم شیشه تهران** | 34.35d | 2026-08-05 A | 2026-09-08 A |  | 100% |  |  | 1405/5/14 | 1405/6/17 |  |
| 513 | 6.2.4.2.1 | تأمین متریال سیمانی پنل بتنی و نانو آب گریز - نمای شرق ساختمان کشاورزی نمای بتنی آلومینیوم شیشه تهران | 5d | 2026-08-07 A | 2026-08-11 A | 52FS+250d | 100% |  |  | 1405/5/16 | 1405/5/20 | مترمربع |
| 514 | 6.2.4.2.2 | طراحی و تولید قالب پنل بتنی - نمای شرق ساختمان کشاورزی نمای بتنی آلومینیوم شیشه تهران | 15d | 2026-08-05 A | 2026-08-20 A | 513FS-9d, 54FS-23d | 100% |  |  | 1405/5/14 | 1405/5/29 | مترمربع |
| 515 | 6.2.4.2.3 | تولید و ارسال به محل پروژه پنل بتنی - نمای شرق ساختمان کشاورزی نمای بتنی آلومینیوم شیشه تهران | 17d | 2026-08-09 A | 2026-09-08 A | 514FS-11d | 100% |  |  | 1405/5/18 | 1405/6/17 | مترمربع |
| 516 | 6.3 | **ساختمان کشاورزی نمای آجری آلومینیوم شیشه تهران** | 161.01d | 2026-03-22 A | 2026-08-30 A |  | 100% | 1584.64h | 1584.64h | 1405/1/2 | 1405/6/8 |  |
| 517 | 6.3.1 | **نمای شمال - ساختمان کشاورزی نمای آجری آلومینیوم شیشه تهران** | 143.62d | 2026-03-25 A | 2026-08-15 A |  | 100% | 447.04h | 447.04h | 1405/1/5 | 1405/5/24 |  |
| 518 | 6.3.1.1 | **زیرسازی - نمای شمال ساختمان کشاورزی نمای آجری آلومینیوم شیشه تهران** | 118.5d | 2026-03-25 A | 2026-07-21 A |  | 100% | 400h | 400h | 1405/1/5 | 1405/4/30 |  |
| 519 | 6.3.1.1.1 | تأمین آهن آلات زیرسازی - نمای شمال ساختمان کشاورزی نمای آجری آلومینیوم شیشه تهران | 18d | 2026-03-25 A | 2026-04-11 A | 12FS+128d, 62 | 100% |  |  | 1405/1/5 | 1405/1/22 | کیلوگرم |
| 520 | 6.3.1.1.2 | ساخت و مونتاژ زیرسازی - نمای شمال ساختمان کشاورزی نمای آجری آلومینیوم شیشه تهران | 25d | 2026-06-24 A | 2026-07-19 A | 519, 64FS+6d | 100% | 200h | 200h | 1405/4/3 | 1405/4/28 | کیلوگرم |
| 521 | 6.3.1.1.3 | سندبلاست و رنگ آمیزی و ارسال به محل پروژه زیرسازی - نمای شمال ساختمان کشاورزی نمای آجری آلومینیوم شیشه تهران | 25d | 2026-06-26 A | 2026-07-21 A | 520FS-23d | 100% | 200h | 200h | 1405/4/5 | 1405/4/30 | کیلوگرم |
| 522 | 6.3.1.2 | **پنل آجری - نمای شمال ساختمان کشاورزی نمای آجری آلومینیوم شیشه تهران** | 143.62d | 2026-03-25 A | 2026-08-15 A |  | 100% | 47.04h | 47.04h | 1405/1/5 | 1405/5/24 |  |
| 523 | 6.3.1.2.1 | تأمین متریال سیمانی پنل آجری و نانو آبگریز - نمای شمال ساختمان کشاورزی نمای آجری آلومینیوم شیشه تهران | 18d | 2026-03-27 A | 2026-04-13 A | 12FS+130d, 62 | 100% |  |  | 1405/1/7 | 1405/1/24 | مترمربع |
| 524 | 6.3.1.2.2 | تأمین آجر پنل آجری - نمای شمال ساختمان کشاورزی نمای آجری آلومینیوم شیشه تهران | 12d | 2026-03-25 A | 2026-04-05 A | 62FS-20d, 64FS-20d, 523FS-20d | 100% |  |  | 1405/1/5 | 1405/1/16 | مترمربع |
| 525 | 6.3.1.2.3 | طراحی و تولید قالب پنل آجری - نمای شمال ساختمان کشاورزی نمای آجری آلومینیوم شیشه تهران | 10d | 2026-04-06 A | 2026-04-15 A | 524 | 100% |  |  | 1405/1/17 | 1405/1/26 | مترمربع |
| 526 | 6.3.1.2.4 | تولید و ارسال به محل پروژه پنل آجری - نمای شمال ساختمان کشاورزی نمای آجری آلومینیوم شیشه تهران | 5.88d | 2026-07-15 A | 2026-08-15 A | 525, 521FS+25d | 100% | 47.04h | 47.04h | 1405/4/24 | 1405/5/24 | مترمربع |
| 527 | 6.3.2 | **نمای جنوب - ساختمان کشاورزی نمای آجری آلومینیوم شیشه تهران** | 151d | 2026-03-22 A | 2026-08-19 A |  | 100% | 320h | 320h | 1405/1/2 | 1405/5/28 |  |
| 528 | 6.3.2.1 | **زیرسازی - نمای جنوب ساختمان کشاورزی نمای آجری آلومینیوم شیشه تهران** | 73d | 2026-03-22 A | 2026-06-02 A |  | 100% |  |  | 1405/1/2 | 1405/3/12 |  |
| 529 | 6.3.2.1.1 | تأمین آهن آلات زیرسازی - نمای جنوب ساختمان کشاورزی نمای آجری آلومینیوم شیشه تهران | 18d | 2026-03-22 A | 2026-04-08 A | 67FS+127d, 12 | 100% |  |  | 1405/1/2 | 1405/1/19 | کیلوگرم |
| 530 | 6.3.2.1.2 | ساخت و مونتاژ زیرسازی - نمای جنوب ساختمان کشاورزی نمای آجری آلومینیوم شیشه تهران | 30d | 2026-04-14 A | 2026-05-13 A | 69FS-5d, 529 | 100% |  |  | 1405/1/25 | 1405/2/23 | کیلوگرم |
| 531 | 6.3.2.1.3 | سندبلاست و رنگ آمیزی و ارسال به محل پروژه زیرسازی - نمای جنوب ساختمان کشاورزی نمای آجری آلومینیوم شیشه تهران | 20d | 2026-05-14 A | 2026-06-02 A | 530 | 100% |  |  | 1405/2/24 | 1405/3/12 | کیلوگرم |
| 532 | 6.3.2.2 | **پنل آجری - نمای جنوب ساختمان کشاورزی نمای آجری آلومینیوم شیشه تهران** | 150d | 2026-03-23 A | 2026-08-19 A |  | 100% | 320h | 320h | 1405/1/3 | 1405/5/28 |  |
| 533 | 6.3.2.2.1 | تأمین متریال سیمانی پنل آجری و نانو آبگریز - نمای جنوب ساختمان کشاورزی نمای آجری آلومینیوم شیشه تهران | 18d | 2026-03-23 A | 2026-04-09 A | 67FS+128d, 12 | 100% |  |  | 1405/1/3 | 1405/1/20 | مترمربع |
| 534 | 6.3.2.2.2 | تأمین آجر پنل آجری - نمای جنوب ساختمان کشاورزی نمای آجری آلومینیوم شیشه تهران | 10d | 2026-03-26 A | 2026-04-04 A | 533FS-15d | 100% |  |  | 1405/1/6 | 1405/1/15 | مترمربع |
| 535 | 6.3.2.2.3 | طراحی و تولید قالب پنل آجری - نمای جنوب ساختمان کشاورزی نمای آجری آلومینیوم شیشه تهران | 20d | 2026-04-08 A | 2026-04-27 A | 534FS-11d, 69FS-11d | 100% |  |  | 1405/1/19 | 1405/2/7 | مترمربع |
| 536 | 6.3.2.2.4 | تولید پنل آجری - نمای جنوب ساختمان کشاورزی نمای آجری آلومینیوم شیشه تهران | 40d | 2026-06-13 A | 2026-08-19 A | 535FS+30d, 531FS+60d | 100% | 320h | 320h | 1405/3/23 | 1405/5/28 | مترمربع |

| ID | WBS | Task | Duration | Start | Finish | Predecessors | Complete | Work | Actual work | Cost | Actual cost | شروع | پایان | واحد |
| --- | --- | --- | --- | --- | --- | --- | --- | --- | --- | --- | --- | --- | --- | --- |
| 537 | 6.3.3 | **نمای شرق - ساختمان کشاورزی نمای آجری آلومینیوم شیشه تهران** | 89d | 2026-03-25 A | 2026-06-21 A |  | 100% | 473.6h | 473.6h |  |  | 1405/1/5 | 1405/3/31 |  |
| 538 | 6.3.3.1 | **زیرسازی - نمای شرق ساختمان کشاورزی نمای آجری آلومینیوم شیشه تهران** | 70d | 2026-03-25 A | 2026-06-02 A |  | 100% |  |  |  |  | 1405/1/5 | 1405/3/12 |  |
| 539 | 6.3.3.1.1 | تأمین آهن آلات زیرسازی - نمای شرق ساختمان کشاورزی نمای آجری آلومینیوم شیشه تهران | 18d | 2026-03-25 A | 2026-04-11 A | 72FS+115d, 12 | 100% |  |  |  |  | 1405/1/5 | 1405/1/22 | کیلوگرم |
| 540 | 6.3.3.1.2 | ساخت و مونتاژ زیرسازی - نمای شرق ساختمان کشاورزی نمای آجری آلومینیوم شیشه تهران | 45d | 2026-04-14 A | 2026-05-28 A | 74, 539FS-10d | 100% |  |  |  |  | 1405/1/25 | 1405/3/7 | کیلوگرم |
| 541 | 6.3.3.1.3 | سندبلاست و رنگ آمیزی و ارسال به محل پروژه زیرسازی - نمای شرق ساختمان کشاورزی نمای آجری آلومینیوم شیشه تهران | 25d | 2026-05-09 A | 2026-06-02 A | 540FS-20d | 100% |  |  |  |  | 1405/2/19 | 1405/3/12 | کیلوگرم |
| 542 | 6.3.3.2 | **پنل آجری - نمای شرق ساختمان کشاورزی نمای آجری آلومینیوم شیشه تهران** | 87d | 2026-03-27 A | 2026-06-21 A |  | 100% | 473.6h | 473.6h |  |  | 1405/1/7 | 1405/3/31 |  |
| 543 | 6.3.3.2.1 | تأمین متریال سیمانی پنل آجری و نانو آبگریز - نمای شرق ساختمان کشاورزی نمای آجری آلومینیوم شیشه تهران | 18d | 2026-03-27 A | 2026-04-13 A | 72, 12FS+130d | 100% |  |  |  |  | 1405/1/7 | 1405/1/24 | مترمربع |
| 544 | 6.3.3.2.2 | تأمین آجر پنل آجری - نمای شرق ساختمان کشاورزی نمای آجری آلومینیوم شیشه تهران | 10d | 2026-03-27 A | 2026-04-05 A | 543FS-18d | 100% |  |  |  |  | 1405/1/7 | 1405/1/16 | مترمربع |
| 545 | 6.3.3.2.3 | طراحی و تولید قالب پنل آجری - نمای شرق ساختمان کشاورزی نمای آجری آلومینیوم شیشه تهران | 25d | 2026-04-05 A | 2026-04-29 A | 544FS-7d, 74FS-9d | 100% |  |  |  |  | 1405/1/16 | 1405/2/9 | مترمربع |
| 546 | 6.3.3.2.4 | تولید و ارسال به محل پروژه پنل آجری - نمای شرق ساختمان کشاورزی نمای آجری آلومینیوم شیشه تهران | 59.2d | 2026-04-10 A | 2026-06-21 A | 545FS+2d, 541FS+15d | 100% | 473.6h | 473.6h |  |  | 1405/1/21 | 1405/3/31 | مترمربع |
| 547 | 6.3.4 | **نمای غرب - ساختمان کشاورزی نمای آجری آلومینیوم شیشه تهران** | 158.01d | 2026-03-25 A | 2026-08-30 A |  | 100% | 344h | 344h |  |  | 1405/1/5 | 1405/6/8 |  |
| 548 | 6.3.4.1 | **زیرسازی - نمای غرب ساختمان کشاورزی نمای آجری آلومینیوم شیشه تهران** | 65d | 2026-04-04 A | 2026-06-07 A |  | 100% |  |  |  |  | 1405/1/15 | 1405/3/17 |  |
| 549 | 6.3.4.1.1 | تأمین آهن آلات زیرسازی - نمای غرب ساختمان کشاورزی نمای آجری آلومینیوم شیشه تهران | 8d | 2026-04-04 A | 2026-04-11 A | 12, 77FS+130d | 100% |  |  |  |  | 1405/1/15 | 1405/1/22 | کیلوگرم |
| 550 | 6.3.4.1.2 | ساخت و مونتاژ زیرسازی - نمای غرب ساختمان کشاورزی نمای آجری آلومینیوم شیشه تهران | 30d | 2026-04-16 A | 2026-05-15 A | 549FS-2d, 79 | 100% |  |  |  |  | 1405/1/27 | 1405/2/25 | کیلوگرم |
| 551 | 6.3.4.1.3 | سندبلاست و رنگ آمیزی و ارسال به محل پروژه زیرسازی - ساختمان کتابخانه نمای بتنی غرب آلومینیوم شیشه تهران | 28d | 2026-05-11 A | 2026-06-07 A | 550FS-5d | 100% |  |  |  |  | 1405/2/21 | 1405/3/17 | کیلوگرم |
| 552 | 6.3.4.2 | **پنل آجری - نمای غرب ساختمان کشاورزی نمای آجری آلومینیوم شیشه تهران** | 158.01d | 2026-03-25 A | 2026-08-30 A |  | 100% | 344h | 344h |  |  | 1405/1/5 | 1405/6/8 |  |
| 553 | 6.3.4.2.1 | تأمین متریال سیمانی پنل آجری و نانو آبگریز - نمای غرب ساختمان کشاورزی نمای آجری آلومینیوم شیشه تهران | 18d | 2026-03-25 A | 2026-04-11 A | 12, 77FS+120d | 100% |  |  |  |  | 1405/1/5 | 1405/1/22 | مترمربع |
| 554 | 6.3.4.2.2 | تأمین آجر پنل آجری - نمای غرب ساختمان کشاورزی نمای آجری آلومینیوم شیشه تهران | 10d | 2026-03-28 A | 2026-04-06 A | 553FS-15d | 100% |  |  |  |  | 1405/1/8 | 1405/1/17 | مترمربع |
| 555 | 6.3.4.2.3 | طراحی و تولید قالب پنل آجری - نمای غرب ساختمان کشاورزی نمای آجری آلومینیوم شیشه تهران | 20d | 2026-04-09 A | 2026-04-28 A | 553FS-7d, 79FS-7d, 554 | 100% |  |  |  |  | 1405/1/20 | 1405/2/8 | مترمربع |
| 556 | 6.3.4.2.4 | تولید و ارسال به محل پروژه پنل آجری - نمای غرب ساختمان کشاورزی نمای آجری آلومینیوم شیشه تهران | 43d | 2026-06-10 A | 2026-08-30 A | 555FS+120d, 551FS+2d | 100% | 344h | 344h |  |  | 1405/3/20 | 1405/6/8 | مترمربع |
| 557 | 7 | **تهیه، ساخت و نصب سازه تیر میانی و اسکای لایت** | 263.8d | 2025-12-17 A | 2026-09-06 A |  | 100% |  |  | 64,000,000 | 64,000,000 | 1404/9/26 | 1405/6/15 |  |
| 558 | 7.1 | **عملیات زیرسازی فولادی و آلومینیومی** | 262.56d | 2025-12-17 A | 2026-09-05 A |  | 100% |  |  |  |  | 1404/9/26 | 1405/6/14 |  |
| 559 | 7.1.1 | **تیر میانی ساختمان کتابخانه** | 245.15d | 2025-12-17 A | 2026-08-19 A |  | 100% |  |  |  |  | 1404/9/26 | 1405/5/28 |  |
| 560 | 7.1.1.1 | تامین کلیه مصالح استراکچر فولادی تیر میانی ساختمان کتابخانه | 4d | 2025-12-17 A | 2025-12-20 A | 217 | 100% |  |  |  |  | 1404/9/26 | 1404/9/29 | کیلوگرم |
| 561 | 7.1.1.2 | ساخت، سندبلاست و رنگ آمیزی استراکچر فولادی تیر میانی ساختمان کتابخانه | 15d | 2026-01-01 A | 2026-01-15 A | 560, 218 | 100% |  |  |  |  | 1404/10/11 | 1404/10/25 | کیلوگرم |
| 562 | 7.1.1.3 | حمل به کارگاه استراکچر فولادی تیر میانی ساختمان کتابخانه | 15d | 2026-04-06 A | 2026-04-20 A | 561FS+80d | 100% |  |  |  |  | 1405/1/17 | 1405/1/31 | کیلوگرم |
| 563 | 7.1.1.4 | نصب و تحویل استراکچر فولادی تیر میانی ساختمان کتابخانه | 14.85d | 2026-04-11 A | 2026-08-19 A | 562FS+120d | 100% |  |  |  |  | 1405/1/22 | 1405/5/28 | کیلوگرم |

| ID | WBS | Task | Duration | Start | Finish | Predecessors | Complete | شروع | پایان | واحد |
| --- | --- | --- | --- | --- | --- | --- | --- | --- | --- | --- |
| 564 | 7.1.2 | **اسکای لایت بام ساختمان کتابخانه** | 257.4d | 2025-12-17 A | 2026-08-31 A |  | 100% | 1404/9/26 | 1405/6/9 |  |
| 565 | 7.1.2.1 | **تامین متریال فلزی و آلومینیومی اسکای لایت بام ساختمان کتابخانه** | 24d | 2025-12-17 A | 2026-01-09 A |  | 100% | 1404/9/26 | 1404/10/19 |  |
| 566 | 7.1.2.1.1 | تامین مصالح زیرسازی سنگین اسکای لایت بام ساختمان کتابخانه | 5d | 2025-12-17 A | 2025-12-21 A | 212FS+15d | 100% | 1404/9/26 | 1404/9/30 | کیلوگرم |
| 567 | 7.1.2.1.2 | تامین مصالح زیرسازی سبک اسکای لایت بام ساختمان کتابخانه | 5d | 2025-12-22 A | 2025-12-26 A | 566 | 100% | 1404/10/1 | 1404/10/5 | کیلوگرم |
| 568 | 7.1.2.1.3 | تامین پروفیل آلومینیومی و ملحقات اسکای لایت بام ساختمان کتابخانه | 5d | 2026-01-05 A | 2026-01-09 A | 213FS+19d | 100% | 1404/10/15 | 1404/10/19 | مترمربع |
| 569 | 7.1.2.2 | **ساخت و ارسال اسکای لایت بام ساختمان کتابخانه** | 19d | 2026-04-06 A | 2026-04-24 A |  | 100% | 1405/1/17 | 1405/2/4 |  |
| 570 | 7.1.2.2.1 | ساخت، سندبلاست و رنگ آمیزی زیرسازی سنگین اسکای لایت بام ساختمان کتابخانه | 10d | 2026-04-06 A | 2026-04-15 A | 566FS+105d, 214 | 100% | 1405/1/17 | 1405/1/26 | کیلوگرم |
| 571 | 7.1.2.2.2 | حمل به کارگاه زیرسازی سنگین اسکای لایت بام ساختمان کتابخانه | 2d | 2026-04-15 A | 2026-04-16 A | 570FS-1d | 100% | 1405/1/26 | 1405/1/27 | کیلوگرم |
| 572 | 7.1.2.2.3 | ساخت، سندبلاست و رنگ آمیزی زیرسازی سبک اسکای لایت بام ساختمان کتابخانه | 10d | 2026-04-06 A | 2026-04-15 A | 567FS+100d, 214 | 100% | 1405/1/17 | 1405/1/26 | کیلوگرم |
| 573 | 7.1.2.2.4 | حمل به کارگاه زیرسازی سبک اسکای لایت بام ساختمان کتابخانه | 10d | 2026-04-06 A | 2026-04-15 A | 572FS-10d | 100% | 1405/1/17 | 1405/1/26 | کیلوگرم |
| 574 | 7.1.2.2.5 | مونتاژ پروفیل آلومینیومی و حمل به کارگاه اسکای لایت بام ساختمان کتابخانه | 10d | 2026-04-15 A | 2026-04-24 A | 568FS+95d, 215 | 100% | 1405/1/26 | 1405/2/4 | مترمربع |
| 575 | 7.1.2.3 | **نصب و اجرای فلزی و آلومینیومی اسکای لایت بام ساختمان کتابخانه** | 146.4d | 2026-04-07 A | 2026-08-31 A |  | 100% | 1405/1/18 | 1405/6/9 |  |
| 576 | 7.1.2.3.1 | نصب و تحویل زیرسازی سنگین اسکای لایت بام ساختمان کتابخانه | 10d | 2026-04-07 A | 2026-04-16 A | 571FS-10d | 100% | 1405/1/18 | 1405/1/27 | کیلوگرم |
| 577 | 7.1.2.3.2 | نصب و تحویل زیرسازی سبک اسکای لایت بام ساختمان کتابخانه | 9.8d | 2026-04-07 A | 2026-08-29 A | 573FS+135d, 576 | 100% | 1405/1/18 | 1405/6/7 | کیلوگرم |
| 578 | 7.1.2.3.3 | نصب و تحویل پروفیل آلومینیومی و ملحقات اسکای لایت بام ساختمان کتابخانه | 6.69d | 2026-06-10 A | 2026-08-31 A | 574FS+46d, 577 | 100% | 1405/3/20 | 1405/6/9 | مترمربع |
| 579 | 7.1.3 | **اسکای لایت بام ساختمان دانشکده کشاورزی** | 262.56d | 2025-12-17 A | 2026-09-05 A |  | 100% | 1404/9/26 | 1405/6/14 |  |
| 580 | 7.1.3.1 | **تامین متریال اسکای لایت بام ساختمان دانشکده کشاورزی** | 11d | 2025-12-17 A | 2025-12-27 A |  | 100% | 1404/9/26 | 1404/10/6 |  |
| 581 | 7.1.3.1.1 | تامین استراکچر فولادی اسکای لایت بام ساختمان دانشکده کشاورزی | 4d | 2025-12-17 A | 2025-12-20 A | 138FS+42d | 100% | 1404/9/26 | 1404/9/29 | کیلوگرم |
| 582 | 7.1.3.1.2 | تامین پروفیل آلومینیومی اسکای لایت بام ساختمان دانشکده کشاورزی | 7d | 2025-12-21 A | 2025-12-27 A | 139, 581 | 100% | 1404/9/30 | 1404/10/6 | مترمربع |
| 583 | 7.1.3.2 | **ساخت و ارسال اسکای لایت بام ساختمان دانشکده کشاورزی** | 25d | 2026-03-31 A | 2026-04-24 A |  | 100% | 1405/1/11 | 1405/2/4 |  |
| 584 | 7.1.3.2.1 | ساخت، سندبلاست و رنگ آمیزی استراکچر فولادی اسکای لایت بام ساختمان دانشکده کشاورزی | 15d | 2026-03-31 A | 2026-04-14 A | 581FS+100d, 140 | 100% | 1405/1/11 | 1405/1/25 | کیلوگرم |
| 585 | 7.1.3.2.2 | حمل به کارگاه استراکچر فولادی اسکای لایت بام ساختمان دانشکده کشاورزی | 15d | 2026-04-10 A | 2026-04-24 A | 584FS-5d | 100% | 1405/1/21 | 1405/2/4 | کیلوگرم |
| 586 | 7.1.3.2.3 | ساخت و ارسال پروفیل آلومینیومی اسکای لایت بام ساختمان دانشکده کشاورزی | 15d | 2026-04-07 A | 2026-04-21 A | 582FS+100d | 100% | 1405/1/18 | 1405/2/1 | مترمربع |
| 587 | 7.1.3.3 | **نصب و اجرای اسکای لایت بام ساختمان دانشکده کشاورزی** | 137.56d | 2026-04-21 A | 2026-09-05 A |  | 100% | 1405/2/1 | 1405/6/14 |  |
| 588 | 7.1.3.3.1 | نصب و تحویل استراکچر فولادی اسکای لایت بام ساختمان دانشکده کشاورزی | 14.25d | 2026-04-21 A | 2026-08-21 A | 585FS+115d | 100% | 1405/2/1 | 1405/5/30 | کیلوگرم |
| 589 | 7.1.3.3.2 | نصب و تحویل پروفیل آلومینیومی اسکای لایت بام ساختمان دانشکده کشاورزی | 15d | 2026-08-21 A | 2026-09-05 A | 586, 588 | 100% | 1405/5/30 | 1405/6/14 | مترمربع |

| ID | WBS | Task | Duration | Start | Finish | Predecessors | Complete | Cost | Actual cost | شروع | پایان | واحد |
| --- | --- | --- | --- | --- | --- | --- | --- | --- | --- | --- | --- | --- |
| 590 | 7.1.4 | **اسکای لایت همکف ساختمان دانشکده کشاورزی** | 258.29d | 2025-12-17 A | 2026-09-01 A |  | 100% |  |  | 1404/9/26 | 1405/6/10 |  |
| 591 | 7.1.4.1 | **تامین متریال اسکای لایت همکف ساختمان دانشکده کشاورزی** | 7d | 2025-12-17 A | 2025-12-23 A |  | 100% |  |  | 1404/9/26 | 1404/10/2 |  |
| 592 | 7.1.4.1.1 | تامین استراکچر فولادی اسکای لایت همکف ساختمان دانشکده کشاورزی | 3d | 2025-12-17 A | 2025-12-19 A | 144FS+27d | 100% |  |  | 1404/9/26 | 1404/9/28 | کیلوگرم |
| 593 | 7.1.4.1.2 | تامین پروفیل آلومینیومی اسکای لایت همکف ساختمان دانشکده کشاورزی | 7d | 2025-12-17 A | 2025-12-23 A | 145FS+12d | 100% |  |  | 1404/9/26 | 1404/10/2 | مترمربع |
| 594 | 7.1.4.2 | **ساخت و ارسال اسکای لایت همکف ساختمان دانشکده کشاورزی** | 34d | 2026-03-30 A | 2026-05-02 A |  | 100% |  |  | 1405/1/10 | 1405/2/12 |  |
| 595 | 7.1.4.2.1 | ساخت، سند بلاست و رنگ آمیزی استراکچر اسکای لایت همکف ساختمان دانشکده کشاورزی | 15d | 2026-03-30 A | 2026-04-13 A | 592FS+100d, 146 | 100% |  |  | 1405/1/10 | 1405/1/24 | کیلوگرم |
| 596 | 7.1.4.2.2 | حمل به کارگاه استراکچر اسکای لایت همکف ساختمان دانشکده کشاورزی | 15d | 2026-04-14 A | 2026-04-28 A | 595, 147 | 100% |  |  | 1405/1/25 | 1405/2/8 | کیلوگرم |
| 597 | 7.1.4.2.3 | ساخت و ارسال پروفیل اسکای لایت همکف ساختمان دانشکده کشاورزی | 15d | 2026-04-18 A | 2026-05-02 A | 593FS+115d, 147 | 100% |  |  | 1405/1/29 | 1405/2/12 | مترمربع |
| 598 | 7.1.4.3 | **نصب و اجرای فلزی اسکای لایت همکف ساختمان دانشکده کشاورزی** | 135.29d | 2026-04-19 A | 2026-09-01 A |  | 100% |  |  | 1405/1/30 | 1405/6/10 |  |
| 599 | 7.1.4.3.1 | نصب و تحویل استراکچر اسکای لایت همکف ساختمان دانشکده کشاورزی | 14.7d | 2026-04-19 A | 2026-08-22 A | 596FS+115d | 100% |  |  | 1405/1/30 | 1405/5/31 | کیلوگرم |
| 600 | 7.1.4.3.2 | نصب و تحویل پروفیل آلومینیومی و ملحقات اسکای لایت همکف ساختمان دانشکده کشاورزی | 15d | 2026-08-17 A | 2026-09-01 A | 597FS-2d, 599FS-5d | 100% |  |  | 1405/5/26 | 1405/6/10 | مترمربع |
| 601 | 7.2 | **نصب شیشه، فلاشینگ و آب‌بندی** | 18.65d | 2026-08-19 A | 2026-09-06 A |  | 100% |  |  | 1405/5/28 | 1405/6/15 |  |
| 602 | 7.2.1 | نصب و تحویل شیشه، فلاشینگ و آب‌بندی اسکای لایت بام ساختمان کتابخانه | 15d | 2026-08-19 A | 2026-09-03 A | 420FS-5d, 563 | 100% |  |  | 1405/5/28 | 1405/6/12 | مترمربع |
| 603 | 7.2.2 | نصب و تحویل شیشه، فلاشینگ و آب‌بندی اسکای لایت بام ساختمان دانشکده کشاورزی | 15d | 2026-08-22 A | 2026-09-05 A | 424FS-2d, 589FS-15d | 100% |  |  | 1405/5/31 | 1405/6/14 | مترمربع |
| 604 | 7.2.3 | نصب و تحویل شیشه، فلاشینگ و آب‌بندی اسکای لایت همکف ساختمان دانشکده کشاورزی | 15d | 2026-08-22 A | 2026-09-06 A | 428FS-15d, 600FS-18d, 804FS-19d, 821FS-18d, 849FS-18d | 100% |  |  | 1405/5/31 | 1405/6/15 | مترمربع |
| 605 | 8 | **تهیه، ساخت و نصب المان‌های شفاف و سالید نما در ساختمان کشاورزی** | 305d | 2025-11-22 A | 2026-09-22 A |  | 100% | 200,000,000 | 200,000,000 | 1404/9/1 | 1405/6/31 |  |
| 606 | 8.1 | **خرید و تهیه متریال و مصالح و تجهیزات نمای ساختمان کشاورزی** | 284d | 2025-11-22 A | 2026-09-01 A |  | 100% |  |  | 1404/9/1 | 1405/6/10 |  |
| 607 | 8.1.1 | **تأمین زیرسازی فولادی کرتین وال و ویندووال** | 141d | 2025-11-22 A | 2026-04-11 A |  | 100% |  |  | 1404/9/1 | 1405/1/22 |  |
| 608 | 8.1.1.1 | تامین آهن الات زیرسازی نمای شمال | 20d | 2026-03-18 A | 2026-04-06 A | 17FS+135d | 100% |  |  | 1404/12/27 | 1405/1/17 | کیلوگرم |
| 609 | 8.1.1.2 | تامین آهن الات زیرسازی نمای جنوب | 5d | 2026-04-07 A | 2026-04-11 A | 23FS+155d | 100% |  |  | 1405/1/18 | 1405/1/22 | کیلوگرم |
| 610 | 8.1.1.3 | تامین آهن الات زیرسازی نمای شرق | 30d | 2026-03-11 A | 2026-04-09 A | 29FS+128d | 100% |  |  | 1404/12/20 | 1405/1/20 | کیلوگرم |
| 611 | 8.1.1.4 | تامین آهن الات زیرسازی نمای غرب | 5d | 2026-03-02 A | 2026-03-06 A | 35FS+155d | 100% |  |  | 1404/12/11 | 1404/12/15 | کیلوگرم |
| 612 | 8.1.1.5 | تامین آهن الات زیرسازی نمای داخلی | 5d | 2025-11-22 A | 2025-11-26 A | 17FS+19d | 100% |  |  | 1404/9/1 | 1404/9/5 | کیلوگرم |
| 613 | 8.1.2 | **تأمین زیرسازی پنل‌های بتنی** | 137.69d | 2026-04-08 A | 2026-08-23 A |  | 100% |  |  | 1405/1/19 | 1405/6/1 |  |
| 614 | 8.1.2.1 | تامین آهن الات زیرسازی پنل‌های بتنی نمای شمال | 4d | 2026-06-23 A | 2026-08-20 A | 41FS+277d | 100% |  |  | 1405/4/2 | 1405/5/29 | کیلوگرم |
| 615 | 8.1.2.2 | تامین آهن الات زیرسازی پنل‌های بتنی نمای جنوب | 4d | 2026-06-18 A | 2026-08-20 A | 46FS+261d | 100% |  |  | 1405/3/28 | 1405/5/29 | کیلوگرم |
| 616 | 8.1.2.3 | تامین آهن الات زیرسازی پنل‌های بتنی نمای شرق | 4d | 2026-04-09 A | 2026-08-17 A | 51FS+258d | 100% |  |  | 1405/1/20 | 1405/5/26 | کیلوگرم |
| 617 | 8.1.2.4 | تامین آهن الات زیرسازی پنل‌های بتنی نمای غرب | 5d | 2026-04-08 A | 2026-08-23 A | 56FS+280d | 100% |  |  | 1405/1/19 | 1405/6/1 | کیلوگرم |

| ID | WBS | Task | Duration | Start | Finish | Predecessors | Complete | شروع | پایان | واحد |
| --- | --- | --- | --- | --- | --- | --- | --- | --- | --- | --- |
| 618 | 8.1.3 | **تأمین زیرسازی زیرسازی پنل‌های آجری** | 143d | 2026-04-04 A | 2026-08-24 A |  | 100% | 1405/1/15 | 1405/6/2 |  |
| 619 | 8.1.3.1 | تامین آهن الات زیرسازی پنل‌های آجری نمای شمال | 5d | 2026-06-28 A | 2026-08-07 A | 61FS+211d | 100% | 1405/4/7 | 1405/5/16 | کیلوگرم |
| 620 | 8.1.3.2 | تامین آهن الات زیرسازی پنل‌های آجری نمای جنوب | 8d | 2026-06-28 A | 2026-08-19 A | 66FS+230d | 100% | 1405/4/7 | 1405/5/28 | کیلوگرم |
| 621 | 8.1.3.3 | تامین آهن الات زیرسازی پنل‌های آجری نمای شرق | 5d | 2026-04-04 A | 2026-08-24 A | 71FS+230d | 100% | 1405/1/15 | 1405/6/2 | کیلوگرم |
| 622 | 8.1.3.4 | تامین آهن الات زیرسازی پنل‌های آجری نمای غرب | 5d | 2026-04-08 A | 2026-08-24 A | 76FS+230d | 100% | 1405/1/19 | 1405/6/2 | کیلوگرم |
| 623 | 8.1.3.5 | تأمین لایه عایق پاششی ایزولسن ۳۳۰ نمای شمالی | 5d | 2026-04-09 A | 2026-04-13 A | 14, 44 | 100% | 1405/1/20 | 1405/1/24 | مترمربع |
| 624 | 8.1.3.6 | تأمین لایه عایق پاششی ایزولسن ۳۳۰ نمای جنوبی | 5d | 2026-05-07 A | 2026-05-11 A | 14, 49FS-5d | 100% | 1405/2/17 | 1405/2/21 | مترمربع |
| 625 | 8.1.3.7 | تأمین لایه عایق پاششی ایزولسن ۳۳۰ نمای شرقی | 5d | 2026-05-04 A | 2026-05-08 A | 14, 54 | 100% | 1405/2/14 | 1405/2/18 | مترمربع |
| 626 | 8.1.3.8 | تأمین لایه عایق پاششی ایزولسن ۳۳۰ نمای غربی | 5d | 2026-04-29 A | 2026-05-03 A | 14, 59 | 100% | 1405/2/9 | 1405/2/13 | مترمربع |
| 627 | 8.1.4 | تامین آهن الات سازه تقویت بک آپ استراکچر | 30d | 2026-04-19 A | 2026-08-13 A | 151FS-12d | 100% | 1405/1/30 | 1405/5/22 | کیلوگرم |
| 628 | 8.1.5 | **تامین مصالح آلومینیومی و فولادی و متعلقات هندریل** | 147d | 2026-04-08 A | 2026-09-01 A |  | 100% | 1405/1/19 | 1405/6/10 |  |
| 629 | 8.1.5.1 | تامین مصالح زیرسازی فولادی هندریل نمای شمال | 5d | 2026-08-19 A | 2026-08-23 A | 87FS+230d | 100% | 1405/5/28 | 1405/6/1 | کیلوگرم |
| 630 | 8.1.5.2 | تامین مصالح زیرسازی فولادی هندریل نمای جنوب | 5d | 2026-08-19 A | 2026-08-23 A | 87FS+230d | 100% | 1405/5/28 | 1405/6/1 | کیلوگرم |
| 631 | 8.1.5.3 | تامین مصالح زیرسازی فولادی هندریل نمای شرق | 5d | 2026-04-08 A | 2026-04-12 A | 87FS+97d | 100% | 1405/1/19 | 1405/1/23 | کیلوگرم |
| 632 | 8.1.5.4 | تامین مصالح زیرسازی فولادی هندریل نمای غرب | 5d | 2026-06-25 A | 2026-06-29 A | 87FS+175d | 100% | 1405/4/4 | 1405/4/8 | کیلوگرم |
| 633 | 8.1.5.5 | تامین مصالح آلومینیومی و متعلقات هندریل نمای شمال | 5d | 2026-08-28 A | 2026-09-01 A | 88FS+232d | 100% | 1405/6/6 | 1405/6/10 | مترطول |
| 634 | 8.1.5.6 | تامین مصالح آلومینیومی و متعلقات هندریل نمای جنوب | 5d | 2026-08-28 A | 2026-09-01 A | 88FS+232d | 100% | 1405/6/6 | 1405/6/10 | مترطول |
| 635 | 8.1.5.7 | تامین مصالح آلومینیومی و متعلقات هندریل نمای شرق | 5d | 2026-08-28 A | 2026-09-01 A | 88FS+232d | 100% | 1405/6/6 | 1405/6/10 | مترطول |
| 636 | 8.1.5.8 | تامین مصالح آلومینیومی و متعلقات هندریل نمای غرب | 5d | 2026-08-28 A | 2026-09-01 A | 88FS+232d | 100% | 1405/6/6 | 1405/6/10 | مترطول |
| 637 | 8.1.6 | **تأمین کلیه مصالح شدوباکس** | 28d | 2026-03-16 A | 2026-04-12 A |  | 100% | 1404/12/25 | 1405/1/23 |  |
| 638 | 8.1.6.1 | تأمین کلیه مصالح شدوباکس نمای شمال | 5d | 2026-04-08 A | 2026-04-12 A | 131FS+134d | 100% | 1405/1/19 | 1405/1/23 | مترمربع |
| 639 | 8.1.6.2 | تأمین کلیه مصالح شدوباکس نمای شرق | 5d | 2026-04-08 A | 2026-04-12 A | 132FS+134d | 100% | 1405/1/19 | 1405/1/23 | مترمربع |
| 640 | 8.1.6.3 | تأمین کلیه مصالح شدوباکس نمای غرب | 5d | 2026-03-16 A | 2026-03-20 A | 133FS+100d | 100% | 1404/12/25 | 1404/12/29 | مترمربع |
| 641 | 8.1.7 | **تأمین کلیه مصالح دودبند** | 14d | 2026-03-25 A | 2026-04-07 A |  | 100% | 1405/1/5 | 1405/1/18 |  |
| 642 | 8.1.7.1 | تأمین کلیه مصالح دودبند نمای شمال | 5d | 2026-03-25 A | 2026-03-29 A | 94FS-14d | 100% | 1405/1/5 | 1405/1/9 | مترطول |
| 643 | 8.1.7.2 | تأمین کلیه مصالح دودبند نمای شرق | 14d | 2026-03-25 A | 2026-04-07 A | 94FS-14d | 100% | 1405/1/5 | 1405/1/18 | مترطول |
| 644 | 8.1.7.3 | تأمین کلیه مصالح دودبند نمای غرب | 14d | 2026-03-25 A | 2026-04-07 A | 94FS-14d | 100% | 1405/1/5 | 1405/1/18 | مترطول |

| ID | WBS | Task | Duration | Start | Finish | Predecessors | Complete | شروع | پایان | واحد |
| --- | --- | --- | --- | --- | --- | --- | --- | --- | --- | --- |
| 645 | 8.1.8 | **تأمین کلیه مصالح مصالح هوابندی ویندووال** | 5d | 2026-08-28 A | 2026-09-01 A |  | 100% | 1405/6/6 | 1405/6/10 |  |
| 646 | 8.1.8.1 | تأمین کلیه مصالح مصالح هوابند ویندووال نمای شمال | 5d | 2026-08-28 A | 2026-09-01 A | 94FS+142d | 100% | 1405/6/6 | 1405/6/10 | مترمربع |
| 647 | 8.1.8.2 | تأمین کلیه مصالح مصالح هوابند ویندووال نمای جنوب | 5d | 2026-08-28 A | 2026-09-01 A | 94FS+142d | 100% | 1405/6/6 | 1405/6/10 | مترمربع |
| 648 | 8.1.8.3 | تأمین کلیه مصالح مصالح هوابند ویندووال نمای شرق | 5d | 2026-08-28 A | 2026-09-01 A | 94FS+142d | 100% | 1405/6/6 | 1405/6/10 | مترمربع |
| 649 | 8.1.8.4 | تأمین کلیه مصالح مصالح هوابند ویندووال نمای غرب | 5d | 2026-08-28 A | 2026-09-01 A | 94FS+142d | 100% | 1405/6/6 | 1405/6/10 | مترمربع |
| 650 | 8.1.9 | **تأمین کلیه مصالح سمنت برد زیرسقف ها** | 7d | 2026-08-18 A | 2026-08-24 A |  | 100% | 1405/5/27 | 1405/6/2 |  |
| 651 | 8.1.9.1 | تأمین کلیه مصالح زیرسازی فولادی سمنت بوردهای نمای شمال | 1d | 2026-08-23 A | 2026-08-23 A | 116FS+233d | 100% | 1405/6/1 | 1405/6/1 | کیلوگرم |
| 652 | 8.1.9.2 | تأمین کلیه مصالح زیرسازی فولادی سمنت بوردهای نمای .جنوب | 2d | 2026-08-22 A | 2026-08-23 A | 117FS+227d | 100% | 1405/5/31 | 1405/6/1 | کیلوگرم |
| 653 | 8.1.9.3 | تأمین کلیه مصالح زیرسازی فولادی سمنت بوردهای نمای شرق | 4d | 2026-08-20 A | 2026-08-23 A | 118FS+220d | 100% | 1405/5/29 | 1405/6/1 | کیلوگرم |
| 654 | 8.1.9.4 | تأمین کلیه مصالح زیرسازی فولادی سمنت بوردهای نمای غرب | 6d | 2026-08-18 A | 2026-08-23 A | 119FS+213d | 100% | 1405/5/27 | 1405/6/1 | کیلوگرم |
| 655 | 8.1.9.5 | تأمین کلیه مصالح سمنت برد زیرسقف نمای شمال | 5d | 2026-08-20 A | 2026-08-24 A | 120FS+225d | 100% | 1405/5/29 | 1405/6/2 | مترمربع |
| 656 | 8.1.9.6 | تأمین کلیه مصالح سمنت برد زیرسقف نمای جنوب | 5d | 2026-08-20 A | 2026-08-24 A | 121FS+220d | 100% | 1405/5/29 | 1405/6/2 | مترمربع |
| 657 | 8.1.9.7 | تأمین کلیه مصالح سمنت برد زیرسقف نمای شرق | 5d | 2026-08-20 A | 2026-08-24 A | 122FS+215d | 100% | 1405/5/29 | 1405/6/2 | مترمربع |
| 658 | 8.1.9.8 | تأمین کلیه مصالح سمنت برد زیرسقف نمای غرب | 5d | 2026-08-20 A | 2026-08-24 A | 123FS+210d | 100% | 1405/5/29 | 1405/6/2 | مترمربع |
| 659 | 8.1.10 | **تأمین کلیه مصالح بازشو** | 8d | 2026-08-20 A | 2026-08-27 A |  | 100% | 1405/5/29 | 1405/6/5 |  |
| 660 | 8.1.10.1 | تأمین کلیه مصالح بازشو نمای شمال | 4d | 2026-08-24 A | 2026-08-27 A | 97FS+235d | 100% | 1405/6/2 | 1405/6/5 | مترمربع |
| 661 | 8.1.10.2 | تأمین کلیه مصالح بازشو نمای جنوب | 3d | 2026-08-21 A | 2026-08-23 A | 98FS+225d | 100% | 1405/5/30 | 1405/6/1 | مترمربع |
| 662 | 8.1.10.3 | تأمین کلیه مصالح بازشو نمای شرق | 3d | 2026-08-23 A | 2026-08-25 A | 99FS+220d | 100% | 1405/6/1 | 1405/6/3 | مترمربع |
| 663 | 8.1.10.4 | تأمین کلیه مصالح بازشو نمای غرب | 5d | 2026-08-20 A | 2026-08-24 A | 100FS+210d | 100% | 1405/5/29 | 1405/6/2 | مترمربع |
| 664 | 8.1.11 | **تأمین کلیه مصالح فلاشینگ** | 5d | 2026-08-16 A | 2026-08-20 A |  | 100% | 1405/5/25 | 1405/5/29 |  |
| 665 | 8.1.11.1 | تأمین کلیه مصالح ورق فولادی فلاشینگ و متعلقات نمای شمال | 5d | 2026-08-16 A | 2026-08-20 A | 92FS+220d | 100% | 1405/5/25 | 1405/5/29 | مترمربع |
| 666 | 8.1.11.2 | تأمین کلیه مصالح ورق فولادی فلاشینگ و متعلقات نمای جنوب | 5d | 2026-08-16 A | 2026-08-20 A | 92FS+220d | 100% | 1405/5/25 | 1405/5/29 | مترمربع |
| 667 | 8.1.11.3 | تأمین کلیه مصالح ورق فولادی فلاشینگ و متعلقات نمای شرق | 5d | 2026-08-16 A | 2026-08-20 A | 92FS+220d | 100% | 1405/5/25 | 1405/5/29 | مترمربع |
| 668 | 8.1.11.4 | تأمین کلیه مصالح ورق فولادی فلاشینگ و متعلقات نمای غرب | 5d | 2026-08-16 A | 2026-08-20 A | 92FS+220d | 100% | 1405/5/25 | 1405/5/29 | مترمربع |
| 669 | 8.1.11.5 | تأمین کلیه مصالح ورق آلومینیومی فلاشینگ و متعلقات نمای شمال | 5d | 2026-08-16 A | 2026-08-20 A | 92FS+220d | 100% | 1405/5/25 | 1405/5/29 | مترمربع |
| 670 | 8.1.11.6 | تأمین کلیه مصالح ورق آلومینیومی فلاشینگ و متعلقات نمای جنوب | 5d | 2026-08-16 A | 2026-08-20 A | 92FS+220d | 100% | 1405/5/25 | 1405/5/29 | مترمربع |
| 671 | 8.1.11.7 | تأمین کلیه مصالح ورق آلومینیومی فلاشینگ و متعلقات نمای شرق | 5d | 2026-08-16 A | 2026-08-20 A | 92FS+220d | 100% | 1405/5/25 | 1405/5/29 | مترمربع |
| 672 | 8.1.11.8 | تأمین کلیه مصالح ورق آلومینیومی فلاشینگ و متعلقات نمای غرب | 5d | 2026-08-16 A | 2026-08-20 A | 92FS+220d | 100% | 1405/5/25 | 1405/5/29 | مترمربع |

| ID | WBS | Task | Duration | Start | Finish | Predecessors | Complete | شروع | پایان | واحد | Text3 |
| --- | --- | --- | --- | --- | --- | --- | --- | --- | --- | --- | --- |
| 673 | 8.2 | **ساخت و ارسال مصالح نمای ساختمان کشاورزی** | 268d | 2025-12-15 A | 2026-09-08 A |  | 100% | 1404/9/24 | 1405/6/17 |  |  |
| 674 | 8.2.1 | **ساخت و ارسال زیرسازی فولادی کرتین وال و ویندووال** | 248.7d | 2025-12-15 A | 2026-08-20 A |  | 100% | 1404/9/24 | 1405/5/29 |  |  |
| 675 | 8.2.1.1 | ساخت، سندبلاست و ‌رنگ امیزی زیرسازی کرتین وال نمای شمال | 9.8d | 2026-03-28 A | 2026-04-06 A | 608FS+70d, 19 | 100% | 1405/1/8 | 1405/1/17 | کیلوگرم |  |
| 676 | 8.2.1.2 | ساخت، سندبلاست و ‌رنگ امیزی زیرسازی کرتین وال نمای جنوب | 7d | 2026-04-08 A | 2026-04-14 A | 609FS-4d, 25FS-4d | 100% | 1405/1/19 | 1405/1/25 | کیلوگرم |  |
| 677 | 8.2.1.3 | ساخت، سندبلاست و ‌رنگ امیزی زیرسازی کرتین وال نمای شرق | 29.3d | 2026-03-21 A | 2026-06-15 A | 610FS+62d, 31 | 100% | 1405/1/1 | 1405/3/25 | کیلوگرم |  |
| 678 | 8.2.1.4 | ساخت، سندبلاست و ‌رنگ امیزی زیرسازی کرتین وال نمای غرب | 9.2d | 2026-03-25 A | 2026-06-15 A | 611, 37 | 100% | 1405/1/5 | 1405/3/25 | کیلوگرم |  |
| 679 | 8.2.1.5 | ساخت، سندبلاست و ‌رنگ امیزی زیرسازی کرتین وال داخلی | 5d | 2025-12-15 A | 2025-12-19 A | 612, 127 | 100% | 1404/9/24 | 1404/9/28 | کیلوگرم |  |
| 680 | 8.2.1.6 | حمل به کارگاه زیرسازی کرتین وال نمای شمال | 9.8d | 2026-03-28 A | 2026-04-06 A | 675 | 100% | 1405/1/8 | 1405/1/17 | کیلوگرم |  |
| 681 | 8.2.1.7 | حمل به کارگاه زیرسازی کرتین وال نمای جنوب | 7d | 2026-04-13 A | 2026-04-19 A | 676FS-2d | 100% | 1405/1/24 | 1405/1/30 | کیلوگرم |  |
| 682 | 8.2.1.8 | حمل به کارگاه زیرسازی کرتین وال نمای شرق | 30d | 2026-03-26 A | 2026-08-20 A | 677FS+60d | 100% | 1405/1/6 | 1405/5/29 | کیلوگرم |  |
| 683 | 8.2.1.9 | حمل به کارگاه زیرسازی کرتین وال نمای غرب | 9.7d | 2026-03-30 A | 2026-06-17 A | 678 | 100% | 1405/1/10 | 1405/3/27 | کیلوگرم |  |
| 684 | 8.2.1.10 | حمل به کارگاه زیرسازی کرتین وال داخلی | 5d | 2025-12-16 A | 2025-12-20 A | 679FS-4d | 100% | 1404/9/25 | 1404/9/29 | کیلوگرم |  |
| 685 | 8.2.2 | **ساخت و ارسال زیرسازی پنل‌های بتنی** | 144.29d | 2026-04-08 A | 2026-08-30 A |  | 100% | 1405/1/19 | 1405/6/8 |  |  |
| 686 | 8.2.2.1 | ساخت، سندبلاست و ‌رنگ امیزی زیرسازی فولادی پنل بتنی نمای شمال | 15d | 2026-08-07 A | 2026-08-22 A | 614FS-17d, 43FS-20d | 100% | 1405/5/16 | 1405/5/31 | کیلوگرم |  |
| 687 | 8.2.2.2 | ساخت، سندبلاست و ‌رنگ امیزی زیرسازی فولادی پنل بتنی نمای جنوب | 10d | 2026-08-06 A | 2026-08-16 A | 615FS-14d, 48FS-30d | 100% | 1405/5/15 | 1405/5/25 | کیلوگرم |  |
| 688 | 8.2.2.3 | ساخت، سندبلاست و ‌رنگ امیزی زیرسازی فولادی پنل بتنی نمای شرق | 19.4d | 2026-04-08 A | 2026-08-19 A | 616FS-20d, 53 | 100% | 1405/1/19 | 1405/5/28 | کیلوگرم |  |
| 689 | 8.2.2.4 | ساخت، سندبلاست و ‌رنگ امیزی زیرسازی فولادی پنل بتنی نمای غرب | 29d | 2026-04-08 A | 2026-08-30 A | 617FS-5d, 58FS-10d | 100% | 1405/1/19 | 1405/6/8 | کیلوگرم |  |
| 690 | 8.2.2.5 | حمل به کارگاه زیرسازی فولادی پنل بتنی نمای شمال | 15d | 2026-08-08 A | 2026-08-23 A | 686FS-14d | 100% | 1405/5/17 | 1405/6/1 | کیلوگرم |  |
| 691 | 8.2.2.6 | حمل به کارگاه زیرسازی فولادی پنل بتنی نمای جنوب | 10d | 2026-08-07 A | 2026-08-17 A | 687FS-9d | 100% | 1405/5/16 | 1405/5/26 | کیلوگرم |  |
| 692 | 8.2.2.7 | حمل به کارگاه زیرسازی فولادی پنل بتنی نمای شرق | 20d | 2026-04-08 A | 2026-08-21 A | 688FS-14d | 100% | 1405/1/19 | 1405/5/30 | کیلوگرم |  |
| 693 | 8.2.2.8 | حمل به کارگاه زیرسازی فولادی پنل بتنی نمای غرب | 30d | 2026-04-08 A | 2026-08-22 A | 689FS-20d | 100% | 1405/1/19 | 1405/5/31 | کیلوگرم |  |
| 694 | 8.2.3 | **ساخت و ارسال زیرسازی فولادی پنل‌های آجری** | 163.8d | 2026-03-18 A | 2026-08-28 A |  | 100% | 1404/12/27 | 1405/6/6 |  |  |
| 695 | 8.2.3.1 | ساخت، سندبلاست و ‌رنگ امیزی زیرسازی فولادی پنل آجری نمای شمال | 7d | 2026-08-07 A | 2026-08-14 A | 619, 63 | 100% | 1405/5/16 | 1405/5/23 | کیلوگرم |  |
| 696 | 8.2.3.2 | ساخت، سندبلاست و ‌رنگ امیزی زیرسازی فولادی پنل آجری نمای جنوب | 20d | 2026-06-18 A | 2026-08-20 A | 620FS-18d, 68FS-11d | 100% | 1405/3/28 | 1405/5/29 | کیلوگرم |  |
| 697 | 8.2.3.3 | ساخت، سندبلاست و ‌رنگ امیزی زیرسازی فولادی پنل آجری نمای شرق | 22d | 2026-03-18 A | 2026-08-22 A | 621FS-12d, 73FS-27d | 100% | 1404/12/27 | 1405/5/31 | کیلوگرم |  |
| 698 | 8.2.3.4 | ساخت، سندبلاست و ‌رنگ امیزی زیرسازی فولادی پنل آجری نمای غرب | 23d | 2026-06-10 A | 2026-08-22 A | 622FS-16d, 78FS-8d | 100% | 1405/3/20 | 1405/5/31 | کیلوگرم |  |
| 699 | 8.2.3.5 | حمل به کارگاه زیرسازی فولادی پنل آجری نمای شمال | 7d | 2026-08-14 A | 2026-08-21 A | 695 | 100% | 1405/5/23 | 1405/5/30 | کیلوگرم |  |
| 700 | 8.2.3.6 | حمل به کارگاه زیرسازی فولادی پنل آجری نمای جنوب | 20d | 2026-08-05 A | 2026-08-25 A | 696FS-15d | 100% | 1405/5/14 | 1405/6/3 | کیلوگرم |  |
| 701 | 8.2.3.7 | حمل به کارگاه زیرسازی فولادی پنل آجری نمای شرق | 22d | 2026-03-23 A | 2026-08-22 A | 697FS-10d | 100% | 1405/1/3 | 1405/5/31 | کیلوگرم |  |
| 702 | 8.2.3.8 | حمل به کارگاه زیرسازی فولادی پنل آجری نمای غرب | 23d | 2026-08-05 A | 2026-08-28 A | 698FS-17d | 100% | 1405/5/14 | 1405/6/6 | کیلوگرم |  |
| 703 | 8.2.4 | ساخت، سندبلاست و ‌رنگ امیزی آهن الات سازه تقویت بک آپ استراکچر | 20d | 2026-05-09 A | 2026-08-31 A | 627, 152 | 100% | 1405/2/19 | 1405/6/9 | کیلوگرم | کیلوگرم |
| 704 | 8.2.5 | حمل به کارگاه آهن الات سازه تقویت بک آپ استراکچر | 30d | 2026-05-10 A | 2026-09-02 A | 703FS-17d | 100% | 1405/2/20 | 1405/6/11 | کیلوگرم | کیلوگرم |

| ID | WBS | Task | Duration | Start | Finish | Predecessors | Complete | شروع | پایان | واحد |
| --- | --- | --- | --- | --- | --- | --- | --- | --- | --- | --- |
| 705 | 8.2.6 | **ساخت و ارسال پروفیل آلومنیومی کرتین وال و ویندووال** | 154.65d | 2026-03-24 A | 2026-08-25 A |  | 100% | 1405/1/4 | 1405/6/3 |  |
| 706 | 8.2.6.1 | ساخت و ارسال پروفیل آلومنیومی کرتین وال و ویندووال نمای شمال | 15d | 2026-03-27 A | 2026-08-25 A | 283, 20, 10 | 100% | 1405/1/7 | 1405/6/3 | مترمربع |
| 707 | 8.2.6.2 | ساخت و ارسال پروفیل آلومنیومی کرتین وال و ویندووال نمای جنوب | 7d | 2026-04-15 A | 2026-04-21 A | 284, 26FS-10d, 10 | 100% | 1405/1/26 | 1405/2/1 | مترمربع |
| 708 | 8.2.6.3 | ساخت و ارسال پروفیل آلومنیومی کرتین وال و ویندووال نمای شرق | 30d | 2026-03-31 A | 2026-08-18 A | 285FS+105d, 32, 10 | 100% | 1405/1/11 | 1405/5/27 | مترمربع |
| 709 | 8.2.6.4 | ساخت و ارسال پروفیل آلومنیومی کرتین وال و ویندووال نمای غرب | 20d | 2026-03-24 A | 2026-06-03 A | 286, 32, 10 | 100% | 1405/1/4 | 1405/3/13 | مترمربع |
| 710 | 8.2.6.5 | ساخت و ارسال پروفیل آلومنیومی کرتین وال و ویندووال داخلی | 6d | 2026-06-15 A | 2026-06-21 A | 38, 287FS+126d, 10 | 100% | 1405/3/25 | 1405/3/31 | مترمربع |
| 711 | 8.2.7 | **ساخت و ارسال مصالح فولادی و آلومینیومی هندریل و متعلقات** | 151d | 2026-04-09 A | 2026-09-06 A |  | 100% | 1405/1/20 | 1405/6/15 |  |
| 712 | 8.2.7.1 | ساخت، سندبلاست و ‌رنگ امیزی زیرسازی زیرسازی فولادی هندریل نمای شمال | 5d | 2026-06-30 A | 2026-08-25 A | 629, 89 | 100% | 1405/4/9 | 1405/6/3 | کیلوگرم |
| 713 | 8.2.7.2 | ساخت، سندبلاست و ‌رنگ امیزی زیرسازی زیرسازی فولادی هندریل نمای جنوب | 5d | 2026-04-09 A | 2026-08-22 A | 630FS-4d, 89 | 100% | 1405/1/20 | 1405/5/31 | کیلوگرم |
| 714 | 8.2.7.3 | ساخت، سندبلاست و ‌رنگ امیزی زیرسازی زیرسازی فولادی هندریل نمای شرق | 5d | 2026-04-09 A | 2026-08-09 A | 631FS+115d, 89 | 100% | 1405/1/20 | 1405/5/18 | کیلوگرم |
| 715 | 8.2.7.4 | ساخت، سندبلاست و ‌رنگ امیزی زیرسازی زیرسازی فولادی هندریل نمای غرب | 8d | 2026-06-30 A | 2026-08-09 A | 632FS+35d, 89 | 100% | 1405/4/9 | 1405/5/18 | کیلوگرم |
| 716 | 8.2.7.5 | حمل به کارگاه زیرسازی زیرسازی فولادی هندریل نمای شمال | 5d | 2026-07-01 A | 2026-08-26 A | 712 | 100% | 1405/4/10 | 1405/6/4 | کیلوگرم |
| 717 | 8.2.7.6 | حمل به کارگاه زیرسازی زیرسازی فولادی هندریل نمای جنوب | 5d | 2026-04-10 A | 2026-08-25 A | 713 | 100% | 1405/1/21 | 1405/6/3 | کیلوگرم |
| 718 | 8.2.7.7 | حمل به کارگاه زیرسازی زیرسازی فولادی هندریل نمای شرق | 5d | 2026-04-10 A | 2026-04-14 A | 714FS-4d | 100% | 1405/1/21 | 1405/1/25 | کیلوگرم |
| 719 | 8.2.7.8 | حمل به کارگاه زیرسازی زیرسازی فولادی هندریل نمای غرب | 8d | 2026-07-01 A | 2026-07-08 A | 715FS-7d | 100% | 1405/4/10 | 1405/4/17 | کیلوگرم |
| 720 | 8.2.7.9 | ساخت و ارسال مصالح آلومینیومی و متعلقات هندریل نمای شمال | 5d | 2026-09-01 A | 2026-09-05 A | 633FS-1d, 90 | 100% | 1405/6/10 | 1405/6/14 | مترطول |
| 721 | 8.2.7.10 | ساخت و ارسال مصالح آلومینیومی و متعلقات هندریل نمای جنوب | 5d | 2026-09-02 A | 2026-09-06 A | 634, 90 | 100% | 1405/6/11 | 1405/6/15 | مترطول |
| 722 | 8.2.7.11 | ساخت و ارسال مصالح آلومینیومی و متعلقات هندریل نمای شرق | 7d | 2026-08-27 A | 2026-09-02 A | 635FS-6d, 90 | 100% | 1405/6/5 | 1405/6/11 | مترطول |
| 723 | 8.2.7.12 | ساخت و ارسال مصالح آلومینیومی و متعلقات هندریل نمای غرب | 15d | 2026-08-18 A | 2026-09-01 A | 636FS-15d, 90 | 100% | 1405/5/27 | 1405/6/10 | مترطول |
| 724 | 8.2.8 | **ساخت و ارسال شدوباکس** | 29d | 2026-03-25 A | 2026-04-22 A |  | 100% | 1405/1/5 | 1405/2/2 |  |
| 725 | 8.2.8.1 | ساخت و ارسال شدوباکس نمای شمال | 5d | 2026-04-08 A | 2026-04-12 A | 638FS-5d, 134FS-7d | 100% | 1405/1/19 | 1405/1/23 | مترمربع |
| 726 | 8.2.8.2 | ساخت و ارسال شدوباکس نمای شرق | 15d | 2026-04-08 A | 2026-04-22 A | 639FS-8d, 135FS-7d | 100% | 1405/1/19 | 1405/2/2 | مترمربع |
| 727 | 8.2.8.3 | ساخت و ارسال شدوباکس نمای غرب | 15d | 2026-03-25 A | 2026-04-08 A | 640FS+4d, 136 | 100% | 1405/1/5 | 1405/1/19 | مترمربع |
| 728 | 8.2.9 | **ساخت و ارسال دودبند** | 18d | 2026-03-20 A | 2026-04-06 A |  | 100% | 1404/12/29 | 1405/1/17 |  |
| 729 | 8.2.9.1 | ساخت و ارسال دودبند نمای شمال | 5d | 2026-03-20 A | 2026-03-24 A | 642FS-10d, 95FS-10d | 100% | 1404/12/29 | 1405/1/4 | مترطول |
| 730 | 8.2.9.2 | ساخت و ارسال دودبند نمای شرق | 14d | 2026-03-24 A | 2026-04-06 A | 643FS-15d, 95FS-15d | 100% | 1405/1/4 | 1405/1/17 | مترطول |
| 731 | 8.2.9.3 | ساخت و ارسال دودبند نمای غرب | 14d | 2026-03-24 A | 2026-04-06 A | 644FS-15d, 95FS-15d | 100% | 1405/1/4 | 1405/1/17 | مترطول |

| ID | WBS | Task | Duration | Start | Finish | Predecessors | Complete | شروع | پایان | واحد |
| --- | --- | --- | --- | --- | --- | --- | --- | --- | --- | --- |
| 732 | 8.2.10 | **ساخت و ارسال مصالح هوابندی ویندووال** | 20d | 2026-08-18 A | 2026-09-06 A |  | 100% | 1405/5/27 | 1405/6/15 |  |
| 733 | 8.2.10.1 | ساخت و ارسال مصالح هوابند ویندووال نمای شمال | 5d | 2026-09-02 A | 2026-09-06 A | 646, 95 | 100% | 1405/6/11 | 1405/6/15 | مترمربع |
| 734 | 8.2.10.2 | ساخت و ارسال مصالح هوابند ویندووال نمای جنوب | 7d | 2026-08-24 A | 2026-08-30 A | 647FS-9d, 95FS-15d | 100% | 1405/6/2 | 1405/6/8 | مترمربع |
| 735 | 8.2.10.3 | ساخت و ارسال مصالح هوابند ویندووال نمای شرق | 14d | 2026-08-18 A | 2026-08-31 A | 648FS-15d, 95FS-15d | 100% | 1405/5/27 | 1405/6/9 | مترمربع |
| 736 | 8.2.10.4 | ساخت و ارسال مصالح هوابند ویندووال نمای غرب | 15d | 2026-08-21 A | 2026-09-04 A | 649FS-12d, 95FS-15d | 100% | 1405/5/30 | 1405/6/13 | مترمربع |
| 737 | 8.2.11 | **ساخت و ارسال سمنت برد زیرسقف‌ها** | 22d | 2026-08-10 A | 2026-08-31 A |  | 100% | 1405/5/19 | 1405/6/9 |  |
| 738 | 8.2.11.1 | ساخت، سندبلاست و ‌رنگ امیزی زیرسازی فولادی سمنت برد زیرسقف نمای شمال | 2d | 2026-08-29 A | 2026-08-30 A | 651FS+5d | 100% | 1405/6/7 | 1405/6/8 | کیلوگرم |
| 739 | 8.2.11.2 | ساخت، سندبلاست و ‌رنگ امیزی زیرسازی فولادی سمنت برد زیرسقف نمای جنوب | 4d | 2026-08-27 A | 2026-08-30 A | 652FS+3d | 100% | 1405/6/5 | 1405/6/8 | کیلوگرم |
| 740 | 8.2.11.3 | ساخت، سندبلاست و ‌رنگ امیزی زیرسازی فولادی سمنت برد زیرسقف نمای شرق | 8d | 2026-08-19 A | 2026-08-26 A | 653FS-5d | 100% | 1405/5/28 | 1405/6/4 | کیلوگرم |
| 741 | 8.2.11.4 | ساخت، سندبلاست و ‌رنگ امیزی زیرسازی فولادی سمنت برد زیرسقف نمای غرب | 12d | 2026-08-19 A | 2026-08-30 A | 654FS-5d | 100% | 1405/5/28 | 1405/6/8 | کیلوگرم |
| 742 | 8.2.11.5 | حمل به کارگاه زیرسازی فولادی سمنت برد زیرسقف نمای شمال | 2d | 2026-08-30 A | 2026-08-31 A | 738FS-1d | 100% | 1405/6/8 | 1405/6/9 | کیلوگرم |
| 743 | 8.2.11.6 | حمل به کارگاه زیرسازی فولادی سمنت برد زیرسقف نمای جنوب | 4d | 2026-08-28 A | 2026-08-31 A | 739FS-3d | 100% | 1405/6/6 | 1405/6/9 | کیلوگرم |
| 744 | 8.2.11.7 | حمل به کارگاه زیرسازی فولادی سمنت برد زیرسقف نمای شرق | 8d | 2026-08-20 A | 2026-08-27 A | 740FS-7d | 100% | 1405/5/29 | 1405/6/5 | کیلوگرم |
| 745 | 8.2.11.8 | حمل به کارگاه زیرسازی فولادی سمنت برد زیرسقف نمای غرب | 12d | 2026-08-20 A | 2026-08-31 A | 741FS-11d | 100% | 1405/5/29 | 1405/6/9 | کیلوگرم |
| 746 | 8.2.11.9 | ساخت و ارسال سمنت برد زیرسقف نمای شمال | 5d | 2026-08-25 A | 2026-08-29 A | 655 | 100% | 1405/6/3 | 1405/6/7 | مترمربع |
| 747 | 8.2.11.10 | ساخت و ارسال سمنت برد زیرسقف نمای جنوب | 5d | 2026-08-25 A | 2026-08-29 A | 656 | 100% | 1405/6/3 | 1405/6/7 | مترمربع |
| 748 | 8.2.11.11 | ساخت و ارسال سمنت برد زیرسقف نمای شرق | 10d | 2026-08-20 A | 2026-08-29 A | 657FS-5d | 100% | 1405/5/29 | 1405/6/7 | مترمربع |
| 749 | 8.2.11.12 | ساخت و ارسال سمنت برد زیرسقف نمای غرب | 15d | 2026-08-10 A | 2026-08-24 A | 658FS-15d | 100% | 1405/5/19 | 1405/6/2 | مترمربع |
| 750 | 8.2.12 | **ساخت و ارسال بازشو و درب اسلایدینگ** | 11d | 2026-08-29 A | 2026-09-08 A |  | 100% | 1405/6/7 | 1405/6/17 |  |
| 751 | 8.2.12.1 | ساخت و ارسال بازشو نمای شمال | 5d | 2026-08-29 A | 2026-09-02 A | 101, 660 | 100% | 1405/6/7 | 1405/6/11 | مترمربع |
| 752 | 8.2.12.2 | ساخت و ارسال بازشو نمای جنوب | 5d | 2026-08-29 A | 2026-09-02 A | 102, 661 | 100% | 1405/6/7 | 1405/6/11 | مترمربع |
| 753 | 8.2.12.3 | ساخت و ارسال بازشو نمای شرق | 5d | 2026-08-29 A | 2026-09-02 A | 103, 662 | 100% | 1405/6/7 | 1405/6/11 | مترمربع |
| 754 | 8.2.12.4 | ساخت و ارسال بازشو نمای غرب | 5d | 2026-08-29 A | 2026-09-02 A | 104, 663 | 100% | 1405/6/7 | 1405/6/11 | مترمربع |
| 755 | 8.2.12.5 | ساخت و ارسال درب اسلایدینگ نمای شمال | 6d | 2026-09-03 A | 2026-09-08 A | 112, 751 | 100% | 1405/6/12 | 1405/6/17 | مترمربع |
| 756 | 8.2.12.6 | ساخت و ارسال درب اسلایدینگ نماای جنوب | 4d | 2026-09-03 A | 2026-09-06 A | 113, 752 | 100% | 1405/6/12 | 1405/6/15 | مترمربع |
| 757 | 8.2.12.7 | ساخت و ارسال درب اسلایدینگ نمای غرب | 4d | 2026-09-03 A | 2026-09-06 A | 114, 755FS-10d | 100% | 1405/6/12 | 1405/6/15 | مترمربع |

| ID | WBS | Task | Duration | Start | Finish | Predecessors | Complete | شروع | پایان | واحد |
| --- | --- | --- | --- | --- | --- | --- | --- | --- | --- | --- |
| 758 | 8.2.13 | **ساخت و ارسال فلاشینگ آلومینیومی و فولادی** | 16d | 2026-08-17 A | 2026-09-01 A |  | 100% | 1405/5/26 | 1405/6/10 |  |
| 759 | 8.2.13.1 | ساخت و ارسال ورق فولادی فلاشینگ و متعلقات نمای شمال | 5d | 2026-08-23 A | 2026-08-27 A | 665FS-1d, 93 | 100% | 1405/6/1 | 1405/6/5 | مترمربع |
| 760 | 8.2.13.2 | ساخت و ارسال ورق فولادی فلاشینگ و متعلقات نمای جنوب | 3d | 2026-08-23 A | 2026-08-25 A | 666FS-1d, 93 | 100% | 1405/6/1 | 1405/6/3 | مترمربع |
| 761 | 8.2.13.3 | ساخت و ارسال ورق فولادی فلاشینگ و متعلقات نمای شرق | 5d | 2026-08-23 A | 2026-08-27 A | 667FS-5d, 93 | 100% | 1405/6/1 | 1405/6/5 | مترمربع |
| 762 | 8.2.13.4 | ساخت و ارسال ورق فولادی فلاشینگ و متعلقات نمای غرب | 6d | 2026-08-18 A | 2026-08-23 A | 668FS-5d, 93FS-5d | 100% | 1405/5/27 | 1405/6/1 | مترمربع |
| 763 | 8.2.13.5 | ساخت و ارسال ورق آلومینیومی فلاشینگ و متعلقات نمای شمال | 5d | 2026-08-23 A | 2026-08-27 A | 669FS-10d, 93 | 100% | 1405/6/1 | 1405/6/5 | مترمربع |
| 764 | 8.2.13.6 | ساخت و ارسال ورق آلومینیومی فلاشینگ و متعلقات نمای جنوب | 5d | 2026-08-23 A | 2026-08-27 A | 670FS-15d, 93 | 100% | 1405/6/1 | 1405/6/5 | مترمربع |
| 765 | 8.2.13.7 | ساخت و ارسال ورق آلومینیومی فلاشینگ و متعلقات نمای شرق | 14d | 2026-08-17 A | 2026-08-30 A | 671FS-20d, 93FS-6d | 100% | 1405/5/26 | 1405/6/8 | مترمربع |
| 766 | 8.2.13.8 | ساخت و ارسال ورق آلومینیومی فلاشینگ و متعلقات نمای غرب | 10d | 2026-08-23 A | 2026-09-01 A | 672FS-15d, 93 | 100% | 1405/6/1 | 1405/6/10 | مترمربع |
| 767 | 8.3 | **پیاده سازی، نصب و اجرای نمای ساختمان کشاورزی** | 206d | 2026-03-01 A | 2026-09-22 A |  | 100% | 1404/12/10 | 1405/6/31 |  |
| 768 | 8.3.1 | **نصب و اجرای نمای کرتین وال** | 200.94d | 2026-03-01 A | 2026-09-17 A |  | 100% | 1404/12/10 | 1405/6/26 |  |
| 769 | 8.3.1.1 | **نصب و اجرای نمای کرتین وال نمای شمال** | 175.82d | 2026-03-11 A | 2026-09-02 A |  | 100% | 1404/12/20 | 1405/6/11 |  |
| 770 | 8.3.1.1.1 | پیاده سای،حمل و نصب زیرسازی کرتین وال شمال | 13d | 2026-03-11 A | 2026-03-23 A | 680 | 100% | 1404/12/20 | 1405/1/3 | کیلوگرم |
| 771 | 8.3.1.1.2 | پیاده سازی،حمل و نصب پروفیل آلومینیومی کرتین وال شمال | 20d | 2026-04-01 A | 2026-06-25 A | 706, 770 | 100% | 1405/1/12 | 1405/4/4 | مترمربع |
| 772 | 8.3.1.1.3 | نصب و اجرای شدوباکس کرتین وال شمال | 5d | 2026-04-15 A | 2026-04-19 A | 725FS-6d, 771FS-6d | 100% | 1405/1/26 | 1405/1/30 | مترمربع |
| 773 | 8.3.1.1.4 | پیاده‌سازی، حمل به طبقات، نصب و اجرای شیشه کرتین وال و رگلاژ و آب بندی و نظافت و تحویل نهایی نما - شمال | 30d | 2026-08-03 A | 2026-09-02 A | 299FS-20d, 772 | 100% | 1405/5/12 | 1405/6/11 | مترمربع |
| 774 | 8.3.1.2 | **نصب و اجرای نمای کرتین وال نمای جنوب** | 159.94d | 2026-04-11 A | 2026-09-17 A |  | 100% | 1405/1/22 | 1405/6/26 |  |
| 775 | 8.3.1.2.1 | تحویل،پیاده سازی،حمل و نصب زیرسازی کرتین وال جنوب | 14.06d | 2026-04-11 A | 2026-06-21 A | 681FS+60d | 100% | 1405/1/22 | 1405/3/31 | کیلوگرم |
| 776 | 8.3.1.2.2 | پیاده سای،حمل و نصب پروفیل آلومینیومی کرتین وال جنوب | 22.28d | 2026-06-21 A | 2026-08-28 A | 707, 775FS+57d | 100% | 1405/3/31 | 1405/6/6 | مترمربع |
| 777 | 8.3.1.2.3 | پیاده‌سازی، حمل به طبقات، نصب و اجرای شیشه کرتین وال و رگلاژ و آب بندی و نظافت و تحویل نهایی نما - جنوب | 20d | 2026-08-28 A | 2026-09-17 A | 316FS-5d, 776 | 100% | 1405/6/6 | 1405/6/26 | مترمربع |
| 778 | 8.3.1.3 | **نصب و اجرای نمای کرتین وال نمای شرق** | 200.48d | 2026-03-01 A | 2026-09-17 A |  | 100% | 1404/12/10 | 1405/6/26 |  |
| 779 | 8.3.1.3.1 | پیاده سازی،حمل و نصب زیرسازی کرتین وال شرق | 60d | 2026-03-01 A | 2026-08-22 A | 682FS-10d | 100% | 1404/12/10 | 1405/5/31 | کیلوگرم |
| 780 | 8.3.1.3.2 | پیاده سازی، حمل و نصب پروفیل آلومینیومی کرتین وال شرق | 60.4d | 2026-04-02 A | 2026-09-04 A | 708, 779 | 100% | 1405/1/13 | 1405/6/13 | مترمربع |
| 781 | 8.3.1.3.3 | نصب و اجرای شدوباکس کرتین وال شرق | 60d | 2026-04-02 A | 2026-05-31 A | 726, 780FF | 100% | 1405/1/13 | 1405/3/10 | مترمربع |
| 782 | 8.3.1.3.4 | پیاده‌سازی، حمل به طبقات، نصب و اجرای شیشه کرتین وال و رگلاژ و آب بندی و نظافت و تحویل نهایی نما - شرق | 39.52d | 2026-04-26 A | 2026-09-17 A | 329FS-11d, 781, 780FS-20d | 100% | 1405/2/6 | 1405/6/26 | مترمربع |

| ID | WBS | Task | Duration | Start | Finish | Predecessors | Complete | شروع | پایان | واحد |
| --- | --- | --- | --- | --- | --- | --- | --- | --- | --- | --- |
| 783 | 8.3.1.4 | **نصب و اجرای نمای کرتین وال نمای غرب** | 165.52d | 2026-03-25 A | 2026-09-06 A |  | 100% | 1405/1/5 | 1405/6/15 |  |
| 784 | 8.3.1.4.1 | پیاده سازی،حمل و نصب زیرسازی -کرتین وال غرب | 15.45d | 2026-03-25 A | 2026-06-20 A | 683 | 100% | 1405/1/5 | 1405/3/30 | کیلوگرم |
| 785 | 8.3.1.4.2 | پیاده سازی،حمل و نصب پروفیل آلومینیومی -کرتین وال غرب | 22.25d | 2026-03-29 A | 2026-06-22 A | 709, 784 | 100% | 1405/1/9 | 1405/4/1 | مترمربع |
| 786 | 8.3.1.4.3 | نصب و اجرای شدوباکس -کرتین وال غرب | 15d | 2026-04-09 A | 2026-04-23 A | 727, 785 | 100% | 1405/1/20 | 1405/2/3 | مترمربع |
| 787 | 8.3.1.4.4 | پیاده‌سازی، حمل به طبقات، نصب و اجرای شیشه کرتین وال و رگلاژ و آب بندی و نظافت و تحویل نهایی نما - غرب | 20d | 2026-04-06 A | 2026-09-06 A | 346FS-10d, 786 | 100% | 1405/1/17 | 1405/6/15 | مترمربع |
| 788 | 8.3.1.5 | **نصب و اجرا -ویندووال داخلی** | 169.63d | 2026-03-31 A | 2026-09-16 A |  | 100% | 1405/1/11 | 1405/6/25 |  |
| 789 | 8.3.1.5.1 | پیاده سازی،حمل و نصب زیرسازی - ویندووال داخلی | 9d | 2026-03-31 A | 2026-08-19 A | 684FS+240d | 100% | 1405/1/11 | 1405/5/28 | کیلوگرم |
| 790 | 8.3.1.5.2 | پیاده سازی،حمل و نصب پروفیل آلومینیومی - ویندووال داخلی | 18d | 2026-08-14 A | 2026-09-01 A | 710, 789FS-5d | 100% | 1405/5/23 | 1405/6/10 | مترمربع |
| 791 | 8.3.1.5.3 | پیاده‌سازی، حمل به طبقات، نصب و اجرای شیشه کرتین وال و رگلاژ و آب بندی و نظافت و تحویل نهایی نما - ویندووال داخلی | 15d | 2026-09-01 A | 2026-09-16 A | 362FS-5d, 790 | 100% | 1405/6/10 | 1405/6/25 | مترمربع |
| 792 | 8.3.2 | حمل و نصب و تحویل آهن الات سازه تقویت بک آپ استراکچر | 30d | 2026-05-10 A | 2026-09-04 A | 704FS-16d | 100% | 1405/2/20 | 1405/6/13 | کیلوگرم |
| 793 | 8.3.3 | **نصب و اجرای پنل آجری** | 105.25d | 2026-06-08 A | 2026-09-22 A |  | 100% | 1405/3/18 | 1405/6/31 |  |
| 794 | 8.3.3.1 | **نصب و اجرا -پنل آجری شمال** | 37d | 2026-08-16 A | 2026-09-22 A |  | 100% | 1405/5/25 | 1405/6/31 |  |
| 795 | 8.3.3.1.1 | پیاده سازی،حمل و نصب زیرسازی پنل آجری شمال | 20d | 2026-08-16 A | 2026-09-05 A | 699FS-5d | 100% | 1405/5/25 | 1405/6/14 | کیلوگرم |
| 796 | 8.3.3.1.2 | حمل و نصب پنل آجری شمال | 20d | 2026-09-02 A | 2026-09-22 A | 795FS-3d, 526 | 100% | 1405/6/11 | 1405/6/31 | مترمربع |
| 797 | 8.3.3.2 | **نصب و اجرا -پنل آجری جنوب** | 76.85d | 2026-07-03 A | 2026-09-17 A |  | 100% | 1405/4/12 | 1405/6/26 |  |
| 798 | 8.3.3.2.1 | پیاده سازی،حمل و نصب زیرسازی پنل آجری جنوب | 20d | 2026-07-03 A | 2026-09-03 A | 700FS-10d | 100% | 1405/4/12 | 1405/6/12 | کیلوگرم |
| 799 | 8.3.3.2.2 | حمل و نصب پنل آجری جنوب | 14d | 2026-09-03 A | 2026-09-17 A | 798, 536 | 100% | 1405/6/12 | 1405/6/26 | مترمربع |
| 800 | 8.3.3.3 | **نصب و اجرا -پنل آجری شرق** | 85.6d | 2026-06-08 A | 2026-09-02 A |  | 100% | 1405/3/18 | 1405/6/11 |  |
| 801 | 8.3.3.3.1 | پیاده سازی،حمل و نصب زیرسازی پنل آجری شرق | 20d | 2026-06-08 A | 2026-08-22 A | 701FS-22d, 792FS-22d | 100% | 1405/3/18 | 1405/5/31 | کیلوگرم |
| 802 | 8.3.3.3.2 | حمل و نصب پنل آجری شرق | 29d | 2026-06-29 A | 2026-09-02 A | 801FS-55d, 546 | 100% | 1405/4/8 | 1405/6/11 | مترمربع |
| 803 | 8.3.3.4 | **نصب و اجرا -پنل آجری غرب** | 25d | 2026-08-18 A | 2026-09-12 A |  | 100% | 1405/5/27 | 1405/6/21 |  |
| 804 | 8.3.3.4.1 | پیاده سازی،حمل و نصب زیرسازی پنل آجری غرب | 23d | 2026-08-18 A | 2026-09-10 A | 702FS-10d | 100% | 1405/5/27 | 1405/6/19 | کیلوگرم |
| 805 | 8.3.3.4.2 | حمل و نصب پنل آجری غرب | 12d | 2026-08-31 A | 2026-09-12 A | 804FS-10d, 556 | 100% | 1405/6/9 | 1405/6/21 | مترمربع |
| 806 | 8.3.4 | **نصب و اجرای پنل بتنی** | 161.95d | 2026-04-14 A | 2026-09-22 A |  | 100% | 1405/1/25 | 1405/6/31 |  |
| 807 | 8.3.4.1 | **نصب و اجرا -پنل بتنی شمال** | 159.5d | 2026-04-14 A | 2026-09-20 A |  | 100% | 1405/1/25 | 1405/6/29 |  |
| 808 | 8.3.4.1.1 | حمل و نصب و اجرای ایزولسن پنل بتنی شمال | 14d | 2026-04-14 A | 2026-04-27 A | 623 | 100% | 1405/1/25 | 1405/2/7 | مترمربع |
| 809 | 8.3.4.1.2 | پیاده سازی،حمل و نصب زیرسازی پنل بتنی شمال | 15d | 2026-08-22 A | 2026-09-06 A | 690FS-1d, 808FS-5d | 100% | 1405/5/31 | 1405/6/15 | کیلوگرم |
| 810 | 8.3.4.1.3 | حمل و نصب پنل بتنی شمال | 15d | 2026-09-05 A | 2026-09-20 A | 809FS-1d, 488FS-8d | 100% | 1405/6/14 | 1405/6/29 | مترمربع |

| ID | WBS | Task | Duration | Start | Finish | Predecessors | Complete | Constraint | شروع | پایان | واحد |
| --- | --- | --- | --- | --- | --- | --- | --- | --- | --- | --- | --- |
| 811 | 8.3.4.2 | **نصب و اجرا -پنل بتنی جنوب** | 133d | 2026-05-12 A | 2026-09-21 A |  | 100% |  | 1405/2/22 | 1405/6/30 |  |
| 812 | 8.3.4.2.1 | حمل و نصب و اجرای ایزولسن پنل بتنی جنوب | 14d | 2026-05-12 A | 2026-05-25 A | 624 | 100% |  | 1405/2/22 | 1405/3/4 | مترمربع |
| 813 | 8.3.4.2.2 | پیاده سازی،حمل و نصب زیرسازی پنل بتنی جنوب | 15d | 2026-08-17 A | 2026-09-01 A | 691, 812 | 100% |  | 1405/5/26 | 1405/6/10 | کیلوگرم |
| 814 | 8.3.4.2.3 | حمل و نصب پنل بتنی جنوب | 15d | 2026-09-07 A | 2026-09-21 A | 813FS-5d, 506 | 100% |  | 1405/6/16 | 1405/6/30 | مترمربع |
| 815 | 8.3.4.3 | **نصب و اجرا -پنل بتنی شرق** | 146.95d | 2026-04-29 A | 2026-09-22 A |  | 100% |  | 1405/2/9 | 1405/6/31 |  |
| 816 | 8.3.4.3.1 | حمل و نصب و اجرای ایزولسن پنل بتنی شرق | 30d | 2026-04-29 A | 2026-05-28 A | 625FS-10d | 100% |  | 1405/2/9 | 1405/3/7 | مترمربع |
| 817 | 8.3.4.3.2 | پیاده سازی،حمل و نصب زیرسازی پنل بتنی شرق | 20d | 2026-05-14 A | 2026-09-06 A | 692, 816FS-15d | 100% |  | 1405/2/24 | 1405/6/15 | کیلوگرم |
| 818 | 8.3.4.3.3 | حمل و نصب پنل بتنی شرق | 13d | 2026-08-05 A | 2026-09-22 A | 817FS-35d, 511FS-41d, 515FS-41d | 100% | start no earlier than 2026-08-04 | 1405/5/14 | 1405/6/31 | مترمربع |
| 819 | 8.3.4.4 | **نصب و اجرا -پنل بتنی غرب** | 155.09d | 2026-04-19 A | 2026-09-21 A |  | 100% |  | 1405/1/30 | 1405/6/30 |  |
| 820 | 8.3.4.4.1 | حمل و نصب و اجرای ایزولسن پنل بتنی غرب | 30d | 2026-04-19 A | 2026-05-18 A | 626FS-15d | 100% |  | 1405/1/30 | 1405/2/28 | مترمربع |
| 821 | 8.3.4.4.2 | پیاده سازی،حمل و نصب زیرسازی پنل بتنی غرب | 30d | 2026-06-21 A | 2026-08-30 A | 693FS-6d, 820 | 100% |  | 1405/3/31 | 1405/6/8 | کیلوگرم |
| 822 | 8.3.4.4.3 | حمل و نصب پنل بتنی غرب | 42d | 2026-08-10 A | 2026-09-21 A | 821FS-20d | 100% |  | 1405/5/19 | 1405/6/30 | مترمربع |
| 823 | 8.3.5 | **نصب و اجرا -هندریل** | 160d | 2026-04-15 A | 2026-09-21 A |  | 100% |  | 1405/1/26 | 1405/6/30 |  |
| 824 | 8.3.5.1 | نصب و اجرای زیرسازی-هندریل-شمال | 5d | 2026-08-26 A | 2026-08-31 A | 716 | 100% |  | 1405/6/4 | 1405/6/9 | کیلوگرم |
| 825 | 8.3.5.2 | نصب و اجرای زیرسازی-هندریل-جنوب | 5d | 2026-08-25 A | 2026-08-30 A | 717 | 100% |  | 1405/6/3 | 1405/6/8 | کیلوگرم |
| 826 | 8.3.5.3 | نصب و اجرای زیرسازی-هندریل-شرق | 5d | 2026-04-15 A | 2026-04-19 A | 718 | 100% |  | 1405/1/26 | 1405/1/30 | کیلوگرم |
| 827 | 8.3.5.4 | نصب و اجرای زیرسازی-هندریل-غرب | 8d | 2026-07-09 A | 2026-08-22 A | 719FS+40d | 100% |  | 1405/4/18 | 1405/5/31 | کیلوگرم |
| 828 | 8.3.5.5 | نصب و اجرای پروفیل-هندریل-شمال | 5d | 2026-09-06 A | 2026-09-10 A | 720, 824 | 100% |  | 1405/6/15 | 1405/6/19 | مترطول |
| 829 | 8.3.5.6 | نصب و اجرای پروفیل-هندریل-جنوب | 5d | 2026-09-07 A | 2026-09-11 A | 721, 825 | 100% |  | 1405/6/16 | 1405/6/20 | مترطول |
| 830 | 8.3.5.7 | نصب و اجرای پروفیل-هندریل-شرق | 7d | 2026-08-27 A | 2026-09-02 A | 722FS-7d, 826 | 100% |  | 1405/6/5 | 1405/6/11 | مترطول |
| 831 | 8.3.5.8 | نصب و اجرای پروفیل-هندریل-غرب | 15d | 2026-08-27 A | 2026-09-10 A | 723FS-6d, 827 | 100% |  | 1405/6/5 | 1405/6/19 | مترطول |
| 832 | 8.3.5.9 | نصب شیشه-هندریل-شمال | 12d | 2026-09-10 A | 2026-09-21 A | 307, 828FS-1d | 100% |  | 1405/6/19 | 1405/6/30 | مترمربع |
| 833 | 8.3.5.10 | نصب شیشه-هندریل-جنوب | 4d | 2026-09-12 A | 2026-09-15 A | 320, 829 | 100% |  | 1405/6/21 | 1405/6/24 | مترمربع |
| 834 | 8.3.5.11 | نصب شیشه-هندریل-شرق | 15d | 2026-08-29 A | 2026-09-12 A | 337FS-15d, 830FS-5d | 100% |  | 1405/6/7 | 1405/6/21 | مترمربع |
| 835 | 8.3.5.12 | نصب شیشه-هندریل-غرب | 8d | 2026-09-05 A | 2026-09-12 A | 354, 831FS-6d | 100% |  | 1405/6/14 | 1405/6/21 | مترمربع |

| ID | WBS | Task | Duration | Start | Finish | Predecessors | Complete | شروع | پایان | واحد |
| --- | --- | --- | --- | --- | --- | --- | --- | --- | --- | --- |
| 836 | 8.3.6 | **نصب و اجرا -فلاشینگ** | 25.25d | 2026-08-22 A | 2026-09-16 A |  | 100% | 1405/5/31 | 1405/6/25 |  |
| 837 | 8.3.6.1 | نصب و اجرای فلاشینگ فولادی-شمال | 7d | 2026-08-28 A | 2026-09-03 A | 759 | 100% | 1405/6/6 | 1405/6/12 | مترمربع |
| 838 | 8.3.6.2 | نصب و اجرای فلاشینگ فولادی-جنوب | 5d | 2026-08-26 A | 2026-08-30 A | 760 | 100% | 1405/6/4 | 1405/6/8 | مترمربع |
| 839 | 8.3.6.3 | نصب و اجرای فلاشینگ فولادی-شرق | 10d | 2026-08-28 A | 2026-09-06 A | 761 | 100% | 1405/6/6 | 1405/6/15 | مترمربع |
| 840 | 8.3.6.4 | نصب و اجرای فلاشینگ فولادی-غرب | 21d | 2026-08-22 A | 2026-09-12 A | 762FS-6d, 497FS-11d | 100% | 1405/5/31 | 1405/6/21 | مترمربع |
| 841 | 8.3.6.5 | نصب و اجرای فلاشینگ آلومینیومی-شمال | 5d | 2026-09-11 A | 2026-09-15 A | 763FS-5d, 828 | 100% | 1405/6/20 | 1405/6/24 | مترمربع |
| 842 | 8.3.6.6 | نصب و اجرای فلاشینگ آلومینیومی-جنوب | 3d | 2026-09-12 A | 2026-09-14 A | 764, 829 | 100% | 1405/6/21 | 1405/6/23 | مترمربع |
| 843 | 8.3.6.7 | نصب و اجرای فلاشینگ آلومینیومی-شرق | 14d | 2026-09-03 A | 2026-09-16 A | 765FS-14d, 830 | 100% | 1405/6/12 | 1405/6/25 | مترمربع |
| 844 | 8.3.6.8 | نصب و اجرای فلاشینگ آلومینیومی-غرب | 10d | 2026-09-04 A | 2026-09-13 A | 766FS-5d, 831FS-7d | 100% | 1405/6/13 | 1405/6/22 | مترمربع |
| 845 | 8.3.7 | **نصب و اجرا -سمنت برد** | 26.75d | 2026-08-22 A | 2026-09-17 A |  | 100% | 1405/5/31 | 1405/6/26 |  |
| 846 | 8.3.7.1 | نصب و اجرای زیرسازی سمنت برد نمای شمالی | 2d | 2026-09-01 A | 2026-09-02 A | 742 | 100% | 1405/6/10 | 1405/6/11 | کیلوگرم |
| 847 | 8.3.7.2 | نصب و اجرای زیرسازی سمنت برد نمای جنوبی | 4d | 2026-09-01 A | 2026-09-04 A | 743 | 100% | 1405/6/10 | 1405/6/13 | کیلوگرم |
| 848 | 8.3.7.3 | نصب و اجرای زیرسازی سمنت برد نمای شرقی | 8d | 2026-08-28 A | 2026-09-04 A | 744 | 100% | 1405/6/6 | 1405/6/13 | مترمربع |
| 849 | 8.3.7.4 | نصب و اجرای زیرسازی سمنت برد نمای غربی | 12d | 2026-08-22 A | 2026-09-02 A | 745FS-10d | 100% | 1405/5/31 | 1405/6/11 | مترمربع |
| 850 | 8.3.7.5 | نصب و اجرای پنل سمنت برد نمای شمالی | 5d | 2026-09-04 A | 2026-09-08 A | 746, 846, 837 | 100% | 1405/6/13 | 1405/6/17 | مترمربع |
| 851 | 8.3.7.6 | نصب و اجرای پنل سمنت برد نمای جنوبی | 5d | 2026-09-05 A | 2026-09-09 A | 747, 847, 838 | 100% | 1405/6/14 | 1405/6/18 | مترمربع |
| 852 | 8.3.7.7 | نصب و اجرای پنل سمنت برد نمای شرقی | 10d | 2026-09-07 A | 2026-09-16 A | 748, 848, 839 | 100% | 1405/6/16 | 1405/6/25 | مترمربع |
| 853 | 8.3.7.8 | نصب و اجرای پنل سمنت برد نمای غربی | 15d | 2026-09-02 A | 2026-09-17 A | 749FS-5d, 849FS-5d, 840FS-10d | 100% | 1405/6/11 | 1405/6/26 | مترمربع |
| 854 | 8.3.8 | **نصب و اجرا -دودبند** | 27d | 2026-03-25 A | 2026-04-20 A |  | 100% | 1405/1/5 | 1405/1/31 |  |
| 855 | 8.3.8.1 | نصب و اجرای دودبند-نمای شمال | 5d | 2026-03-25 A | 2026-03-29 A | 729 | 100% | 1405/1/5 | 1405/1/9 | مترطول |
| 856 | 8.3.8.2 | نصب و اجرای دودبند -نمای شرق | 14d | 2026-04-07 A | 2026-04-20 A | 730 | 100% | 1405/1/18 | 1405/1/31 | مترطول |
| 857 | 8.3.8.3 | نصب و اجرای دودبند -نمای غرب | 14d | 2026-04-07 A | 2026-04-20 A | 731 | 100% | 1405/1/18 | 1405/1/31 | مترطول |
| 858 | 8.3.9 | **نصب و اجرا -دودبند وهوابند** | 17.2d | 2026-09-05 A | 2026-09-22 A |  | 100% | 1405/6/14 | 1405/6/31 |  |
| 859 | 8.3.9.1 | نصب و اجرای دودبند و هوابند -وجه شمال | 5d | 2026-09-18 A | 2026-09-22 A | 733, 791FS-2d, 796FS-5d, 810FS-7d, 832FS-4d, 850, 773FS-2d, 837, 841, 872FS-1d, 855 | 100% | 1405/6/27 | 1405/6/31 | مترمربع |
| 860 | 8.3.9.2 | نصب و اجرای دودبند و هوابند -وجه جنوب | 7d | 2026-09-16 A | 2026-09-22 A | 734, 799FS-6d, 814FS-6d, 833, 851, 777FS-2d, 838, 842, 873 | 100% | 1405/6/25 | 1405/6/31 | مترمربع |
| 861 | 8.3.9.3 | نصب و اجرای دودبند و هوابند -وجه شرق | 7d | 2026-09-11 A | 2026-09-17 A | 735FS-5d, 802FS-5d, 818FS-12d, 834FS-7d, 852FS-6d, 782FS-7d, 839FS-1d, 843FS-6d, 856FS-1d | 100% | 1405/6/20 | 1405/6/26 | مترمربع |
| 862 | 8.3.9.4 | نصب و اجرای دودبند و هوابند -وجه غرب | 7d | 2026-09-05 A | 2026-09-12 A | 736, 805FS-7d, 822FS-30d, 835FS-30d, 853FS-30d, 787FS-14d, 840FS-30d, 844FS-30d, 874FS-20d, 857FS-20d | 100% | 1405/6/14 | 1405/6/21 | مترمربع |

| ID | WBS | Task | Duration | Start | Finish | Predecessors | Complete | Work | Actual work | شروع | پایان | واحد |
| --- | --- | --- | --- | --- | --- | --- | --- | --- | --- | --- | --- | --- |
| 863 | 8.3.10 | **نصب و اجرا -بازشو و درب اسلایدینگ** | 14.94d | 2026-09-01 A | 2026-09-15 A |  | 100% |  |  | 1405/6/10 | 1405/6/24 |  |
| 864 | 8.3.10.1 | نصب بارشوها-شمال | 4d | 2026-09-03 A | 2026-09-06 A | 751 | 100% |  |  | 1405/6/12 | 1405/6/15 | مترمربع |
| 865 | 8.3.10.2 | نصب بازشوها-جنوب | 3d | 2026-09-01 A | 2026-09-03 A | 752FS-2d, 776 | 100% |  |  | 1405/6/10 | 1405/6/12 | مترمربع |
| 866 | 8.3.10.3 | نصب بازشوها-شرق | 3d | 2026-09-03 A | 2026-09-05 A | 753, 781 | 100% |  |  | 1405/6/12 | 1405/6/14 | مترمربع |
| 867 | 8.3.10.4 | نصب بازشوها-غرب | 5d | 2026-09-03 A | 2026-09-07 A | 754, 786 | 100% |  |  | 1405/6/12 | 1405/6/16 | مترمربع |
| 868 | 8.3.10.5 | نصب شیشه بازشو-شمال | 4d | 2026-09-07 A | 2026-09-10 A | 751, 311, 864, 773FS-5d | 100% |  |  | 1405/6/16 | 1405/6/19 | مترمربع |
| 869 | 8.3.10.6 | نصب شیشه بازشو-جنوب | 3d | 2026-09-12 A | 2026-09-15 A | 752, 324, 865, 777FS-5d | 100% |  |  | 1405/6/21 | 1405/6/24 | مترمربع |
| 870 | 8.3.10.7 | نصب شیشه بازشو-شرق | 3d | 2026-09-12 A | 2026-09-15 A | 753, 341, 866FS-10d, 782FS-5d | 100% |  |  | 1405/6/21 | 1405/6/24 | مترمربع |
| 871 | 8.3.10.8 | نصب شیشه بازشو-غرب | 5d | 2026-09-03 A | 2026-09-07 A | 754FS-5d, 358FS-5d, 867FS-5d, 787FS-10d | 100% |  |  | 1405/6/12 | 1405/6/16 | مترمربع |
| 872 | 8.3.10.9 | نصب درب های اسلایدینگ-شمال | 6d | 2026-09-09 A | 2026-09-14 A | 755, 868FS-6d | 100% |  |  | 1405/6/18 | 1405/6/23 | مترمربع |
| 873 | 8.3.10.10 | نصب درب های اسلایدینگ-جنوب | 4d | 2026-09-11 A | 2026-09-15 A | 756, 869FS-4d | 100% |  |  | 1405/6/20 | 1405/6/24 | مترمربع |
| 874 | 8.3.10.11 | نصب درب های اسلایدینگ-غرب | 4d | 2026-09-03 A | 2026-09-06 A | 757FS-4d, 871FS-5d | 100% |  |  | 1405/6/12 | 1405/6/15 | مترمربع |
| 875 | 9 | **تهیه، ساخت و نصب المان های شفاف و سالید نما در ساختمان کتابخانه** | 305d | 2025-11-22 A | 2026-09-22 A |  | 100% | 536h | 536h | 1404/9/1 | 1405/6/31 |  |
| 876 | 9.1 | **خرید و تهیه متریال و مصالح و تجهیزات نمای ساختمان کتابخانه** | 267d | 2025-11-22 A | 2026-08-15 A |  | 100% |  |  | 1404/9/1 | 1405/5/24 |  |
| 877 | 9.1.1 | **خرید متریال زیر سازی فولادی ساختمان کتابخانه** | 147d | 2025-11-22 A | 2026-04-17 A |  | 100% |  |  | 1404/9/1 | 1405/1/28 |  |
| 878 | 9.1.1.1 | **خرید متریال زیر سازی فولادی نمای شمالی** | 142d | 2025-11-22 A | 2026-04-12 A |  | 100% |  |  | 1404/9/1 | 1405/1/23 |  |
| 879 | 9.1.1.1.1 | تأمین کلیه مصالح زیرسازی فولادی کرتین‌وال نمای شمالی | 10d | 2025-11-22 A | 2025-12-01 A | 166, 162 | 100% |  |  | 1404/9/1 | 1404/9/10 | کیلوگرم |
| 880 | 9.1.1.1.2 | تأمین کلیه مصالح زیرسازی فولادی فلاشینگ‌ها نمای شمالی | 5d | 2026-04-08 A | 2026-04-12 A | 252FS+77d | 100% |  |  | 1405/1/19 | 1405/1/23 | کیلوگرم |
| 881 | 9.1.1.1.3 | تأمین کلیه مصالح زیرسازی فولادی هندریل دفنی نمای شمالی | 5d | 2026-02-19 A | 2026-02-23 A | 226FS+30d | 100% |  |  | 1404/11/30 | 1404/12/4 | کیلوگرم |
| 882 | 9.1.1.2 | **خرید متریال زیر سازی فولادی نمای جنوبی** | 141d | 2025-11-23 A | 2026-04-12 A |  | 100% |  |  | 1404/9/2 | 1405/1/23 |  |
| 883 | 9.1.1.2.1 | تأمین کلیه مصالح زیرسازی فولادی کرتین‌وال نمای جنوبی | 10d | 2025-11-23 A | 2025-12-02 A | 172FS+66d | 100% |  |  | 1404/9/2 | 1404/9/11 | کیلوگرم |
| 884 | 9.1.1.2.2 | تأمین کلیه مصالح زیرسازی فولادی فلاشینگ‌ها نمای جنوبی | 5d | 2026-04-08 A | 2026-04-12 A | 252FS+77d | 100% |  |  | 1405/1/19 | 1405/1/23 | کیلوگرم |
| 885 | 9.1.1.2.3 | تأمین کلیه مصالح زیرسازی فولادی هندریل دفنی نمای جنوبی | 5d | 2026-01-10 A | 2026-01-14 A | 232 | 100% |  |  | 1404/10/20 | 1404/10/24 | کیلوگرم |
| 886 | 9.1.1.3 | **خرید متریال زیر سازی فولادی نمای شرقی** | 137d | 2025-12-02 A | 2026-04-17 A |  | 100% |  |  | 1404/9/11 | 1405/1/28 |  |
| 887 | 9.1.1.3.1 | تأمین کلیه مصالح زیرسازی فولادی کرتین‌وال نمای شرقی | 15d | 2025-12-02 A | 2025-12-16 A | 178FS+60d | 100% |  |  | 1404/9/11 | 1404/9/25 | کیلوگرم |
| 888 | 9.1.1.3.2 | تأمین کلیه مصالح زیرسازی فولادی فلاشینگ‌ها نمای شرقی | 10d | 2026-04-08 A | 2026-04-17 A | 252FS+77d | 100% |  |  | 1405/1/19 | 1405/1/28 | کیلوگرم |
| 889 | 9.1.1.3.3 | تأمین کلیه مصالح زیرسازی فولادی هندریل دفنی نمای شرقی | 10d | 2025-12-07 A | 2025-12-16 A | 238 | 100% |  |  | 1404/9/16 | 1404/9/25 | کیلوگرم |

| ID | WBS | Task | Duration | Start | Finish | Predecessors | Complete | شروع | پایان | واحد |
| --- | --- | --- | --- | --- | --- | --- | --- | --- | --- | --- |
| 890 | 9.1.1.4 | **خرید متریال زیر سازی فولادی نمای غربی** | 132d | 2025-12-02 A | 2026-04-12 A |  | 100% | 1404/9/11 | 1405/1/23 |  |
| 891 | 9.1.1.4.1 | تأمین کلیه مصالح زیرسازی فولادی کرتین‌وال نمای غربی | 15d | 2025-12-02 A | 2025-12-16 A | 184FS+45d | 100% | 1404/9/11 | 1404/9/25 | کیلوگرم |
| 892 | 9.1.1.4.2 | تأمین کلیه مصالح زیرسازی فولادی فلاشینگ‌ها نمای غربی | 5d | 2026-04-08 A | 2026-04-12 A | 252FS+77d | 100% | 1405/1/19 | 1405/1/23 | کیلوگرم |
| 893 | 9.1.1.4.3 | تأمین کلیه مصالح زیرسازی فولادی سمنت بورد نمای غربی | 5d | 2026-01-07 A | 2026-01-11 A | 250 | 100% | 1404/10/17 | 1404/10/21 | کیلوگرم |
| 894 | 9.1.1.4.4 | تأمین کلیه مصالح زیرسازی فولادی هندریل دفنی نمای غربی | 5d | 2026-01-10 A | 2026-01-14 A | 244 | 100% | 1404/10/20 | 1404/10/24 | کیلوگرم |
| 895 | 9.1.2 | **خرید متریال نمای بتنی** | 99d | 2026-01-05 A | 2026-04-13 A |  | 100% | 1404/10/15 | 1405/1/24 |  |
| 896 | 9.1.2.1 | تأمین زیرسازی‌های فلزی المان‌های اصلی پهنه بتنی نمای جنوبی | 10d | 2026-01-13 A | 2026-01-22 A | 196FS-10d | 100% | 1404/10/23 | 1404/11/2 | کیلوگرم |
| 897 | 9.1.2.2 | تأمین زیرسازی‌های فلزی المان‌های اصلی پهنه بتنی نمای غربی | 10d | 2026-01-05 A | 2026-01-14 A | 191FS-10d | 100% | 1404/10/15 | 1404/10/24 | کیلوگرم |
| 898 | 9.1.2.3 | تأمین زیرسازی‌های فلزی المان‌های اصلی پهنه بتنی نمای شمالی | 10d | 2026-01-05 A | 2026-01-14 A | 201FS-18d | 100% | 1404/10/15 | 1404/10/24 | کیلوگرم |
| 899 | 9.1.2.4 | تأمین زیرسازی‌های فلزی المان‌های اصلی کاور بتنی ستونها | 10d | 2026-04-04 A | 2026-04-13 A | 220FS+71d | 100% | 1405/1/15 | 1405/1/24 | کیلوگرم |
| 900 | 9.1.2.5 | تأمین لایه عایق پاششی ایزولسن ۳۳۰ | 10d | 2026-01-23 A | 2026-02-01 A | 191, 196, 201 | 100% | 1404/11/3 | 1404/11/12 | مترمربع |
| 901 | 9.1.3 | **خرید متریال کرتین وال کلمپ فولادی** | 53d | 2025-12-12 A | 2026-02-02 A |  | 100% | 1404/9/21 | 1404/11/13 |  |
| 902 | 9.1.3.1 | تأمین کلیه مصالح زیرسازی فولادی کرتین وال کلمپ فولادی | 48d | 2025-12-12 A | 2026-01-28 A | 206 | 100% | 1404/9/21 | 1404/11/8 | مترمربع |
| 903 | 9.1.3.2 | تأمین کلیه مصالح کرتین وال کلمپ فولادی | 48d | 2025-12-17 A | 2026-02-02 A | 207FS-10d | 100% | 1404/9/26 | 1404/11/13 | مترمربع |
| 904 | 9.1.4 | **خرید متریال نمای سقف کاذب** | 10d | 2026-01-07 A | 2026-01-16 A |  | 100% | 1404/10/17 | 1404/10/26 |  |
| 905 | 9.1.4.1 | تأمین متریال مصرفی شامل پانل سمنت بورد و متعلقات سقف کاذب پوشیده با پانل سمنت بورد | 10d | 2026-01-07 A | 2026-01-16 A | 250 | 100% | 1404/10/17 | 1404/10/26 | مترمربع |
| 906 | 9.1.5 | **خرید متریال فلاشینگ** | 5d | 2026-04-08 A | 2026-04-12 A |  | 100% | 1405/1/19 | 1405/1/23 |  |
| 907 | 9.1.5.1 | تأمین ورق فلاشینگ از جنس ورق فولادی خمکاری‌ شده به ضخامت 2 میلی‌متر فلاشینگ فولادی با متعلقات | 5d | 2026-04-08 A | 2026-04-12 A | 252FS+77d | 100% | 1405/1/19 | 1405/1/23 | مترمربع |
| 908 | 9.1.5.2 | تأمین از ورق آلومینیوم خم‌کاری‌شده به ضخامت ۲ میلی‌متر فلاشینگ آلومینیوم سالید با متعلقات | 5d | 2026-04-08 A | 2026-04-12 A | 252FS+77d | 100% | 1405/1/19 | 1405/1/23 | مترمربع |
| 909 | 9.1.5.3 | تأمین ورق فلاشینگ از ورق آلومینیوم ۳2 میلی‌متر و ورق گالوانیزه فصول مشترک پیرامونی با متعلقات | 5d | 2026-04-08 A | 2026-04-12 A | 252FS+77d | 100% | 1405/1/19 | 1405/1/23 | مترمربع |
| 910 | 9.1.6 | **خرید متریال درب‌های اتوماتیک** | 10d | 2026-04-08 A | 2026-04-17 A |  | 100% | 1405/1/19 | 1405/1/28 |  |
| 911 | 9.1.6.1 | تأمین متریال مصرفی المان‌های درب‌های اتوماتیک نمای شمالی | 7d | 2026-04-08 A | 2026-04-14 A | 261FS-7d | 100% | 1405/1/19 | 1405/1/25 | مترمربع |
| 912 | 9.1.6.2 | تأمین متریال مصرفی المان‌های درب‌های اتوماتیک نمای جنوبی | 10d | 2026-04-08 A | 2026-04-17 A | 267FS-7d | 100% | 1405/1/19 | 1405/1/28 | مترمربع |
| 913 | 9.1.6.3 | تأمین متریال مصرفی المان‌های درب‌های اتوماتیک نمای غربی | 10d | 2026-04-08 A | 2026-04-17 A | 277FS-7d | 100% | 1405/1/19 | 1405/1/28 | مترمربع |

| ID | WBS | Task | Duration | Start | Finish | Predecessors | Complete | Work | Actual work | شروع | پایان | واحد |
| --- | --- | --- | --- | --- | --- | --- | --- | --- | --- | --- | --- | --- |
| 914 | 9.1.7 | **خرید متریال هندریل** | 42d | 2025-12-17 A | 2026-01-27 A |  | 100% |  |  | 1404/9/26 | 1404/11/7 |  |
| 915 | 9.1.7.1 | تأمین کلیه مصالح مصرفی آلومینیومی هندریل شیشه‌ای‌ دفنی نمای شمالی | 5d | 2026-01-23 A | 2026-01-27 A | 227 | 100% |  |  | 1404/11/3 | 1404/11/7 | مترطول |
| 916 | 9.1.7.2 | تأمین کلیه مصالح مصرفی آلومینیومی هندریل شیشه‌ای‌ دفنی نمای جنوبی | 5d | 2026-01-20 A | 2026-01-24 A | 233 | 100% |  |  | 1404/10/30 | 1404/11/4 | مترطول |
| 917 | 9.1.7.3 | تأمین کلیه مصالح مصرفی آلومینیومی هندریل شیشه‌ای‌ دفنی نمای شرقی | 1d | 2025-12-17 A | 2025-12-17 A | 239 | 100% |  |  | 1404/9/26 | 1404/9/26 | مترطول |
| 918 | 9.1.7.4 | تأمین کلیه مصالح مصرفی آلومینیومی هندریل شیشه‌ای‌ دفنی نمای غربی | 5d | 2026-01-20 A | 2026-01-24 A | 245 | 100% |  |  | 1404/10/30 | 1404/11/4 | مترطول |
| 919 | 9.1.8 | **خرید متریال هوابندی** | 10d | 2026-03-29 A | 2026-04-07 A |  | 100% |  |  | 1405/1/9 | 1405/1/18 |  |
| 920 | 9.1.8.1 | تأمین کلیه متریال مصرفی هوابندی بخش کف و سقف طبقه سوم | 10d | 2026-03-29 A | 2026-04-07 A | 253, 257FS-10d | 100% |  |  | 1405/1/9 | 1405/1/18 | مترطول |
| 921 | 9.1.8.2 | تأمین کلیه متریال مصرفی هوابندی هوابندی بخش بالایی ویندووال‌ها | 10d | 2026-03-29 A | 2026-04-07 A | 253, 257FS-10d | 100% |  |  | 1405/1/9 | 1405/1/18 | مترمربع |
| 922 | 9.1.9 | **تامین مصالح کلمپ کشاورزی** | 11d | 2026-08-05 A | 2026-08-15 A |  | 100% |  |  | 1405/5/14 | 1405/5/24 |  |
| 923 | 9.1.9.1 | **تامین مصالح زیرسازی کرتین وال کلمپ ووید** | 11d | 2026-08-05 A | 2026-08-15 A |  | 100% |  |  | 1405/5/14 | 1405/5/24 |  |
| 924 | 9.1.9.1.1 | تامین کلیه مصالح زیرسازی فولادی کرتین وال کلمپ ووید نمای شمال | 5d | 2026-08-11 A | 2026-08-15 A | 81FS+229d | 100% |  |  | 1405/5/20 | 1405/5/24 | مترمربع |
| 925 | 9.1.9.1.2 | تامین کلیه مصالح زیرسازی فولادی کرتین وال کلمپ ووید نمای شرق | 5d | 2026-08-11 A | 2026-08-15 A | 81FS+229d | 100% |  |  | 1405/5/20 | 1405/5/24 | مترمربع |
| 926 | 9.1.9.1.3 | تامین کلیه مصالح زیرسازی فولادی کرتین وال کلمپ ووید نمای غرب | 5d | 2026-08-05 A | 2026-08-09 A | 81FS+223d | 100% |  |  | 1405/5/14 | 1405/5/18 | مترمربع |
| 927 | 9.2 | **ساخت و ارسال مصالح نمای ساختمان کتابخانه** | 285d | 2025-11-27 A | 2026-09-07 A |  | 100% | 216h | 216h | 1404/9/6 | 1405/6/16 |  |
| 928 | 9.2.1 | **ساخت زیرسازی فولادی ساختمان کتابخانه** | 152d | 2025-11-27 A | 2026-04-27 A |  | 100% |  |  | 1404/9/6 | 1405/2/7 |  |
| 929 | 9.2.1.1 | **ساخت زیرسازی فولادی ساختمان کتابخانه نمای شمالی** | 137d | 2025-12-06 A | 2026-04-21 A |  | 100% |  |  | 1404/9/15 | 1405/2/1 |  |
| 930 | 9.2.1.1.1 | ساخت، سندبلاست و ‌رنگ امیزی زیرسازی کرتین وال مطابق نقشه‌ها ساختمان کتابخانه نمای شمالی | 20d | 2025-12-06 A | 2025-12-25 A | 879FS-45d, 168 | 100% |  |  | 1404/9/15 | 1404/10/4 | کیلوگرم |
| 931 | 9.2.1.1.2 | ساخت، سندبلاست و ‌رنگ امیزی زیرسازی فلاشینگ مطابق نقشه‌ها ساختمان کتابخانه نمای شمالی | 5d | 2026-04-15 A | 2026-04-19 A | 880, 256 | 100% |  |  | 1405/1/26 | 1405/1/30 | کیلوگرم |
| 932 | 9.2.1.1.3 | ساخت، سندبلاست و ‌رنگ امیزی زیرسازی هندریل مطابق نقشه‌ها ساختمان کتابخانه نمای شمالی | 10d | 2026-02-24 A | 2026-03-05 A | 881, 228 | 100% |  |  | 1404/12/5 | 1404/12/14 | کیلوگرم |
| 933 | 9.2.1.1.4 | حمل به کارگاه زیرسازی کرتین وال ساختمان کتابخانه نمای شمالی | 20d | 2025-12-11 A | 2025-12-30 A | 930FS-15d | 100% |  |  | 1404/9/20 | 1404/10/9 | کیلوگرم |
| 934 | 9.2.1.1.5 | حمل به کارگاه زیرسازی فلاشینگ ساختمان کتابخانه نمای شمالی | 5d | 2026-04-17 A | 2026-04-21 A | 931FS-3d | 100% |  |  | 1405/1/28 | 1405/2/1 | کیلوگرم |
| 935 | 9.2.1.1.6 | حمل به کارگاه زیرسازی هندریل ساختمان کتابخانه نمای شمالی | 10d | 2026-02-26 A | 2026-03-07 A | 932FS-8d | 100% |  |  | 1404/12/7 | 1404/12/16 | کیلوگرم |
| 936 | 9.2.1.2 | **ساخت زیرسازی فولادی ساختمان کتابخانه نمای جنوبی** | 140d | 2025-12-06 A | 2026-04-24 A |  | 100% |  |  | 1404/9/15 | 1405/2/4 |  |
| 937 | 9.2.1.2.1 | ساخت، سندبلاست و ‌رنگ امیزی زیرسازی کرتین وال مطابق نقشه‌ها ساختمان کتابخانه نمای جنوبی | 30d | 2025-12-06 A | 2026-01-04 A | 883, 174 | 100% |  |  | 1404/9/15 | 1404/10/14 | کیلوگرم |
| 938 | 9.2.1.2.2 | ساخت، سندبلاست و ‌رنگ امیزی زیرسازی فلاشینگ مطابق نقشه‌ها ساختمان کتابخانه نمای جنوبی | 5d | 2026-04-15 A | 2026-04-19 A | 884, 256 | 100% |  |  | 1405/1/26 | 1405/1/30 | کیلوگرم |
| 939 | 9.2.1.2.3 | ساخت، سندبلاست و ‌رنگ امیزی زیرسازی هندریل مطابق نقشه‌ها ساختمان کتابخانه نمای جنوبی | 10d | 2026-01-15 A | 2026-01-24 A | 885, 234FS-8d | 100% |  |  | 1404/10/25 | 1404/11/4 | کیلوگرم |
| 940 | 9.2.1.2.4 | حمل به کارگاه زیرسازی کرتین وال ساختمان کتابخانه نمای جنوبی | 30d | 2025-12-11 A | 2026-01-09 A | 937FS-25d | 100% |  |  | 1404/9/20 | 1404/10/19 | کیلوگرم |
| 941 | 9.2.1.2.5 | حمل به کارگاه زیرسازی فلاشینگ ساختمان کتابخانه نمای جنوبی | 5d | 2026-04-20 A | 2026-04-24 A | 938 | 100% |  |  | 1405/1/31 | 1405/2/4 | کیلوگرم |
| 942 | 9.2.1.2.6 | حمل به کارگاه زیرسازی هندریل ساختمان کتابخانه نمای جنوبی | 10d | 2026-01-17 A | 2026-01-26 A | 939FS-8d | 100% |  |  | 1404/10/27 | 1404/11/6 | کیلوگرم |

| ID | WBS | Task | Duration | Start | Finish | Predecessors | Complete | شروع | پایان | واحد |
| --- | --- | --- | --- | --- | --- | --- | --- | --- | --- | --- |
| 943 | 9.2.1.3 | **ساخت زیرسازی فولادی ساختمان کتابخانه نمای شرقی** | 152d | 2025-11-27 A | 2026-04-27 A |  | 100% | 1404/9/6 | 1405/2/7 |  |
| 944 | 9.2.1.3.1 | ساخت، سندبلاست و ‌رنگ امیزی زیرسازی کرتین وال مطابق نقشه‌ها ساختمان کتابخانه نمای شرقی | 30d | 2025-11-27 A | 2025-12-26 A | 887FS-20d, 180 | 100% | 1404/9/6 | 1404/10/5 | کیلوگرم |
| 945 | 9.2.1.3.2 | ساخت، سندبلاست و ‌رنگ امیزی زیرسازی فلاشینگ مطابق نقشه‌ها ساختمان کتابخانه نمای شرقی | 5d | 2026-04-18 A | 2026-04-22 A | 888, 256 | 100% | 1405/1/29 | 1405/2/2 | کیلوگرم |
| 946 | 9.2.1.3.3 | ساخت، سندبلاست و ‌رنگ امیزی زیرسازی هندریل مطابق نقشه‌ها ساختمان کتابخانه نمای شرقی | 10d | 2025-12-27 A | 2026-01-05 A | 889, 240 | 100% | 1404/10/6 | 1404/10/15 | کیلوگرم |
| 947 | 9.2.1.3.4 | حمل به کارگاه زیرسازی کرتین وال ساختمان کتابخانه نمای شرقی | 30d | 2025-12-02 A | 2025-12-31 A | 944FS-25d | 100% | 1404/9/11 | 1404/10/10 | کیلوگرم |
| 948 | 9.2.1.3.5 | حمل به کارگاه زیرسازی فلاشینگ ساختمان کتابخانه نمای شرقی | 5d | 2026-04-23 A | 2026-04-27 A | 945 | 100% | 1405/2/3 | 1405/2/7 | کیلوگرم |
| 949 | 9.2.1.3.6 | حمل به کارگاه زیرسازی هندریل ساختمان کتابخانه نمای شرقی | 10d | 2025-12-29 A | 2026-01-07 A | 946FS-8d | 100% | 1404/10/8 | 1404/10/17 | کیلوگرم |
| 950 | 9.2.1.4 | **ساخت زیرسازی فولادی ساختمان کتابخانه نمای غربی** | 140d | 2025-12-06 A | 2026-04-24 A |  | 100% | 1404/9/15 | 1405/2/4 |  |
| 951 | 9.2.1.4.1 | ساخت، سندبلاست و ‌رنگ امیزی زیرسازی کرتین وال مطابق نقشه‌ها ساختمان کتابخانه نمای غربی | 30d | 2025-12-06 A | 2026-01-04 A | 891FS-25d, 186 | 100% | 1404/9/15 | 1404/10/14 | کیلوگرم |
| 952 | 9.2.1.4.2 | ساخت، سندبلاست و ‌رنگ امیزی زیرسازی فلاشینگ مطابق نقشه‌ها ساختمان کتابخانه نمای غربی | 5d | 2026-04-15 A | 2026-04-19 A | 892, 256 | 100% | 1405/1/26 | 1405/1/30 | کیلوگرم |
| 953 | 9.2.1.4.3 | ساخت، سندبلاست و ‌رنگ امیزی زیرسازی سمنت بورد مطابق نقشه‌ها ساختمان کتابخانه نمای غربی | 10d | 2026-01-23 A | 2026-02-01 A | 893FS-30d, 254 | 100% | 1404/11/3 | 1404/11/12 | کیلوگرم |
| 954 | 9.2.1.4.4 | ساخت، سندبلاست و ‌رنگ امیزی زیرسازی هندریل مطابق نقشه‌ها ساختمان کتابخانه نمای غربی | 10d | 2026-01-23 A | 2026-02-01 A | 894FS-10d, 246 | 100% | 1404/11/3 | 1404/11/12 | کیلوگرم |
| 955 | 9.2.1.4.5 | حمل به کارگاه زیرسازی کرتین وال ساختمان کتابخانه نمای غربی | 30d | 2025-12-11 A | 2026-01-09 A | 951FS-25d | 100% | 1404/9/20 | 1404/10/19 | کیلوگرم |
| 956 | 9.2.1.4.6 | حمل به کارگاه زیرسازی فلاشینگ ساختمان کتابخانه نمای غربی | 5d | 2026-04-20 A | 2026-04-24 A | 952 | 100% | 1405/1/31 | 1405/2/4 | کیلوگرم |
| 957 | 9.2.1.4.7 | حمل به کارگاه زیرسازی سمنت بورد ساختمان کتابخانه نمای غربی | 10d | 2026-01-25 A | 2026-02-03 A | 953FS-8d | 100% | 1404/11/5 | 1404/11/14 | کیلوگرم |
| 958 | 9.2.1.4.8 | حمل به کارگاه زیرسازی هندریل ساختمان کتابخانه نمای غربی | 10d | 2026-01-25 A | 2026-02-03 A | 954FS-8d | 100% | 1404/11/5 | 1404/11/14 | کیلوگرم |
| 959 | 9.2.2 | **ساخت نمای کرتین وال و ویندووال ساختمان کتابخانه** | 86d | 2026-01-13 A | 2026-04-08 A |  | 100% | 1404/10/23 | 1405/1/19 |  |
| 960 | 9.2.2.1 | ساخت برش‌کاری، ساخت کامل المان‌های آلومینیومی کرتین‌وال و ویندووال مطابق نقشه‌های ساخت ساختمان کتابخانه نمای شمالی | 25d | 2026-01-13 A | 2026-02-06 A | 169, 289 | 100% | 1404/10/23 | 1404/11/17 | مترمربع |
| 961 | 9.2.2.2 | ساخت برش‌کاری، ساخت کامل المان‌های آلومینیومی کرتین‌وال و ویندووال مطابق نقشه‌های ساخت ساختمان کتابخانه نمای جنوبی | 29d | 2026-01-22 A | 2026-02-19 A | 173, 290 | 100% | 1404/11/2 | 1404/11/30 | مترمربع |
| 962 | 9.2.2.3 | ساخت برش‌کاری، ساخت کامل المان‌های آلومینیومی کرتین‌وال و ویندووال مطابق نقشه‌های ساخت ساختمان کتابخانه نمای شرقی | 50d | 2026-02-18 A | 2026-04-08 A | 291FS-50d, 179 | 100% | 1404/11/29 | 1405/1/19 | مترمربع |
| 963 | 9.2.2.4 | ساخت برش‌کاری، ساخت کامل المان‌های آلومینیومی کرتین‌وال و ویندووال مطابق نقشه‌های ساخت ساختمان کتابخانه نمای غربی | 41d | 2026-02-27 A | 2026-04-08 A | 187, 292FS-41d | 100% | 1404/12/8 | 1405/1/19 | مترمربع |
| 964 | 9.2.3 | **ساخت و ارسال زیرسازی نماهای بتنی کاور بتنی ستونها و پهنه بتنی غرب و جنوب** | 234d | 2026-01-05 A | 2026-08-26 A |  | 100% | 1404/10/15 | 1405/6/4 |  |
| 965 | 9.2.3.1 | **ساخت و ارسال نماهای بتنی پهنه بتنی غرب** | 40d | 2026-01-05 A | 2026-02-13 A |  | 100% | 1404/10/15 | 1404/11/24 |  |
| 966 | 9.2.3.1.1 | ساخت، سندبلاست و ‌رنگ امیزی زیرسازی فلزی المان‌های اصلی پهنه بتنی غرب مطابق نقشه‌های ساخت | 30d | 2026-01-15 A | 2026-02-13 A | 897, 193 | 100% | 1404/10/25 | 1404/11/24 | کیلوگرم |
| 967 | 9.2.3.1.2 | حمل به کارگاه زیرسازی فلزی المان‌های اصلی پهنه بتنی غرب | 30d | 2026-01-05 A | 2026-02-03 A | 966FS-40d | 100% | 1404/10/15 | 1404/11/14 | کیلوگرم |

| ID | WBS | Task | Duration | Start | Finish | Predecessors | Complete | شروع | پایان | واحد |
| --- | --- | --- | --- | --- | --- | --- | --- | --- | --- | --- |
| 968 | 9.2.3.2 | **ساخت و ارسال نماهای بتنی پهنه بتنی جنوب** | 45d | 2026-03-25 A | 2026-05-08 A |  | 100% | 1405/1/5 | 1405/2/18 |  |
| 969 | 9.2.3.2.1 | ساخت، سندبلاست و ‌رنگ امیزی زیرسازی فلزی المان‌های اصلی پهنه بتنی جنوب مطابق نقشه‌های ساخت | 40d | 2026-03-25 A | 2026-05-03 A | 896FS+61d, 198 | 100% | 1405/1/5 | 1405/2/13 | کیلوگرم |
| 970 | 9.2.3.2.2 | حمل به کارگاه زیرسازی فلزی المان‌های اصلی پهنه بتنی جنوب | 40d | 2026-03-30 A | 2026-05-08 A | 969FS-35d | 100% | 1405/1/10 | 1405/2/18 | کیلوگرم |
| 971 | 9.2.3.3 | **ساخت و ارسال نماهای بتنی پهنه بتنی شمال** | 20d | 2026-03-20 A | 2026-04-08 A |  | 100% | 1404/12/29 | 1405/1/19 |  |
| 972 | 9.2.3.3.1 | ساخت، سندبلاست و ‌رنگ امیزی زیرسازی فلزی المان‌های اصلی پهنه بتنی شمال مطابق نقشه‌های ساخت | 20d | 2026-03-20 A | 2026-04-08 A | 203FS-21d, 898 | 100% | 1404/12/29 | 1405/1/19 | کیلوگرم |
| 973 | 9.2.3.3.2 | حمل به کارگاه زیرسازی فلزی المان‌های اصلی پهنه بتنی شمال | 20d | 2026-03-20 A | 2026-04-08 A | 972FS-20d | 100% | 1404/12/29 | 1405/1/19 | کیلوگرم |
| 974 | 9.2.3.4 | **ساخت و ارسال نماهای بتنی کاور بتنی ستونها** | 185d | 2026-02-23 A | 2026-08-26 A |  | 100% | 1404/12/4 | 1405/6/4 |  |
| 975 | 9.2.3.4.1 | ساخت، سندبلاست و ‌رنگ امیزی زیرسازی فلزی المان‌های اصلی کاور بتنی ستونها مطابق نقشه‌های ساخت | 45d | 2026-02-23 A | 2026-04-08 A | 899FS-50d, 222 | 100% | 1404/12/4 | 1405/1/19 | کیلوگرم |
| 976 | 9.2.3.4.2 | حمل به کارگاه زیرسازی فلزی المان‌های اصلی کاور بتنی ستونها | 30d | 2026-03-31 A | 2026-08-26 A | 975FS+120d | 100% | 1405/1/11 | 1405/6/4 | کیلوگرم |
| 977 | 9.2.4 | **ساخت بازشوهای آلومینیومی و درب‌های اسلایدینگ و درب‌های اتوماتیک** | 138.26d | 2026-04-08 A | 2026-08-24 A |  | 100% | 1405/1/19 | 1405/6/2 |  |
| 978 | 9.2.4.1 | **ساخت بازشوهای آلومینیومی و درب‌های اسلایدینگ و درب‌های اتوماتیک نمای شمالی** | 137.37d | 2026-04-08 A | 2026-08-23 A |  | 100% | 1405/1/19 | 1405/6/1 |  |
| 979 | 9.2.4.1.1 | ساخت و مونتاژ شامل پیچ ، مهره، لاستیک‌کشی، چسب‌کاری و...بازشوهای آلومینیومی مطابق نقشه‌های ساخت و حمل به پروژه نمای شمالی | 6d | 2026-04-08 A | 2026-08-23 A | 262, 902FS+205d, 260 | 100% | 1405/1/19 | 1405/6/1 | مترمربع |
| 980 | 9.2.4.1.2 | ساخت و مونتاژ شامل پیچ ، مهره، لاستیک‌کشی، چسب‌کاری و…درب‌های اتوماتیک مطابق نقشه‌های ساخت و حمل به پروژه نمای شمالی | 7d | 2026-04-08 A | 2026-06-20 A | 911FS+65d, 263 | 100% | 1405/1/19 | 1405/3/30 | مترمربع |
| 981 | 9.2.4.2 | **ساخت بازشوهای آلومینیومی و درب‌های اسلایدینگ و درب‌های اتوماتیک نمای جنوبی** | 129.21d | 2026-04-17 A | 2026-08-24 A |  | 100% | 1405/1/28 | 1405/6/2 |  |
| 982 | 9.2.4.2.1 | ساخت و مونتاژ شامل پیچ ، مهره، لاستیک‌کشی، چسب‌کاری و...بازشوهای آلومینیومی مطابق نقشه‌های ساخت و حمل به پروژه نمای جنوبی | 6.74d | 2026-04-17 A | 2026-08-24 A | 268, 912FS+127d, 266 | 100% | 1405/1/28 | 1405/6/2 | مترمربع |
| 983 | 9.2.4.2.2 | ساخت و مونتاژ شامل پیچ ، مهره، لاستیک‌کشی، چسب‌کاری و...درب‌های اتوماتیک مطابق نقشه‌های ساخت و حمل به پروژه نمای جنوبی | 9.44d | 2026-04-24 A | 2026-06-20 A | 912, 269, 982FS-1d | 100% | 1405/2/4 | 1405/3/30 | مترمربع |
| 984 | 9.2.4.3 | **ساخت بازشوهای آلومینیومی و درب‌های اسلایدینگ و درب‌های اتوماتیک نمای غربی** | 131.26d | 2026-04-15 A | 2026-08-24 A |  | 100% | 1405/1/26 | 1405/6/2 |  |
| 985 | 9.2.4.3.1 | ساخت و مونتاژ شامل پیچ ، مهره، لاستیک‌کشی، چسب‌کاری و...بازشوهای آلومینیومی مطابق نقشه‌های ساخت و حمل به پروژه نمای غربی | 6.74d | 2026-04-15 A | 2026-08-24 A | 278FS+130d, 279, 272, 274, 276 | 100% | 1405/1/26 | 1405/6/2 | مترمربع |
| 986 | 9.2.4.3.2 | ساخت و مونتاژ شامل پیچ ، مهره، لاستیک‌کشی، چسب‌کاری و...درب‌های اتوماتیک مطابق نقشه‌های ساخت و حمل به پروژه نمای غربی | 9.7d | 2026-04-18 A | 2026-08-24 A | 913FS+127d, 279, 276 | 100% | 1405/1/29 | 1405/6/2 | مترمربع |
| 987 | 9.2.5 | **ساخت و ارسال نمای کرتین وال کلمپ فولادی** | 130.64d | 2026-04-27 A | 2026-09-04 A |  | 100% | 1405/2/7 | 1405/6/13 |  |
| 988 | 9.2.5.1 | برش‌کاری و سی‌ان‌سی، جوش‌کاری، سند بلاست و رنگ آمیزی ساخت مطابق نقشه‌های ساخت کرتین وال کلمپ فولادی | 30d | 2026-04-27 A | 2026-05-26 A | 902, 208 | 100% | 1405/2/7 | 1405/3/5 | مترمربع |
| 989 | 9.2.5.2 | حمل به کارگاه ساخت زیرسازی کرتین وال کلمپ فولادی | 30d | 2026-05-02 A | 2026-05-31 A | 988FS-25d | 100% | 1405/2/12 | 1405/3/10 | مترمربع |
| 990 | 9.2.5.3 | برش‌کاری و ساخت کامل کرتین‌وال کلمپ مطابق نقشه‌های ساخت و ارسال به محل پروژه | 29.3d | 2026-05-04 A | 2026-09-04 A | 989FS+77d, 903 | 100% | 1405/2/14 | 1405/6/13 | مترمربع |
| 991 | 9.2.6 | **ساخت و ارسال نمای سقف کاذب** | 10d | 2026-01-25 A | 2026-02-03 A |  | 100% | 1404/11/5 | 1404/11/14 |  |
| 992 | 9.2.6.1 | سی‌ان‌سی،پانچ‌کاری، ساخت، مونتاژ و نصب به همراه درزبندی مطابق نقشه‌های ساخت سقف کاذب پوشیده با پانل سمنت بورد | 10d | 2026-01-25 A | 2026-02-03 A | 255, 905 | 100% | 1404/11/5 | 1404/11/14 | مترمربع |

| ID | WBS | Task | Duration | Start | Finish | Predecessors | Complete | Work | Actual work | شروع | پایان | واحد |
| --- | --- | --- | --- | --- | --- | --- | --- | --- | --- | --- | --- | --- |
| 993 | 9.2.7 | **ساخت و ارسال فلاشینگ** | 128.34d | 2026-04-08 A | 2026-08-14 A |  | 100% |  |  | 1405/1/19 | 1405/5/23 |  |
| 994 | 9.2.7.1 | ساخت و حمل فلاشینگ فولادی مطابق نقشه‌های ساخت | 9.8d | 2026-04-08 A | 2026-06-14 A | 907FS+60d, 256 | 100% |  |  | 1405/1/19 | 1405/3/24 | مترمربع |
| 995 | 9.2.7.2 | ساخت و حمل فلاشینگ آلومینیوم سالید مطابق نقشه‌های ساخت | 10d | 2026-04-08 A | 2026-06-18 A | 256FS+60d, 908 | 100% |  |  | 1405/1/19 | 1405/3/28 | مترمربع |
| 996 | 9.2.7.3 | ساخت و حمل فلاشینگ فصول مشترک پیرامونی مطابق نقشه‌های ساخت | 9.6d | 2026-04-08 A | 2026-08-14 A | 909FS+122d, 256 | 100% |  |  | 1405/1/19 | 1405/5/23 | مترمربع |
| 997 | 9.2.8 | **ساخت و ارسال هندریل** | 27d | 2026-01-06 A | 2026-02-01 A |  | 100% |  |  | 1404/10/16 | 1404/11/12 |  |
| 998 | 9.2.8.1 | برش‌کاری، سوراخ‌کاری، انجام عملیات قلاویز و حمل نرده شیشه‌ای‌ دفنی مطابق نقشه‌های ساخت نمای شمالی | 5d | 2026-01-28 A | 2026-02-01 A | 915, 229FS-1d | 100% |  |  | 1404/11/8 | 1404/11/12 | مترطول |
| 999 | 9.2.8.2 | برش‌کاری، سوراخ‌کاری، انجام عملیات قلاویز و حمل نرده شیشه‌ای‌ دفنی مطابق نقشه‌های ساخت نمای جنوبی | 5d | 2026-01-26 A | 2026-01-30 A | 916, 235 | 100% |  |  | 1404/11/6 | 1404/11/10 | مترطول |
| 1000 | 9.2.8.3 | برش‌کاری، سوراخ‌کاری، انجام عملیات قلاویز و حمل نرده شیشه‌ای‌ دفنی مطابق نقشه‌های ساخت نمای شرقی | 5d | 2026-01-06 A | 2026-01-10 A | 917, 241 | 100% |  |  | 1404/10/16 | 1404/10/20 | مترطول |
| 1001 | 9.2.8.4 | برش‌کاری، سوراخ‌کاری، انجام عملیات قلاویز و حمل نرده شیشه‌ای‌ دفنی مطابق نقشه‌های ساخت نمای غربی | 5d | 2026-01-26 A | 2026-01-30 A | 918, 247 | 100% |  |  | 1404/11/6 | 1404/11/10 | مترطول |
| 1002 | 9.2.9 | **ساخت و ارسال متریال هوابندی** | 82d | 2026-03-29 A | 2026-06-18 A |  | 100% |  |  | 1405/1/9 | 1405/3/28 |  |
| 1003 | 9.2.9.1 | ساخت و مونتاژ هوابندی بخش کف و سقف طبقه سوم | 10d | 2026-04-08 A | 2026-04-17 A | 920 | 100% |  |  | 1405/1/19 | 1405/1/28 | مترطول |
| 1004 | 9.2.9.2 | ساخت و مونتاژ هوابندی هوابندی بخش بالایی ویندووال‌ها | 9.1d | 2026-03-29 A | 2026-06-18 A | 921FS+70d | 100% |  |  | 1405/1/9 | 1405/3/28 | مترمربع |
| 1005 | 9.2.10 | **ساخت و ارسال مصالح کلمپ ساختمان کشاورزی** | 29d | 2026-08-10 A | 2026-09-07 A |  | 100% | 216h | 216h | 1405/5/19 | 1405/6/16 |  |
| 1006 | 9.2.10.1 | **ساخت و ارسال زیرسازی کلمپ ووید** | 29d | 2026-08-10 A | 2026-09-07 A |  | 100% | 216h | 216h | 1405/5/19 | 1405/6/16 |  |
| 1007 | 9.2.10.1.1 | برش‌کاری و سی‌ان‌سی، جوش‌کاری، سند بلاست و رنگ آمیزی ساخت مطابق نقشه‌های ساخت کرتین وال کلمپ فولادی نمای شمال | 7d | 2026-08-16 A | 2026-08-22 A | 83, 924 | 100% | 56h | 56h | 1405/5/25 | 1405/5/31 | مترمربع |
| 1008 | 9.2.10.1.2 | برش‌کاری و سی‌ان‌سی، جوش‌کاری، سند بلاست و رنگ آمیزی ساخت مطابق نقشه‌های ساخت کرتین وال کلمپ فولادی نمای شرق | 7d | 2026-08-12 A | 2026-08-18 A | 83, 925FS-4d | 100% | 40h | 40h | 1405/5/21 | 1405/5/27 | مترمربع |
| 1009 | 9.2.10.1.3 | برش‌کاری و سی‌ان‌سی، جوش‌کاری، سند بلاست و رنگ آمیزی ساخت مطابق نقشه‌های ساخت کرتین وال کلمپ فولادی نمای غرب | 14d | 2026-08-10 A | 2026-08-23 A | 83FS+2d, 926 | 100% | 120h | 120h | 1405/5/19 | 1405/6/1 | مترمربع |
| 1010 | 9.2.10.1.4 | حمل به کارگاه ساخت زیرسازی کرتین وال کلمپ فولادی نمای شمال | 7d | 2026-08-23 A | 2026-08-29 A | 1007 | 100% |  |  | 1405/6/1 | 1405/6/7 | مترمربع |
| 1011 | 9.2.10.1.5 | حمل به کارگاه ساخت زیرسازی کرتین وال کلمپ فولادی نمای شرق | 5d | 2026-08-19 A | 2026-08-23 A | 1008 | 100% |  |  | 1405/5/28 | 1405/6/1 | مترمربع |
| 1012 | 9.2.10.1.6 | حمل به کارگاه ساخت زیرسازی کرتین وال کلمپ فولادی نمای غرب | 15d | 2026-08-24 A | 2026-09-07 A | 1009 | 100% |  |  | 1405/6/2 | 1405/6/16 | مترمربع |
| 1013 | 9.3 | **پیاده سازی، نصب و اجرای نمای ساختمان کتابخانه** | 291d | 2025-12-06 A | 2026-09-22 A |  | 100% | 320h | 320h | 1404/9/15 | 1405/6/31 |  |
| 1014 | 9.3.1 | **نصب زیرسازی فولادی ساختمان کتابخانه** | 265.65d | 2025-12-06 A | 2026-08-28 A |  | 100% |  |  | 1404/9/15 | 1405/6/6 |  |
| 1015 | 9.3.1.1 | **نصب زیرسازی فولادی ساختمان کتابخانه نمای شمالی** | 127d | 2025-12-31 A | 2026-05-06 A |  | 100% |  |  | 1404/10/10 | 1405/2/16 |  |
| 1016 | 9.3.1.1.1 | حمل به طبقات، تخریب لایه‌ی فایرپروف روی سازه ساختمان، پیاده‌سازی ، نصب موقت زیرسازی کرتین‌وال نمای شمالی | 30d | 2025-12-31 A | 2026-01-29 A | 933 | 100% |  |  | 1404/10/10 | 1404/11/9 | کیلوگرم |
| 1017 | 9.3.1.1.2 | حمل به طبقات، تخریب لایه‌ی فایرپروف روی سازه ساختمان، پیاده‌سازی ، نصب موقت زیرسازی فلاشینگ‌ها نمای شمالی | 5d | 2026-04-22 A | 2026-04-26 A | 934, 1016 | 100% |  |  | 1405/2/2 | 1405/2/6 | کیلوگرم |
| 1018 | 9.3.1.1.3 | حمل به طبقات، تخریب لایه‌ی فایرپروف روی سازه ساختمان، پیاده‌سازی ، نصب موقت زیرسازی هندریل دفنی نمای شمالی | 10d | 2026-04-27 A | 2026-05-06 A | 935, 1017 | 100% |  |  | 1405/2/7 | 1405/2/16 | کیلوگرم |

| ID | WBS | Task | Duration | Start | Finish | Predecessors | Complete | شروع | پایان | واحد |
| --- | --- | --- | --- | --- | --- | --- | --- | --- | --- | --- |
| 1019 | 9.3.1.2 | **نصب زیرسازی فولادی ساختمان کتابخانه نمای جنوبی** | 260d | 2025-12-06 A | 2026-08-22 A |  | 100% | 1404/9/15 | 1405/5/31 |  |
| 1020 | 9.3.1.2.1 | حمل به طبقات، تخریب لایه‌ی فایرپروف روی سازه ساختمان، پیاده‌سازی ، نصب موقت زیرسازی کرتین‌وال نمای جنوبی | 40d | 2025-12-06 A | 2026-08-22 A | 940 | 100% | 1404/9/15 | 1405/5/31 | کیلوگرم |
| 1021 | 9.3.1.2.2 | حمل به طبقات، تخریب لایه‌ی فایرپروف روی سازه ساختمان، پیاده‌سازی ، نصب موقت زیرسازی فلاشینگ‌ها نمای جنوبی | 5d | 2026-04-21 A | 2026-04-25 A | 1020, 941FS-4d | 100% | 1405/2/1 | 1405/2/5 | کیلوگرم |
| 1022 | 9.3.1.2.3 | حمل به طبقات، تخریب لایه‌ی فایرپروف روی سازه ساختمان، پیاده‌سازی ، نصب موقت زیرسازی هندریل دفنی نمای جنوبی | 10d | 2026-04-25 A | 2026-05-04 A | 942, 1021FS-1d | 100% | 1405/2/5 | 1405/2/14 | کیلوگرم |
| 1023 | 9.3.1.3 | **نصب زیرسازی فولادی ساختمان کتابخانه نمای شرقی** | 152d | 2025-12-07 A | 2026-05-07 A |  | 100% | 1404/9/16 | 1405/2/17 |  |
| 1024 | 9.3.1.3.1 | حمل به طبقات، تخریب لایه‌ی فایرپروف روی سازه ساختمان، پیاده‌سازی ، نصب موقت زیرسازی کرتین‌وال نمای شرقی | 30d | 2025-12-07 A | 2026-01-05 A | 947FS-25d | 100% | 1404/9/16 | 1404/10/15 | کیلوگرم |
| 1025 | 9.3.1.3.2 | حمل به طبقات، تخریب لایه‌ی فایرپروف روی سازه ساختمان، پیاده‌سازی ، نصب موقت زیرسازی فلاشینگ‌ها نمای شرقی | 5d | 2026-04-24 A | 2026-04-28 A | 945, 948FS-4d, 1024 | 100% | 1405/2/4 | 1405/2/8 | کیلوگرم |
| 1026 | 9.3.1.3.3 | حمل به طبقات، تخریب لایه‌ی فایرپروف روی سازه ساختمان، پیاده‌سازی ، نصب موقت زیرسازی هندریل دفنی نمای شرقی | 10d | 2026-04-28 A | 2026-05-07 A | 949, 1025FS-1d | 100% | 1405/2/8 | 1405/2/17 | کیلوگرم |
| 1027 | 9.3.1.4 | **نصب زیرسازی فولادی ساختمان کتابخانه نمای غربی** | 255.65d | 2025-12-16 A | 2026-08-28 A |  | 100% | 1404/9/25 | 1405/6/6 |  |
| 1028 | 9.3.1.4.1 | حمل به طبقات، تخریب لایه‌ی فایرپروف روی سازه ساختمان، پیاده‌سازی ، نصب موقت زیرسازی کرتین‌وال نمای غربی | 30d | 2025-12-16 A | 2026-01-14 A | 955FS-25d | 100% | 1404/9/25 | 1404/10/24 | کیلوگرم |
| 1029 | 9.3.1.4.2 | حمل به طبقات، تخریب لایه‌ی فایرپروف روی سازه ساختمان، پیاده‌سازی ، نصب موقت زیرسازی فلاشینگ‌ها نمای غربی | 5d | 2026-04-25 A | 2026-04-29 A | 956, 1028 | 100% | 1405/2/5 | 1405/2/9 | کیلوگرم |
| 1030 | 9.3.1.4.3 | حمل به طبقات، تخریب لایه‌ی فایرپروف روی سازه ساختمان، پیاده‌سازی ، نصب موقت زیرسازی هندریل دفنی نمای غربی | 9.8d | 2026-04-30 A | 2026-08-08 A | 958, 1029FS+100d | 100% | 1405/2/10 | 1405/5/17 | کیلوگرم |
| 1031 | 9.3.1.4.4 | حمل به طبقات، تخریب لایه‌ی فایرپروف روی سازه ساختمان، پیاده‌سازی ، نصب موقت زیرسازی سمنت بورد نمای غربی | 9.3d | 2026-04-15 A | 2026-08-28 A | 957FS+205d | 100% | 1405/1/26 | 1405/6/6 | کیلوگرم |
| 1032 | 9.3.2 | **نصب نمای کرتین وال و ویندووال ساختمان کتابخانه** | 209.15d | 2026-02-07 A | 2026-09-04 A |  | 100% | 1404/11/18 | 1405/6/13 |  |
| 1033 | 9.3.2.1 | **نصب نمای کرتین وال و ویندووال ساختمان کتابخانه نمای شمالی** | 208.23d | 2026-02-07 A | 2026-09-03 A |  | 100% | 1404/11/18 | 1405/6/12 |  |
| 1034 | 9.3.2.1.1 | پیاده‌سازی، حمل به طبقات، نصب و اجرای پروفیل‌های آلومینیومی به همراه کلیه جزئیات و ملحقات مربوطه نمای شمالی | 25d | 2026-02-07 A | 2026-03-03 A | 960 | 100% | 1404/11/18 | 1404/12/12 | مترمربع |
| 1035 | 9.3.2.1.2 | پیاده‌سازی، حمل به طبقات، نصب و اجرای شیشه کرتین وال و رگلاژ و آب بندی و نظافت و تحویل نهایی نمای شمالی | 20.76d | 2026-05-14 A | 2026-09-03 A | 368FS+70d, 1034 | 100% | 1405/2/24 | 1405/6/12 | مترمربع |
| 1036 | 9.3.2.2 | **نصب نمای کرتین وال و ویندووال ساختمان کتابخانه نمای جنوبی** | 145.15d | 2026-04-12 A | 2026-09-04 A |  | 100% | 1405/1/23 | 1405/6/13 |  |
| 1037 | 9.3.2.2.1 | پیاده‌سازی، حمل به طبقات، نصب و اجرای پروفیل‌های آلومینیومی به همراه کلیه جزئیات و ملحقات مربوطه نمای جنوبی | 28.84d | 2026-04-12 A | 2026-08-20 A | 961FS+180d | 100% | 1405/1/23 | 1405/5/29 | مترمربع |
| 1038 | 9.3.2.2.2 | پیاده‌سازی، حمل به طبقات، نصب و اجرای شیشه کرتین وال و رگلاژ و آب بندی و نظافت و تحویل نهایی نمای جنوبی | 25d | 2026-08-10 A | 2026-09-04 A | 381FS-17d, 1037FS-10d | 100% | 1405/5/19 | 1405/6/13 | مترمربع |
| 1039 | 9.3.2.3 | **نصب نمای کرتین وال و ویندووال ساختمان کتابخانه نمای شرقی** | 191d | 2026-02-20 A | 2026-08-29 A |  | 100% | 1404/12/1 | 1405/6/7 |  |
| 1040 | 9.3.2.3.1 | پیاده‌سازی، حمل به طبقات، نصب و اجرای پروفیل‌های آلومینیومی به همراه کلیه جزئیات و ملحقات مربوطه نمای شرقی | 45d | 2026-02-20 A | 2026-04-05 A | 962FS-48d | 100% | 1404/12/1 | 1405/1/16 | مترمربع |
| 1041 | 9.3.2.3.2 | پیاده‌سازی، حمل به طبقات، نصب و اجرای شیشه کرتین وال و رگلاژ و آب بندی و نظافت و تحویل نهایی نمای شرقی | 45d | 2026-03-25 A | 2026-08-29 A | 394, 1040 | 100% | 1405/1/5 | 1405/6/7 | مترمربع |
| 1042 | 9.3.2.4 | **نصب نمای کرتین وال و ویندووال ساختمان کتابخانه نمای غربی** | 146.5d | 2026-04-09 A | 2026-09-02 A |  | 100% | 1405/1/20 | 1405/6/11 |  |
| 1043 | 9.3.2.4.1 | پیاده‌سازی، حمل به طبقات، نصب و اجرای پروفیل‌های آلومینیومی به همراه کلیه جزئیات و ملحقات مربوطه نمای غربی | 41d | 2026-04-09 A | 2026-05-19 A | 963 | 100% | 1405/1/20 | 1405/2/29 | مترمربع |
| 1044 | 9.3.2.4.2 | پیاده‌سازی، حمل به طبقات، نصب و اجرای شیشه کرتین وال و رگلاژ و آب بندی و نظافت و تحویل نهایی نمای غربی | 123.5d | 2026-05-02 A | 2026-09-02 A | 403FS+60d, 1043 | 100% | 1405/2/12 | 1405/6/11 | مترمربع |

| ID | WBS | Task | Duration | Start | Finish | Predecessors | Complete | شروع | پایان | واحد |
| --- | --- | --- | --- | --- | --- | --- | --- | --- | --- | --- |
| 1045 | 9.3.3 | **نصب بازشوهای آلومینیومی و درب‌های اسلایدینگ و درب‌های اتوماتیک** | 76.15d | 2026-06-20 A | 2026-09-04 A |  | 100% | 1405/3/30 | 1405/6/13 |  |
| 1046 | 9.3.3.1 | **نصب بازشوهای آلومینیومی و درب‌های اتوماتیک نمای شمالی** | 76.15d | 2026-06-20 A | 2026-09-04 A |  | 100% | 1405/3/30 | 1405/6/13 |  |
| 1047 | 9.3.3.1.1 | نصب المان‌های بازشوهای آلومینیومی به همراه کلیه جزئیات و ملحقات مربوطه و اجرای کلیه فصل‌های مشترک پیرامونی نمای شمالی | 7d | 2026-08-23 A | 2026-08-30 A | 979, 376FS-1d | 100% | 1405/6/1 | 1405/6/8 | مترمربع |
| 1048 | 9.3.3.1.2 | نصب المان‌های درب‌های اتوماتیک به همراه کلیه جزئیات و ملحقات مربوطه و اجرای کلیه فصل‌های مشترک پیرامونی نمای شمالی | 7d | 2026-06-20 A | 2026-06-27 A | 980 | 100% | 1405/3/30 | 1405/4/6 | مترمربع |
| 1049 | 9.3.3.1.3 | نصب شیشه بازشو-شمال | 7d | 2026-08-28 A | 2026-09-04 A | 376FS+12d | 100% | 1405/6/6 | 1405/6/13 | مترمربع |
| 1050 | 9.3.3.2 | **نصب بازشوهای آلومینیومی و درب‌های اتوماتیک نمای جنوبی** | 58.77d | 2026-07-03 A | 2026-08-31 A |  | 100% | 1405/4/12 | 1405/6/9 |  |
| 1051 | 9.3.3.2.1 | نصب المان‌های بازشوهای آلومینیومی به همراه کلیه جزئیات و ملحقات مربوطه و اجرای کلیه فصل‌های مشترک پیرامونی نمای جنوبی | 7d | 2026-08-24 A | 2026-08-31 A | 982, 385 | 100% | 1405/6/2 | 1405/6/9 | مترمربع |
| 1052 | 9.3.3.2.2 | نصب المان‌های درب‌های اتوماتیک به همراه کلیه جزئیات و ملحقات مربوطه و اجرای کلیه فصل‌های مشترک پیرامونی نمای جنوبی | 10d | 2026-07-03 A | 2026-07-13 A | 983, 1048, 1049 | 100% | 1405/4/12 | 1405/4/22 | مترمربع |
| 1053 | 9.3.3.2.3 | نصب شیشه بازشو-جنوب | 7d | 2026-08-22 A | 2026-08-29 A | 385 | 100% | 1405/5/31 | 1405/6/7 | مترمربع |
| 1054 | 9.3.3.3 | **نصب بازشوهای آلومینیومی و درب‌های اتوماتیک نمای غربی** | 71.24d | 2026-06-21 A | 2026-08-31 A |  | 100% | 1405/3/31 | 1405/6/9 |  |
| 1055 | 9.3.3.3.1 | نصب المان‌های بازشوهای آلومینیومی به همراه کلیه جزئیات و ملحقات مربوطه و اجرای کلیه فصل‌های مشترک پیرامونی نمای غربی | 7d | 2026-08-24 A | 2026-08-31 A | 985, 411FS-3d | 100% | 1405/6/2 | 1405/6/9 | مترمربع |
| 1056 | 9.3.3.3.2 | نصب المان‌های درب‌های اتوماتیک به همراه کلیه جزئیات و ملحقات مربوطه و اجرای کلیه فصل‌های مشترک پیرامونی نمای غربی | 10d | 2026-06-21 A | 2026-08-27 A | 986 | 100% | 1405/3/31 | 1405/6/5 | مترمربع |
| 1057 | 9.3.3.3.3 | نصب شیشه بازشو-شمال | 7d | 2026-08-24 A | 2026-08-31 A | 411 | 100% | 1405/6/2 | 1405/6/9 | مترمربع |
| 1058 | 9.3.4 | **نصب نمای کرتین وال کلمپ فولادی** | 115.89d | 2026-05-14 A | 2026-09-06 A |  | 100% | 1405/2/24 | 1405/6/15 |  |
| 1059 | 9.3.4.1 | حمل به طبقات، تخریب لایه‌ی فایرپروف روی سازه ساختمان، پیاده‌سازی و نصب موقت زیرسازی کرتین وال کلمپ | 25d | 2026-05-14 A | 2026-08-24 A | 990FS-15d, 568 | 100% | 1405/2/24 | 1405/6/2 | مترمربع |
| 1060 | 9.3.4.2 | حمل به طبقات، نصب و اجرا به همراه کلیه جزئیات و ملحقات مربوطه کرتین وال کلمپ | 25d | 2026-06-16 A | 2026-09-01 A | 1059FS-20d, 990FS-15d | 100% | 1405/3/26 | 1405/6/10 | مترمربع |
| 1061 | 9.3.4.3 | نصب شیشه‌های دوجداره و پرشر پلیت و اجرای کلیه فصل‌های مشترک پیرامونی، منطبق بر مشخصات فنی کرتین وال کلمپ | 25d | 2026-08-12 A | 2026-09-06 A | 1060FS-20d, 415FS-20d | 100% | 1405/5/21 | 1405/6/15 | مترمربع |
| 1062 | 9.3.5 | **نصب سقف کاذب پوشیده با پنل سمنت بورد** | 128.05d | 2026-04-25 A | 2026-08-31 A |  | 100% | 1405/2/5 | 1405/6/9 |  |
| 1063 | 9.3.5.1 | نصب به همراه درزبندی مطابق با مشخصات فنی سقف کاذب پوشیده با پنل سمنت بورد پارت اول | 10d | 2026-04-25 A | 2026-08-31 A | 1031, 992 | 100% | 1405/2/5 | 1405/6/9 | مترمربع |
| 1064 | 9.3.6 | **نصب و اجرای نماهای بتنی** | 216.36d | 2026-02-02 A | 2026-09-06 A |  | 100% | 1404/11/13 | 1405/6/15 |  |
| 1065 | 9.3.6.1 | **نصب و اجرای پنل بتنی پهنه بتنی نمای غرب** | 200.05d | 2026-02-02 A | 2026-08-21 A |  | 100% | 1404/11/13 | 1405/5/30 |  |
| 1066 | 9.3.6.1.1 | اجرای لایه عایق پاششی ایزولسن ۳۳۰ بر روی جداره بلوک لیکا بخشی سالید نمای غرب | 10d | 2026-02-02 A | 2026-02-11 A | 900 | 100% | 1404/11/13 | 1404/11/22 | مترمربع |
| 1067 | 9.3.6.1.2 | پیاده‌سازی، نصب کامل، رگلاژ، اجرای تاج آب نهایی، زیرسازی‌های فلزی المان‌های اصلی، تکیه‌گاه‌های سازه، جداره بتنی نمای غرب | 30d | 2026-02-12 A | 2026-03-13 A | 967FS-40d, 1066 | 100% | 1404/11/23 | 1404/12/22 | کیلوگرم |
| 1068 | 9.3.6.1.3 | حمل به طبقات، نصب، رگلاژ نهایی و درزبندی پنل بتنی مطابق با مشخصات فنی، جزئیات الزامات ارائه‌شده نمای غرب | 34.95d | 2026-03-19 A | 2026-08-21 A | 1066, 451FS+121d | 100% | 1404/12/28 | 1405/5/30 | مترمربع |

| ID | WBS | Task | Duration | Start | Finish | Predecessors | Complete | شروع | پایان | واحد |
| --- | --- | --- | --- | --- | --- | --- | --- | --- | --- | --- |
| 1069 | 9.3.6.2 | **نصب و اجرای پنل بتنی پهنه بتنی نمای جنوب** | 212.5d | 2026-02-02 A | 2026-09-02 A |  | 100% | 1404/11/13 | 1405/6/11 |  |
| 1070 | 9.3.6.2.1 | اجرای لایه عایق پاششی ایزولسن ۳۳۰ بر روی جداره بلوک لیکا بخشی سالید نمای جنوب | 13d | 2026-02-02 A | 2026-02-14 A | 900 | 100% | 1404/11/13 | 1404/11/25 | مترمربع |
| 1071 | 9.3.6.2.2 | پیاده‌سازی، نصب کامل، رگلاژ، اجرای تاج آب نهایی، زیرسازی‌های فلزی المان‌های اصلی، تکیه‌گاه‌های سازه، جداره بتنی نمای جنوب | 30d | 2026-03-30 A | 2026-08-14 A | 970FS+80d, 1070 | 100% | 1405/1/10 | 1405/5/23 | کیلوگرم |
| 1072 | 9.3.6.2.3 | حمل به طبقات، نصب، رگلاژ نهایی و درزبندی پنل بتنی مطابق با مشخصات فنی، جزئیات الزامات ارائه‌شده نمای جنوب | 25d | 2026-06-22 A | 2026-09-02 A | 1071FS+15d, 460 | 100% | 1405/4/1 | 1405/6/11 | مترمربع |
| 1073 | 9.3.6.3 | **نصب و اجرای پنل بتنی پهنه بتنی نمای شمال** | 206.68d | 2026-02-02 A | 2026-08-27 A |  | 100% | 1404/11/13 | 1405/6/5 |  |
| 1074 | 9.3.6.3.1 | اجرای لایه عایق پاششی ایزولسن ۳۳۰ بر روی جداره بلوک لیکا بخشی سالید نمای شمال | 8d | 2026-02-02 A | 2026-02-09 A | 900 | 100% | 1404/11/13 | 1404/11/20 | مترمربع |
| 1075 | 9.3.6.3.2 | پیاده‌سازی، نصب کامل، رگلاژ، اجرای تاج آب نهایی، زیرسازی‌های فلزی المان‌های اصلی، تکیه‌گاه‌های سازه، جداره بتنی نمای شمال | 19.6d | 2026-04-09 A | 2026-08-12 A | 1074, 971FS+125d, 973 | 100% | 1405/1/20 | 1405/5/21 | کیلوگرم |
| 1076 | 9.3.6.3.3 | حمل به طبقات، نصب، رگلاژ نهایی و درزبندی پنل بتنی مطابق با مشخصات فنی، جزئیات الزامات ارائه‌شده نمای شمال | 19.6d | 2026-04-25 A | 2026-08-27 A | 1075FS+10d, 469 | 100% | 1405/2/5 | 1405/6/5 | مترمربع |
| 1077 | 9.3.6.4 | **نصب و اجرای پنل بتنی کاور بتنی ستون‌ها** | 154.36d | 2026-04-05 A | 2026-09-06 A |  | 100% | 1405/1/16 | 1405/6/15 |  |
| 1078 | 9.3.6.4.1 | پیاده‌سازی، نصب کامل، رگلاژ، اجرای تاج آب نهایی، زیرسازی‌های فلزی المان‌های اصلی، تکیه‌گاه‌های سازه، جداره بتنی دور ستون‌ها | 25d | 2026-04-05 A | 2026-08-21 A | 976FS-140d | 100% | 1405/1/16 | 1405/5/30 | کیلوگرم |
| 1079 | 9.3.6.4.2 | حمل به طبقات، نصب، رگلاژ نهایی و درزبندی پنل بتنی دور ستون‌ها مطابق با مشخصات فنی | 10d | 2026-06-11 A | 2026-09-06 A | 1078FS-15d, 439FS-15d, 478FS-20d | 100% | 1405/3/21 | 1405/6/15 | مترمربع |
| 1080 | 9.3.7 | **نصب نمای هندریل شیشه ای** | 110.75d | 2026-05-10 A | 2026-08-28 A |  | 100% | 1405/2/20 | 1405/6/6 |  |
| 1081 | 9.3.7.1 | نصب پروفیل آلومینیومی نرده شیشه‌ای دفنی منطبق مشخصات فنی نمای شمال | 2.86d | 2026-07-02 A | 2026-08-16 A | 1018FS+100d, 998 | 100% | 1405/4/11 | 1405/5/25 | مترمربع |
| 1082 | 9.3.7.2 | نصب پروفیل آلومینیومی نرده شیشه‌ای دفنی منطبق مشخصات فنی نمای جنوب | 2.71d | 2026-06-28 A | 2026-08-14 A | 1022FS+100d, 999 | 100% | 1405/4/7 | 1405/5/23 | مترمربع |
| 1083 | 9.3.7.3 | نصب پروفیل آلومینیومی نرده شیشه‌ای دفنی منطبق مشخصات فنی نمای شرق | 3.17d | 2026-07-06 A | 2026-08-12 A | 1026FS+95d, 1000 | 100% | 1405/4/15 | 1405/5/21 | مترمربع |
| 1084 | 9.3.7.4 | نصب پروفیل آلومینیومی نرده شیشه‌ای دفنی منطبق مشخصات فنی نمای غرب | 3d | 2026-05-10 A | 2026-08-13 A | 1030FS+5d, 1001 | 100% | 1405/2/20 | 1405/5/22 | مترمربع |
| 1085 | 9.3.7.5 | نصب لاستیک‌ها، حمل شیشه‌ها به طبقات، نصب شیشه، رگلاژ نهایی، نصب کاور و دستگیره آلومینیومی، آب‌بندی و درزبندی منطبق مشخصات فنی نمای شمال | 3.29d | 2026-07-02 A | 2026-08-23 A | 372, 1018FS+100d, 998 | 100% | 1405/4/11 | 1405/6/1 | مترمربع |
| 1086 | 9.3.7.6 | نصب لاستیک‌ها، حمل شیشه‌ها به طبقات، نصب شیشه، رگلاژ نهایی، نصب کاور و دستگیره آلومینیومی، آب‌بندی و درزبندی منطبق مشخصات فنی نمای جنوب | 3.54d | 2026-06-28 A | 2026-08-26 A | 389, 1022FS+100d, 999 | 100% | 1405/4/7 | 1405/6/4 | مترمربع |
| 1087 | 9.3.7.7 | نصب لاستیک‌ها، حمل شیشه‌ها به طبقات، نصب شیشه، رگلاژ نهایی، نصب کاور و دستگیره آلومینیومی، آب‌بندی و درزبندی منطبق مشخصات فنی نمای شرق | 3d | 2026-08-21 A | 2026-08-24 A | 398, 1026FS+100d, 1000 | 100% | 1405/5/30 | 1405/6/2 | مترمربع |
| 1088 | 9.3.7.8 | نصب لاستیک‌ها، حمل شیشه‌ها به طبقات، نصب شیشه، رگلاژ نهایی، نصب کاور و دستگیره آلومینیومی، آب‌بندی و درزبندی منطبق مشخصات فنی نمای غرب | 3d | 2026-07-11 A | 2026-08-28 A | 407FS+5d, 1030, 1001 | 100% | 1405/4/20 | 1405/6/6 | مترمربع |
| 1089 | 9.3.8 | **نصب فلاشینگ** | 45.14d | 2026-07-10 A | 2026-08-24 A |  | 100% | 1405/4/19 | 1405/6/2 |  |
| 1090 | 9.3.8.1 | اجرای فلاشینگ فولادی همراه باجوش‌کاری به همراه آب‌بندی کامل | 5d | 2026-07-10 A | 2026-08-18 A | 994FS+60d | 100% | 1405/4/19 | 1405/5/27 | مترمربع |
| 1091 | 9.3.8.2 | اجرای فلاشینگ آلومینیوم سالید همراه باجوش‌کاری به همراه آب‌بندی کامل | 4.65d | 2026-07-11 A | 2026-08-16 A | 995, 1090FS-4d | 100% | 1405/4/20 | 1405/5/25 | مترمربع |
| 1092 | 9.3.8.3 | اجرای فلاشینگ فصول مشترک پیرامونی همراه جوش‌کاری و ... | 10d | 2026-08-14 A | 2026-08-24 A | 996, 1091FS-4d | 100% | 1405/5/23 | 1405/6/2 | مترمربع |

| ID | WBS | Task | Type | Duration | Start | Finish | Predecessors | Complete | Work | Actual work | شروع | پایان | واحد |
| --- | --- | --- | --- | --- | --- | --- | --- | --- | --- | --- | --- | --- | --- |
| 1093 | 9.3.9 | **اجرای هوابندی** |  | 86.36d | 2026-06-12 A | 2026-09-06 A |  | 100% |  |  | 1405/3/22 | 1405/6/15 |  |
| 1094 | 9.3.9.1 | نصب به همراه درزبندی مطابق مشخصات فنی هوابندی بخش کف و سقف طبقه سوم |  | 10d | 2026-06-12 A | 2026-08-31 A | 1003FS-15d, 1056FS-9d, 1061FS-17d, 1081FS-11d, 1082FS-2d, 1083FS-5d, 1084FS-15d, 1044FS-15d, 1041FS-15d, 1038FS-15d, 1047FS-15d, 1051FS-15d, 1085FS-15d, 1086FS-15d, 1087FS-15d, 1088FS-15d, 1057FS-1d | 100% |  |  | 1405/3/22 | 1405/6/9 | مترطول |
| 1095 | 9.3.9.2 | نصب به همراه درزبندی مطابق مشخصات فنی اجرای هوابندی بخش بالایی ویندووال‌ها |  | 10d | 2026-08-27 A | 2026-09-06 A | 1004FS-5d, 1092FS-15d, 1063FS-15d, 1068FS-15d, 1072FS-15d, 1076FS-15d, 1079FS-10d, 1035FS-15d, 1055FS-7d | 100% |  |  | 1405/6/5 | 1405/6/15 | مترمربع |
| 1096 | 9.3.10 | **نصب و اجرای کلمپ ساختمان کشاورزی** |  | 27d | 2026-08-27 A | 2026-09-22 A |  | 100% | 320h | 320h | 1405/6/5 | 1405/6/31 |  |
| 1097 | 9.3.10.1 | **نصب و اجرا -کرتین وال کلمپ** |  | 27d | 2026-08-27 A | 2026-09-22 A |  | 100% | 320h | 320h | 1405/6/5 | 1405/6/31 |  |
| 1098 | 9.3.10.1.1 | نصب و اجرای زیرسازی-کرتین وال کلمپ- شمال |  | 7d | 2026-08-31 A | 2026-09-06 A | 1010FS+1d | 100% | 56h | 56h | 1405/6/9 | 1405/6/15 | مترمربع |
| 1099 | 9.3.10.1.2 | نصب و اجرای زیرسازی-کرتین وال کلمپ- شرق |  | 7d | 2026-08-29 A | 2026-09-04 A | 1011FS+5d | 100% | 40h | 40h | 1405/6/7 | 1405/6/13 | مترمربع |
| 1100 | 9.3.10.1.3 | نصب و اجرای زیرسازی-کرتین وال کلمپ- غرب |  | 20d | 2026-08-27 A | 2026-09-21 A | 1012FS-4d | 100% | 120h | 120h | 1405/6/5 | 1405/6/30 | مترمربع |
| 1101 | 9.3.10.1.4 | نصب شیشه-کرتین وال کلمپ-شمال |  | 12d | 2026-09-07 A | 2026-09-18 A | 303, 1098 | 100% | 24h | 24h | 1405/6/16 | 1405/6/27 | مترمربع |
| 1102 | 9.3.10.1.5 | نصب شیشه-کرتین وال کلمپ-شرق |  | 11d | 2026-09-05 A | 2026-09-15 A | 333FS-5d, 1099 | 100% | 24h | 24h | 1405/6/14 | 1405/6/24 | مترمربع |
| 1103 | 9.3.10.1.6 | نصب شیشه-کرتین وال کلمپ-غرب |  | 16d | 2026-09-07 A | 2026-09-22 A | 350FS-15d, 1100FS-15d | 100% | 56h | 56h | 1405/6/16 | 1405/6/31 | مترمربع |
| 1104 | 10 | پایان | milestone | 0d | 2026-09-22 A | 2026-09-22 A | 602, 603, 604, 859, 860, 861, 862, 870, 1094, 1095, 1067, 1052, 1053, 773, 782, 1101, 1102, 1103 | 100% |  |  | 1405/6/31 | 1405/6/31 |  |
